# Smart Safe Cities - CM Tehsils Project (Bahawalpur Division)

Schedule from Primavera P6, 2026-01-19 to 2026-06-03, data date 2026-01-19.

## Calendars

- 7x10: Mon-Sun 07:00-17:00. Exceptions (off unless hours are given): 2026-02-12 07:00-17:00, 2026-05-14 07:00-13:00, 14:00-18:00.

## Schedule

| ID | WBS | Activity | Type | Duration | Start | Finish | Predecessors | Total float | Free float |
| --- | --- | --- | --- | --- | --- | --- | --- | --- | --- |
|  | 1 | **Project Milestone** |  |  | 2026-01-19 | 2026-06-03 |  |  |  |
| A1000 |  | Start Date | milestone | 0d | 2026-01-19 | 2026-01-19 |  | 0d |  |
| A1010 |  | Compeletion Date | milestone | 0d | 2026-06-03 | 2026-06-03 | A8280 FF | 0d |  |
|  | 2 | **Bahawalpur Division** |  |  | 2026-01-19 | 2026-04-15 |  |  |  |
|  | 1 | **Bahawalnagar** |  |  | 2026-01-19 | 2026-04-15 |  |  |  |
|  | 1 | **Chishtian** |  |  | 2026-01-19 | 2026-04-15 |  |  |  |
|  | 1 | **Camera & Field Surveillance System (17 Nos.)** |  |  | 2026-01-19 | 2026-03-03 |  |  |  |
|  | 1 | **Camera Poles & Foundations** |  |  | 2026-01-19 | 2026-02-16 |  |  |  |
| A1020 |  | Survey & Marking |  | 4d | 2026-01-19 | 2026-01-22 | A1000 SS | 40d | 0d |
| A1030 |  | Excavation |  | 6d | 2026-01-23 | 2026-01-28 | A1020 | 40d | 0d |
| A1040 |  | PCC |  | 3d | 2026-01-29 | 2026-01-31 | A1030 | 40d | 0d |
| A1050 |  | Foundation Concrete |  | 4d | 2026-02-01 | 2026-02-04 | A1040 | 40d | 0d |
| A1060 |  | Curing & Backfilling |  | 7d | 2026-02-05 | 2026-02-11 | A1050 | 40d | 0d |
| A1070 |  | Pole Erection |  | 5d | 2026-02-12 | 2026-02-16 | A1060 | 40d | 0d |
|  | 2 | **ANPR Poles & Foundations** |  |  | 2026-01-23 | 2026-01-31 |  |  |  |
| A1080 |  | Excavation & Foundation |  | 5d | 2026-01-23 | 2026-01-27 | A1020 | 58d | 0d |
| A1090 |  | Pole Installation |  | 4d | 2026-01-28 | 2026-01-31 | A1080 | 58d | 0d |
|  | 3 | **Power Cabinets for Camera & ANPR** |  |  | 2026-01-29 | 2026-02-09 |  |  |  |
| A1100 |  | Cabinet Foundation |  | 3d | 2026-01-29 | 2026-01-31 | A1030 | 58d | 0d |
| A1110 |  | Cabinet Installation |  | 4d | 2026-02-01 | 2026-02-04 | A1100 | 58d | 0d |
| A1120 |  | Internal Wiring |  | 5d | 2026-02-05 | 2026-02-09 | A1110 | 58d | 0d |
|  | 4 | **Camera Installation** |  |  | 2026-02-01 | 2026-02-22 |  |  |  |
| A1150 |  | ANPR Camera Installation |  | 4d | 2026-02-01 | 2026-02-04 | A1090 | 58d | 18d |
| A1130 |  | Fixed Camera Installation |  | 6d | 2026-02-17 | 2026-02-22 | A1070 | 40d | 0d |
| A1140 |  | PTZ Camera Installation |  | 5d | 2026-02-17 | 2026-02-21 | A1070 | 41d | 1d |
| A1160 |  | Strobe Light Installation |  | 3d | 2026-02-17 | 2026-02-19 | A1070 | 43d | 0d |

| ID | WBS | Activity | Duration | Start | Finish | Predecessors | Total float | Free float |
| --- | --- | --- | --- | --- | --- | --- | --- | --- |
|  | 5 | **Body Worn Camera System** |  | 2026-02-20 | 2026-02-25 |  |  |  |
| A1170 |  | Body Cameras Deployment | 3d | 2026-02-20 | 2026-02-22 | A1160 | 47d | 0d |
| A1180 |  | Dock & Storage Setup | 3d | 2026-02-23 | 2026-02-25 | A1170 | 47d | 1d |
|  | 6 | **Field Devices** |  | 2026-02-10 | 2026-02-12 |  |  |  |
| A1240 |  | Panic Button Installation | 3d | 2026-02-10 | 2026-02-12 | A1120 | 64d | 31d |
| A1250 |  | Attendance Device Installation | 3d | 2026-02-10 | 2026-02-12 | A1120 | 64d | 31d |
|  | 7 | **Field Equipment Configuration** |  | 2026-02-23 | 2026-03-03 |  |  |  |
| A1190 |  | Camera Addressing & Labeling | 5d | 2026-02-23 | 2026-02-27 | A1130, A1140, A1150, A1160 | 40d | 0d |
| A1200 |  | Initial Camera Testing | 4d | 2026-02-28 | 2026-03-03 | A1120, A1190 | 40d | 7d |
|  | 2 | **Power & Electrical Infrastructure** |  | 2026-02-05 | 2026-03-09 |  |  |  |
|  | 1 | **Power Supply Works** |  | 2026-02-05 | 2026-02-18 |  |  |  |
| A1260 |  | Power Cable Laying | 7d | 2026-02-05 | 2026-02-11 | A1110 | 70d | 0d |
| A1270 |  | Panel Installation | 4d | 2026-02-12 | 2026-02-15 | A1260 | 70d | 0d |
| A1280 |  | Earthing & Grounding | 3d | 2026-02-16 | 2026-02-18 | A1270 | 70d | 0d |
|  | 2 | **Backup Power Systems** |  | 2026-02-19 | 2026-03-01 |  |  |  |
| A1290 |  | UPS Installation | 3d | 2026-02-19 | 2026-02-21 | A1280 | 70d | 0d |
| A1300 |  | Battery Installation | 2d | 2026-02-22 | 2026-02-23 | A1290 | 70d | 0d |
| A1310 |  | Generator Installation | 4d | 2026-02-24 | 2026-02-27 | A1300 | 70d | 0d |
| A1320 |  | Generator Testing & Commissioning | 2d | 2026-02-28 | 2026-03-01 | A1310 | 70d | 0d |
|  | 3 | **Split AC Installation** |  | 2026-03-02 | 2026-03-09 |  |  |  |
| A1330 |  | AC Mounting | 3d | 2026-03-02 | 2026-03-04 | A1320 | 70d | 0d |
| A1340 |  | Electrical Connections | 3d | 2026-03-05 | 2026-03-07 | A1330 | 70d | 0d |
| A1350 |  | Testing | 2d | 2026-03-08 | 2026-03-09 | A1340 | 70d | 40d |
|  | 3 | **OFC, Network & Connectivity** |  | 2026-01-19 | 2026-03-22 |  |  |  |
|  | 1 | **OFC Route Survey & Design** |  | 2026-01-19 | 2026-01-27 |  |  |  |
| A1360 |  | Route Survey | 4d | 2026-01-19 | 2026-01-22 | A1000 SS | 33d | 0d |
| A1370 |  | Design Approval | 5d | 2026-01-23 | 2026-01-27 | A1360 | 33d | 0d |

| ID | WBS | Activity | Duration | Start | Finish | Predecessors | Total float | Free float |
| --- | --- | --- | --- | --- | --- | --- | --- | --- |
|  | 2 | **OFC Civil Works** |  | 2026-01-28 | 2026-02-25 |  |  |  |
| A1380 |  | Trenching | 10d | 2026-01-28 | 2026-02-06 | A1370 | 33d | 0d |
| A1390 |  | Duct / Pipe Laying | 8d | 2026-02-07 | 2026-02-14 | A1380 | 33d | 0d |
| A1400 |  | Manhole Construction | 6d | 2026-02-15 | 2026-02-20 | A1390 | 33d | 0d |
| A1410 |  | Backfilling & Restoration | 5d | 2026-02-21 | 2026-02-25 | A1400 | 33d | 0d |
|  | 3 | **OFC Installation** |  | 2026-02-26 | 2026-03-10 |  |  |  |
| A1420 |  | OFC Cable Pulling | 6d | 2026-02-26 | 2026-03-03 | A1410 | 33d | 0d |
| A1430 |  | Splicing | 4d | 2026-03-04 | 2026-03-07 | A1420 | 33d | 0d |
| A1440 |  | OFC Testing | 3d | 2026-03-08 | 2026-03-10 | A1430 | 33d | 0d |
|  | 4 | **Aerial GPON OFC** |  | 2026-02-17 | 2026-02-25 |  |  |  |
| A1450 |  | Pole Installation | 4d | 2026-02-17 | 2026-02-20 | A1070 | 46d | 0d |
| A1460 |  | Aerial OFC Laying | 3d | 2026-02-21 | 2026-02-23 | A1450 | 46d | 0d |
| A1470 |  | Termination & Testing | 2d | 2026-02-24 | 2026-02-25 | A1460 | 46d | 13d |
|  | 5 | **Network Connectivity** |  | 2026-01-19 | 2026-03-22 |  |  |  |
| A1680 |  | WIFI Access Points | 4d | 2026-01-19 | 2026-01-22 |  |  |  |
| A1690 |  | Wifi Controller | 4d | 2026-01-19 | 2026-01-22 |  |  |  |
| A2370 |  | ISP for Control Room (50 MBPS) | 4d | 2026-01-19 | 2026-01-22 |  |  |  |
| A2380 |  | Tehsil to District - Lahore Connectivity (30 MBPS) | 4d | 2026-01-19 | 2026-01-22 |  |  |  |
| A2390 |  | ISP (30 MBPS LTE Sites-Lahore Connectivity) | 4d | 2026-01-19 | 2026-01-22 |  |  |  |
| A2400 |  | ANPR Sites (45 MBPS PER SITE FOR Tehsil to relevant District Connectivity) | 4d | 2026-01-19 | 2026-01-22 |  |  |  |
| A2410 |  | Streaming Server (for 18 Cities) | 4d | 2026-01-19 | 2026-01-22 |  |  |  |
| A1480 |  | ISP Coordination | 5d | 2026-03-11 | 2026-03-15 | A1200, A1440, A1470 | 33d | 0d |
| A1490 |  | Site Connectivity Setup | 4d | 2026-03-16 | 2026-03-19 | A1240, A1250, A1480 | 33d | 0d |
| A1500 |  | Bandwidth Testing | 3d | 2026-03-20 | 2026-03-22 | A1490 | 33d | 0d |

| ID | WBS | Activity | Duration | Start | Finish | Predecessors | Total float | Free float |
| --- | --- | --- | --- | --- | --- | --- | --- | --- |
|  | 4 | **Control Room Development** |  | 2026-01-19 | 2026-02-26 |  |  |  |
|  | 1 | **Control Room Civil Works** |  | 2026-01-19 | 2026-02-06 |  |  |  |
| A1510 |  | Renovation Works | 8d | 2026-01-19 | 2026-01-26 | A1000 SS | 46d | 0d |
| A1520 |  | Flooring & Ceiling | 6d | 2026-01-27 | 2026-02-01 | A1510 | 46d | 0d |
| A1530 |  | Painting & Finishing | 5d | 2026-02-02 | 2026-02-06 | A1520 | 46d | 0d |
|  | 2 | **Furniture & Fixtures** |  | 2026-01-19 | 2026-02-12 |  |  |  |
| A2440 |  | 42U Rack | 4d | 2026-01-19 | 2026-01-22 |  |  |  |
| A1540 |  | Workstations Installation | 4d | 2026-02-07 | 2026-02-10 | A1530 | 46d | 0d |
| A1550 |  | Chairs Installation | 2d | 2026-02-11 | 2026-02-12 | A1540 | 111d |  |
|  | 3 | **Network Equipment** |  | 2026-02-11 | 2026-02-19 |  |  |  |
| A1560 |  | Core Switch (2) + Network switch (1) | 3d | 2026-02-11 | 2026-02-13 | A1540 | 46d | 0d |
| A1580 |  | Firewall Installation | 3d | 2026-02-17 | 2026-02-19 |  | 46d | 0d |
|  | 4 | **Display Systems** |  | 2026-01-19 | 2026-02-26 |  |  |  |
| A2450 |  | Core i7 Computers with 2 Screens | 4d | 2026-01-19 | 2026-01-22 |  |  |  |
| A1590 |  | Video Wall Installation | 4d | 2026-02-20 | 2026-02-23 | A1580 | 46d | 0d |
| A1600 |  | Monitoring Screen Installation | 3d | 2026-02-24 | 2026-02-26 | A1590 | 46d | 0d |
|  | 5 | **Rugged smart phones** |  |  |  |  |  |  |
|  | 6 | **Laptops** |  |  |  |  |  |  |
|  | 7 | **Dji Drones** |  |  |  |  |  |  |
|  | 5 | **IT Systems, Servers & Software** |  | 2026-01-19 | 2026-04-15 |  |  |  |
|  | 1 | **Server & Storage Systems** |  | 2026-01-19 | 2026-03-09 |  |  |  |
| A2430 |  | Hard Disks 20 TB or above (MDC+DRC) | 4d | 2026-01-19 | 2026-01-22 |  |  |  |
| A1610 |  | SAN Storage Installation | 4d | 2026-02-27 | 2026-03-02 | A1180, A1600 | 46d | 0d |
| A1620 |  | HDD Installation | 3d | 2026-03-03 | 2026-03-05 | A1610 | 46d | 0d |
| A1630 |  | GPU Server Installation | 4d | 2026-03-06 | 2026-03-09 | A1620 | 46d | 13d |

| ID | WBS | Activity | Duration | Start | Finish | Predecessors | Total float | Free float |
| --- | --- | --- | --- | --- | --- | --- | --- | --- |
|  | 2 | **VMS & AI Systems** |  | 2026-03-23 | 2026-04-04 |  |  |  |
| A1640 |  | VMS Installation | 5d | 2026-03-23 | 2026-03-27 | A1500, A1630 | 33d | 0d |
| A1650 |  | AI NVR Configuration | 4d | 2026-03-28 | 2026-03-31 | A1640 | 33d | 0d |
| A1660 |  | Analytics Configuration | 4d | 2026-04-01 | 2026-04-04 | A1650 | 33d | 0d |
|  | 3 | **Software & Applications** |  | 2026-01-19 | 2026-04-09 |  |  |  |
| A2420 |  | Mobile Application (Refer Specifications) | 4d | 2026-01-19 | 2026-01-22 |  |  |  |
| A1670 |  | PSCA HQ Integration | 5d | 2026-04-05 | 2026-04-09 | A1660 | 33d | 0d |
|  | 4 | **System Licensing** |  | 2026-04-10 | 2026-04-15 |  |  |  |
| A1700 |  | Camera Licenses | 3d | 2026-04-10 | 2026-04-12 | A1670 | 33d | 0d |
| A1710 |  | System Licenses | 3d | 2026-04-13 | 2026-04-15 | A1700 | 33d |  |
|  | 3 | **Testing & Commissioning** |  | 2026-04-19 | 2026-06-03 |  |  |  |
| A8220 |  | Field Testing | 4d | 2026-04-19 | 2026-04-22 | A1350, A1600 | 30d |  |
| A8230 |  | OFC Testing | 4d | 2026-04-25 | 2026-04-28 | A1500 | 24d |  |
| A8250 |  | Integration Testing | 4d | 2026-05-19 | 2026-05-22 | A1200, A1710 | 0d |  |
| A8260 |  | Final Joint Inspection | 4d | 2026-05-23 | 2026-05-26 | A8220, A8230, A8250 | 0d |  |
| A8270 |  | Final Commissioning | 4d | 2026-05-27 | 2026-05-30 | A8260 | 0d |  |
| A8280 |  | Project Handover | 4d | 2026-05-31 | 2026-06-03 | A8270 | 0d |  |
