# INFRASTRUCTURE DEVELOPMENT AT NSIT PHASE-1 (PACKAGE-2) , LAHORE.

Schedule from Primavera P6, 2025-05-27 to 2026-02-20, data date 2025-05-27, costs in PKR.
Must finish by 2026-02-21

## Calendars

- WASA-RWM: Mon-Sat 08:00-16:00; Sun off.

## Resources

| Resource | Group | Unit | Rate |
| --- | --- | --- | --- |
| PST 5% | material | ea | 1099712 |
| Bitumen coating | material | SM | 287.9 |
| Excavation for water supply lines | material |  |  |
| 0 ft to above 15ft | material | CM | 650 |
| dry rammed brick or stone ballast | material | CM | 4100 |
| providing & laying RCC Pipe sewer ASTM Class III | material |  |  |
| 530 mm | material | P Meter | 6851.24 |
| 460 mm | material | P Meter | 5783.6 |
| 380 mm | material | P Meter | 4700 |
| 310 mm | material | P Meter | 3266.55 |
| providing & laying RCC Pipe sewer ASTM Class IV | material |  |  |
| 910 mm | material | P Meter | 25719.8 |
| 760 mm | material | P Meter | 18507 |
| 610 mm | material | P Meter | 10847 |
| Crushed stone aggregate | material | CM | 7200 |
| sand under & around sewer pipe | material | CM | 2450 |
| PCC | material |  |  |
| 1:4:8 | material | CM | 18500 |
| 1:3:6 | material | CM | 20500 |
| 1:2:4 | material | CM | 24500 |
| Compaction with power road roller | material | CM | 60.15 |
| Ramming earthwork | material | CM | 90 |
| Mixing , moistening earth to OMC | material | CM | 75 |
| Rehandling of earthwork | material | CM | 132.85 |
| Pacca brick work other than building upto 10ft | material | CM | 15895 |
| Pacca brick work other than building from 20 to 30ft | material | CM | 17068.3 |
| pacca brickwork other than building from 10ft to 20ft | material | CM | 16481.7 |
| extra pacca brickwork for circular masonary | material | CM | 1274.85 |
| cement plaster 1:3 upto 20ft | material | SM | 531.7 |
| cement plaster 1:3 20 to 30ft | material | SM | 597.4 |
| bitumen coating 20lb per 100sft | material | SM | 250 |
| Painting with epoxy paint | material |  |  |
| Each & subsequent coat | material | SM | 275.7 |
| Priming coat | material | SM | 381.55 |
| Malleable iron steps | material | ea | 2809 |
| steel deformed bars (grade 60) | material | tons | 320000 |
| RCC for roof slab, beam, column (1:2:4) | material | CM | 31229.8 |
| Compaction of earthwork (soft, hard, ordinary) | material |  |  |
| 6' thick RCC manhole cover | material | PS | 40000 |
| Earthwork excavation for storm water channel, drains | material |  |  |
| Upto 10ft by mechanical means | material | CM | 650 |
| supplying and filling sand | material | CM | 2450 |
| plain cement concrete 1:4:8 | material | CM | 18500 |
| Fabrication of steel | material |  |  |
| deformed bars (grade 60) | material | tons | 320000 |
| Substructure | material |  |  |
| 4000 psi | material | CM | 35500 |
| Retaining/ shear walls | material |  |  |
| 4000 psi | material | CM | 37000 |
| RCC in roof slabs, beams, columns | material |  |  |
| 4000 psi | material | CM | 35500 |
| 10" PVC water stopper | material | M | 1880 |
| bitumen coating | material | SM | 287.9 |
| Filling expansion joints | material | PM P 25mm width | 129.9 |
| Excavation of trenches for watersupply | material | CM | 650 |
| Rehandling of earthwork | material | CM | 132.85 |
| Sand under floor | material | CM | 2450 |
| Compaction of earthwork | material |  |  |
| Ramming earthwork | material | CM | 90 |
| Mixing , moistening earth to OMC | material | CM | 75 |
| PCC | material |  |  |
| Ratio (1:4:8) | material | CM | 18500 |
| Ratio (1:2:4) | material | CM | 24500 |
| PN-8 SDR-21 | material |  |  |
| 32 mm | material | P Meter | 167.3 |
| 160 mm | material | P Meter | 3720 |
| 200 mm | material | P Meter | 4757.9 |
| 250 mm | material | P Meter | 7355.6 |
| Heavy duty Globe valve | material |  |  |
| Brass threaded valves 2" dia | material | ea | 14991.7 |
| Air valve 2 1/2 dia | material | ea | 14395.8 |
| Steel deformed bars(grade 60) | material | tons | 320000 |
| RCC in foundation | material | CM | 28500 |
| RCC in roof slab , beam ,column | material | CM | 28500 |
| 6" thick RCC Manhole cover | material | ea | 40000 |
| Garden / fire hydrant | material | ea | 68766.6 |
| Excavation (35'x40'x5') | material | CM | 650 |
| drilling of bore | material |  |  |
| Exceeding 250ft depth below GL (15' to18") | material | RM | 2848.65 |
| Exceeding 250ft depth below GL (20" TO 26') | material | RM | 4096.8 |
| From ground level to 250ft below GL (20" TO 26") | material | RM | 4096.8 |
| transportation of earth | material | CM | 258.92 |
| Furnishing sample of water from borehole | material | P set 2 bottles | 232.8 |
| MS blind pipe | material | RM | 26634.2 |
| Shrouding | material | CM | 7293.55 |
| testing & developing of tubewell of 6" dia | material |  |  |
| above 1.5 cs discharge | material | P hours | 3253.1 |
| upto 1.5 cs discharge | material | P hours | 2693.7 |
| FRP strainer | material | RM | 8678.3 |
| Small iron work, MS Cap, MS bars | material | kg | 650 |
| Geo physical log survey | material | Job | 84083 |
| base plate 3'x3'x1.5" | material | ea | 52887 |
| Vertical shaft deep well turbine pump | material | PS | 13000000 |
| G.I flexible pipe | material | P Meter | 2169.1 |
| single core PVC insulated (95mm) | material | P Meter | 4130.6 |
| PVC pipe for surface wiring | material | P Meter | 879.05 |
| PVC pipe for recessed wiring | material | P Meter | 1006.8 |
| 3 pin switch & plug | material | ea | 214.45 |
| plain pendent lamp holder | material | ea | 426.5 |
| Mercury vapour lamp | material | ea | 4126.5 |
| tube light | material | PS | 2008.5 |
| Pakistan energy label (NEECA) EXAUST FAN | material | ea | 6048.1 |
| Pakistan energy label (NEECA) WALL BRACKET FAN | material | ea | 11400.1 |
| Rehandling of earth work | material | CM | 132.85 |
| Pacca brick work | material | CM | 14934.8 |
| Steel deformed bars (grade 60) | material | kg | 320 |
| RCC in roof slab 1:2:4 | material | CM | 24500 |
| PVC Pipe 12mm i/d | material | P Meter | 195.75 |
| GI Pipeline in trenches | material | P Meter | 770 |
| Drilling of bores for tubewells | material |  |  |
| from ground level to 250ft below GL | material | RM | 4096.8 |
| Sluice valve of BSS quality 8" i/d | material | ea | 64825.2 |
| Cast iron special of BSS ( 8 to 12" i/d) | material | kg | 466.95 |
| cement concrete/ brick blocks | material | CM | 24500 |
| pacca brick work other than building upto 10ft | material | CM | 15895 |
| RCC support wall for tubewell delivery pipe | material | CM | 24500 |
| Excavation in foundation | material | CM | 650 |
| pacca brick work in foundation | material | CM | 14934.8 |
| damp proof course | material | SM | 1290.5 |
| pacca brickwork in ground floor | material | CM | 15271.2 |
| Steel deformed bars (grade 60) | material | kg | 320 |
| RCC in roof slab, beam, column | material | CM | 31229.8 |
| cement plaster 1:4 upto 20ft | material | SM | 506.6 |
| cement pointing | material | SM | 548.1 |
| Khassi parnalas in CS 1:4 | material | P Meter | 859.7 |
| khurrass on roof | material | ea | 1214.65 |
| bottom khurrass of brick masonry | material | ea | 2331.7 |
| PVC/ uPVC pipeline 3" i/d | material | RM | 1128.55 |
| dry rammed brick | material | CM | 4464.1 |
| Conglomerate flooring | material | SM | 1170.75 |
| sand under floor | material | CM | 2450 |
| single layer of tiles 9"x4 1/2"x1 1/2" | material | SM | 1558 |
| dry brick of edge paving | material | SM | 1618.1 |
| Filling watering & ramming earth under floors | material | CM | 267.15 |
| Floor trap of cast iron | material | ea | 1209 |
| steel grated doors | material | SM | 24385.2 |
| steel windows using MS Sheet | material | SM | 14435.4 |
| Fabrication of heavy steel work | material | kg | 650 |
| Erection & fitting in position of iron trusses | material | kg | 18.91 |
| Deodar wood shelves | material | SM | 12357 |
| preparing new surfaces & painting of windows & doors | material |  |  |
| Each subsequent coat | material | SM | 130.2 |
| primer coat | material | SM | 202.95 |
| Painting new surface | material |  |  |
| 2nd & each subsequent coat | material | SM | 142.25 |
| Prime coat | material | SM | 183.75 |
| Distempering new surfaces 3 coats | material |  |  |
| three coat | material | SM | 168.15 |
| two coat | material | SM | 131.65 |
| one coat | material | SM | 95.1 |
| Box of deodar wood | material | Job | 49399.7 |
| Excavation of trenches | material | CM | 650 |
| rehandling of earthwork | material | CM | 132.85 |
| connection for watersupply line with the running main( 8" i/d) | material | P Connection | 5501.1 |
| sluice valve for cast iron pipeline | material | ea | 64825.2 |
| cast iron ( bends, tee etc) | material | kg | 462.85 |
| cement concrete | material | CM | 24500 |
| ordinary | material | SM | 4.05 |
| heavy | material |  | 8.1 |
| Above 2 1/2ft to 6ft girth | material | ea | 4372.5 |
| Upto 2 1/2 ft girth | material | ea | 2247.3 |
| 90% AASHTO DRY DENSITY | material | CM | 50.75 |
| 95% to 100% AASHTO DRY DENSITY | material | CM | 60.15 |
| Ordinary soil | material | CM | 239.15 |
| Transportation of Earth | material | CM | 328 |
| 90% COMPACTION OF AASHTO DRY DENSITY | material | CM | 800 |
| 95% to 100% compaction of AASHTOO DEY DENSITY | material | CM | 800 |
| Earthworks in ordinary soil for embankments lead upto 100ft | material |  |  |
| Earthworks with borrow in ordinary soil for embankments lead upto 100ft | material |  |  |
| 90% compaction of AASHTOO DRY DENSITY | material | CM | 1750 |
| 95% to 100% compaction of AASHTOO DRY DENSITY | material | CM | 1750 |
| Providing & Laying sand cussion | material | CM | 2450 |
| Turfing slopes of banks with grass sods | material | SM | 350 |
| crushed stone aggregate | material | CM | 9014.45 |
| Providing & laying WBM base course | material | CM | 11911.5 |
| providing & laying bituminous priming coat | material | SM | 245 |
| Asphalt base course | material | CM | 36200 |
| Providing & laying bituminous tack coat | material | SM | 135 |
| Asphaltic wearing course | material | CM | 38000 |
| jungle clearance | material |  |  |
| Cutting & Removing trees | material |  |  |
| Compaction of Earthwork | material |  |  |
| Earthwork Excavation | material |  |  |
| Providing & fixing precast edge kerbstone 18" HIGH | material | RM | 2350 |
| Providing & fixing precast edge kerbstone 14" HIGH | material | RM | 1750 |
| Providing & laying tuff pavers | material |  |  |
| 80 mm | material | SM | 2604.45 |
| 50 mm thick | material | SM | 2008.6 |
| Painting traffic lane markings | material | LM | 250 |
| painting arrows & zebra crossings | material | SM | 1500 |
| providing & fixing cat eyes | material | Nos | 850 |
| providing & fixing road studs of alluminium alloy | material | Nos | 1200 |
| 3-4ft size | material | SM | 11346 |
| Pole mounted direction board (circular/ triangular) | material |  |  |
| Pole mounted direction board (rectangular) | material |  |  |
| 54-120 sft | material | SM | 9282.7 |
| 12-48 sft | material | SM | 10336.9 |
| 3mm thick aluminuim sheet instead of G.I sheet | material |  |  |
| 3-4 ft | material | SM | 2711.9 |
| 54-120 sft | material | SM | 2298.9 |
| 12-48 sft | material | SM | 2421.2 |
| Vertical post of medium quality G.I pipe | material |  |  |
| 5 inch dia | material | M | 11004 |
| 4 inch dia | material | M | 8592.65 |
| Lettering & printing of signage | material | SM | 16993.5 |
| road lighting pole foundation | material | ea | 47250 |
| 10 m high single arm octagonal shape electric street light pole | material | ea | 162000 |
| 12 m high single arm octagonal shape electric street light pole | material | ea | 182250 |
| 12 m high double arm octagonal shape electric street light pole | material | ea | 191700 |
| 15 m conical OCTAGONAL galvanized steel pole | material | ea | 222750 |
| PVC pipe class B 100mm in trenches | material | RM | 1118.68 |
| PVC pipe class B 100mm | material | RM | 1118.68 |
| PVC PIPE CLASS D 100mm | material | RM | 1902.98 |
| Road lighting LED cobra head lumInaries of 90W | material | Nos | 67500 |
| Road lighting LED cobra head lumInaries of 120W | material | Nos | 72616 |
| Road lighting LED cobra head lumInaries of 150W | material | Nos | 95380 |
| Road lighting LED cobra head lumInaries of 180W | material | Nos | 98000 |
| Flood lighting LED luminaries 120W | material | Nos | 70753 |
| Excavation of trenches | material | CM | 650 |
| Rehandling of earthwork | material | CM | 132.85 |
| Sand under floor | material | CM | 2450 |
| Compaction of earth work | material |  |  |
| ramming earthwork | material | CM | 90 |
| mixing, moistening earth to OMC | material | CM | 63.15 |
| plain cement concrete (1:2:4) | material | CM | 24500 |
| Fabrication of steel(deformed bars) | material | Ton | 320000 |
| substructure(foundation) | material | CM | 28500 |
| retaining/shear wall | material | CM | 28500 |
| erecting, fixing precast cement concrete | material | CM | 5001.3 |
| Pipeline in trenches with PVC/uPVC | material | M | 2190 |
| 10ft 5/8" dia copper coated MS rods | material | ea | 25000 |
| Single core 70mm2 PVC insulated copper conductor cable | material | RM | 3682.07 |
| PVC insulated, PVC sheathed 4 core 70mm2 cable | material | RM | 13500 |
| Single core 35mm2 PVC insulated copper conductor cable | material | RM | 1880.39 |
| PVC insulated, PVC sheathed 4 core 16mm2 cable | material | RM | 3200 |
| Single core 16mm2 PVC insulated copper conductor cable | material | RM | 862.34 |
| 3 Nos 1 core 2.5mm2 PVC grade cable | material |  |  |
| For 15m pole | material | Nos | 9500 |
| For 12m pole | material | Nos | 8500 |
| Road lighting control panel (LCP completion) | material | Job | 650000 |
| Excavation of trenches | material | CM | 650 |
| Rehandling of earthwork | material | CM | 132.85 |
| Sand under floor | material | CM | 2450 |
| Compaction of earth work | material |  |  |
| ramming earthwork | material | CM | 90 |
| mixing, moistening earth to OMC | material | CM | 63.15 |
| plain cement concrete (1:2:4) | material | CM | 24500 |
| Fabrication of steel(deformed bars) | material | Ton | 320000 |
| substructure(foundation) | material | CM | 28500 |
| retaining/shear wall | material | CM | 28500 |
| erecting, fixing precast cement concrete | material | CM | 5001.3 |
| Bitumen coating | material | SM | 287.9 |
| Pipeline in trenches with PVC/uPVC | material | M | 2190 |
| Transformer | material |  |  |
| Supply of 100kVA pad mounted transformer | material | Job | 2850000 |
| MV cable 3 core | material | RM | 15400 |
| Indoor heat shrink termination kit | material | Job | 45000 |
| outdoor heat shrink termination kit | material | Job | 45000 |
| Bore type earthing upto permenant water level | material | Job | 250000 |
| Excavation in open cutting for sewers | material | CM | 650 |
| Excavation of trenches except rock cutting | material | CM | 650 |
| Rehandling of earthwork | material | CM | 132.85 |
| Sand under floor | material | CM | 2450 |
| Compaction of earth work | material |  |  |
| ramming earthwork | material | CM | 90 |
| mixing, moistening earth to OMC | material | CM | 63.15 |
| plain cement concrete (1:2:4) | material | CM | 18500 |
| Fabrication of steel(deformed bars) | material | Ton | 320000 |
| substructure(foundation) | material | CM | 28500 |
| retaining/shear wall | material | CM | 28500 |
| erecting, fixing precast cement concrete | material | CM | 5001.3 |
| Bitumen coating | material | SM | 287.9 |
| HSE Works | material | PS | 5000000 |
| Pipeline in trenches with PVC/uPVC | material | M | 1684.81 |
| Small iron work(gusset plate etc) | material | kg | 650 |
| HDPE working pressure pipe | material | RM | 322.15 |

## Schedule

| ID | WBS | Activity | Type | Duration | Start | Finish | Predecessors | Total float | Resources | Cost |
| --- | --- | --- | --- | --- | --- | --- | --- | --- | --- | --- |
|  | 1 | **Contractual Dates** |  |  | 2025-05-27 | 2026-02-20 |  |  |  |  |
| A1000 |  | Commencement of Project | milestone | 0d | 2025-05-27 | 2025-05-27 |  | 0d |  |  |
| A1010 |  | Project Finish | milestone | 0d | 2026-02-20 | 2026-02-20 | A1280 FF | 0d |  |  |
|  | 6 | **Health Safety Environment (HSE)** |  |  | 2025-05-27 | 2026-02-20 |  |  |  |  |
| A1060 |  | Submission of HSE Plan |  | 5d | 2025-05-27 | 2025-05-31 | A1000 SS | 9d |  |  |
| A1070 |  | Submission of Method Statement |  | 5d | 2025-05-27 | 2025-05-31 | A1000 SS | 9d |  |  |
| A1080 |  | HSE Works |  | 218d | 2025-06-12 | 2026-02-20 | A1060, A1000 SS, A1280 FF, A1070 | 0d | HSE Works [1 PS] | 5,000,000 |
|  | 3 | **Engineering Drawings** |  |  | 2025-05-27 | 2026-01-07 |  |  |  |  |
| A1040 |  | Provision of IFC Drawings |  | 13d | 2025-05-27 | 2025-06-10 | A1000 SS | 0d |  |  |
| A1050 |  | Submission of Shop Drawings |  | 190.5d | 2025-05-29 | 2026-01-06 | A1040 SS+2d | 0d |  |  |
| A1290 |  | Approval of Shop Drawings |  | 189.88d | 2025-05-31 | 2026-01-07 | A1050 SS+2d | 0d |  |  |
|  | 2 | **Completion Milestones** |  |  | 2025-11-22 | 2026-02-20 |  |  |  |  |
|  | 1 | **Construction of Utilities** |  |  | 2025-12-18 | 2026-01-24 |  |  |  |  |
| A3250 |  | LV Cable Trench | milestone | 0d | 2025-12-18 | 2025-12-18 | A2930 FF | 55.25d |  |  |
| A3270 |  | IT System | milestone | 0d | 2026-01-02 | 2026-01-02 | A3210 FF | 42d |  |  |
| A3220 |  | Sewerage System | milestone | 0d | 2026-01-16 | 2026-01-16 | A1540 FF | 30d |  |  |
| A3260 |  | MV Cable Trench | milestone | 0d | 2026-01-19 | 2026-01-19 | A3190 FF | 28d |  |  |
| A3240 |  | Water Supply System | milestone | 0d | 2026-01-22 | 2026-01-22 | A1910 FF | 25d |  |  |
| A3230 |  | Drainage Network | milestone | 0d | 2026-01-24 | 2026-01-24 | A1670 FF | 23d |  |  |
|  | 2 | **Electrical Works** |  |  | 2026-02-18 | 2026-02-18 |  |  |  |  |
| A3280 |  | Electrical Works | milestone | 0d | 2026-02-18 | 2026-02-18 | A3070 FF | 2d |  |  |
|  | 3 | **Road Works** |  |  | 2025-11-22 | 2026-02-20 |  |  |  |  |
| A3290 |  | Earthwork & Allied Activities | milestone | 0d | 2025-11-22 | 2025-11-22 | A2380 FF | 77d |  |  |
| A3300 |  | Sub Base & Base Course | milestone | 0d | 2025-12-31 | 2025-12-31 | A2400 FF | 44d |  |  |
| A3310 |  | Surface Course and Pavements | milestone | 0d | 2026-02-10 | 2026-02-10 | A2440 FF | 9.38d |  |  |
| A3320 |  | Ancillary Works | milestone | 0d | 2026-02-20 | 2026-02-20 | A2640 FF | 0.38d |  |  |

| ID | WBS | Activity | Duration | Start | Finish | Predecessors | Total float | Free float | Resources | Cost |
| --- | --- | --- | --- | --- | --- | --- | --- | --- | --- | --- |
|  | 4 | **Execution Phase** |  | 2025-05-31 | 2026-02-20 |  |  |  |  |  |
|  | 2 | **Road Works** |  | 2025-05-31 | 2026-02-20 |  |  |  |  |  |
|  | 5 | **Primary Roads (Road A, B-2, D-1)** |  | 2025-05-31 | 2026-02-10 |  |  |  |  |  |
|  | 1 | **Earthwork & Allied Activities** |  | 2025-05-31 | 2025-11-22 |  |  |  |  |  |
| A2310 |  | Jungle Clearance & Removing Trees | 80.12d | 2025-05-31 | 2025-09-02 | A1290 SS | 0.38d | 0d | ordinary [34387.5 SM]; heavy [28656.5]; Above 2 1/2ft to 6ft girth [10 ea]; Upto 2 1/2 ft girth [50 ea]; PST 5% [1 ea] | 1,627,188.92 |
| A2330 |  | Earthwork Excavation | 90.12d | 2025-05-31 | 2025-09-13 | A2310 SS | 0.38d | 0d | Ordinary soil [3205.5 CM]; PST 5% [1 ea] | 1,866,307.22 |
| A2320 |  | Compaction of Earthwork | 95d | 2025-06-02 | 2025-09-19 | A2310 SS+1d | 1.38d | 0d | 90% AASHTO DRY DENSITY [3682 CM]; 95% to 100% AASHTO DRY DENSITY [14728 CM]; PST 5% [1 ea] | 2,172,462.6 |
| A2340 |  | Transportation of Earth | 120d | 2025-06-02 | 2025-10-18 | A2330 SS+1d | 9.62d | 0d | Transportation of Earth [3205.5 CM]; PST 5% [1 ea] | 2,151,115.9 |
| A2350 |  | Earthwork in Ordinary Soil for Embankments | 124.75d | 2025-06-07 | 2025-10-30 | A2330 SS+5d, A2320 SS+5d, A2340 SS+5d | 9.62d | 9.25d | 90% COMPACTION OF AASHTO DRY DENSITY [20360 CM]; 95% to 100% compaction of AASHTOO DEY DENSITY [47506.5 CM]; Earthworks in ordinary soil for embankments lead upto 100ft; PST 5% [1 ea] | 55,392,911.9 |
| A2360 |  | Earthwork with Borrow in Ordinary Soil for Embankments | 133d | 2025-06-09 | 2025-11-10 | A2320 SS+5d, A2330 SS+7d, A2350 FF | 0.38d | 0d | Earthworks with borrow in ordinary soil for embankments lead upto 100ft; 90% compaction of AASHTOO DRY DENSITY [5089.5 CM]; 95% to 100% compaction of AASHTOO DRY DENSITY [11876.5 CM]; PST 5% [1 ea] | 30,790,211.9 |
| A2370 |  | Laying Sand Cushion | 131d | 2025-06-12 | 2025-11-11 | A2360 SS+3d | 0.38d | 0d | Providing & Laying sand cussion [3205.5 CM]; PST 5% [1 ea] | 8,953,186.9 |
| A2380 |  | Turfing Slopes | 139d | 2025-06-14 | 2025-11-22 | A2370 SS+2d | 0.38d | 0d | Turfing slopes of banks with grass sods [4942 SM]; PST 5% [1 ea] | 2,829,411.9 |
|  | 2 | **Sub-Base & Base Course** |  | 2025-06-14 | 2025-12-31 |  |  |  |  |  |
| A2390 |  | Providing & Laying Sub-Base Course | 146.5d | 2025-06-14 | 2025-12-02 | A2380 SS, A1670 SS-40d | 0.38d | 0d | crushed stone aggregate [23098.5 CM]; PST 5% [1 ea] | 209,319,985.22 |
| A2400 |  | Providing & Laying WBM | 168d | 2025-06-19 | 2025-12-31 | A2390 SS+4d | 0.38d | 0d | Providing & laying WBM base course [19326.5 CM]; PST 5% [1 ea] | 231,306,736.86 |
|  | 3 | **Surface Course & Pavements** |  | 2025-12-20 | 2026-02-10 |  |  |  |  |  |
| A2410 |  | Bituminous Prime Coat | 35d | 2025-12-20 | 2026-01-29 | A2370, A2400 FS-10d | 0.38d | 0d | providing & laying bituminous priming coat [66042.5 SM]; PST 5% [1 ea] | 17,280,124.4 |
| A2420 |  | Asphaltic Base Course | 42d | 2025-12-22 | 2026-02-07 | A2410 SS+1d | 0.38d | 0d | Asphalt base course [9020.5 CM]; PST 5% [1 ea] | 327,641,811.9 |
| A2430 |  | Bituminous Tack Coat | 37.75d | 2025-12-27 | 2026-02-09 | A2420 SS+5d | 0.38d | 0d | Providing & laying bituminous tack coat [112913 SM]; PST 5% [1 ea] | 16,342,966.9 |
| A2440 |  | Asphaltic Wearing Course | 37.62d | 2025-12-29 | 2026-02-10 | A2430 SS+1d | 0.38d | 0d | Asphaltic wearing course [3302.5 CM]; PST 5% [1 ea] | 126,594,711.9 |
|  | 1 | **Secondary/Internal Roads** |  | 2025-06-30 | 2026-02-12 |  |  |  |  |  |
|  | 1 | **Earthwork & Allied Activities** |  | 2025-06-30 | 2025-12-27 |  |  |  |  |  |
| A2450 |  | Jungle Clearance & Removing Trees | 120.88d | 2025-06-30 | 2025-11-17 | A1290 SS+25d | 0.62d | 0d | jungle clearance; ordinary [34387.5 SM]; heavy [28656.5]; Cutting & Removing trees; Above 2 1/2ft to 6ft girth [10 ea]; Upto 2 1/2 ft girth [50 ea]; PST 5% [1 ea] | 1,627,188.92 |
| A2460 |  | Compaction of Earthwork | 124d | 2025-07-02 | 2025-11-22 | A2450 SS+2d | 0.62d | 0d | Compaction of Earthwork; 90% AASHTO DRY DENSITY [3682 CM]; 95% to 100% AASHTO DRY DENSITY [14728 CM]; PST 5% [1 ea] | 2,172,462.6 |
| A2470 |  | Earthwork Excavation | 127.75d | 2025-07-02 | 2025-11-27 | A2450 SS+1d, A2460 SS | 0.62d | 0d | PST 5% [1 ea]; Earthwork Excavation; Ordinary soil [3205.5 CM] | 1,866,307.22 |
| A2480 |  | Transportation of Earth | 136.44d | 2025-07-03 | 2025-12-09 | A2470 SS+1d | 1.62d | 0d | PST 5% [1 ea]; Transportation of Earth [3205.5 CM] | 2,151,115.9 |
| A2490 |  | Earthwork in Ordinary Soil for Embankments | 136d | 2025-07-07 | 2025-12-11 | A2460 SS+3d, A2470 SS+3d, A2480 SS+3d | 1.62d | 1d | PST 5% [1 ea]; Earthworks in ordinary soil for embankments lead upto 100ft; 90% COMPACTION OF AASHTO DRY DENSITY [20360 CM]; 95% to 100% compaction of AASHTOO DEY DENSITY [47506.5 CM] | 55,392,911.9 |
| A2500 |  | Earthwork with Borrow in Ordinary Soil for Embankments | 142d | 2025-07-08 | 2025-12-19 | A2460 SS+3d, A2470 SS+5d, A2490 SS | 0.62d | 0d | PST 5% [1 ea]; Earthworks with borrow in ordinary soil for embankments lead upto 100ft; 90% compaction of AASHTOO DRY DENSITY [5089.5 CM]; 95% to 100% compaction of AASHTOO DRY DENSITY [11876.5 CM] | 30,790,211.9 |
| A2510 |  | Laying Sand Cushion | 144d | 2025-07-10 | 2025-12-24 | A2500 SS+2d | 0.62d | 0d | PST 5% [1 ea]; Providing & Laying sand cussion [3205.5 CM] | 8,953,186.9 |
| A2520 |  | Turfing Slopes | 145d | 2025-07-12 | 2025-12-27 | A2510 SS+2d | 0.62d | 0d | PST 5% [1 ea]; Turfing slopes of banks with grass sods [4942 SM] | 2,829,411.9 |

| ID | WBS | Activity | Duration | Start | Finish | Predecessors | Total float | Free float | Resources | Cost |
| --- | --- | --- | --- | --- | --- | --- | --- | --- | --- | --- |
|  | 2 | **Sub-Base & Base Course** |  | 2025-07-18 | 2026-01-06 |  |  |  |  |  |
| A2530 |  | Providing & Laying Sub-Base Course | 141d | 2025-07-18 | 2025-12-29 | A2520 SS+5d | 0.62d | 0d | PST 5% [1 ea]; crushed stone aggregate [23098 CM] | 209,315,478 |
| A2540 |  | Providing & Laying WBM | 142.38d | 2025-07-24 | 2026-01-06 | A2530 SS+5d | 0.62d | 0d | PST 5% [1 ea]; Providing & laying WBM base course [19326.5 CM] | 231,306,736.86 |
|  | 3 | **Surface Course & Pavements** |  | 2026-01-06 | 2026-02-12 |  |  |  |  |  |
| A2550 |  | Bituminous Prime Coat | 29d | 2026-01-06 | 2026-02-09 | A2540 | 0.62d | 0d | PST 5% [1 ea]; providing & laying bituminous priming coat [66042.5 SM] | 17,280,124.4 |
| A2560 |  | Asphaltic Base Course | 26.62d | 2026-01-09 | 2026-02-09 | A2550 SS+3d | 0.62d | 0d | PST 5% [1 ea]; Asphalt base course [9020.5 CM] | 327,641,811.9 |
| A2570 |  | Bituminous Tack Coat | 24d | 2026-01-15 | 2026-02-12 | A2560 SS+5d | 7.62d | 0d | PST 5% [1 ea]; Providing & laying bituminous tack coat [112913 SM] | 16,342,966.9 |
| A2580 |  | Asphaltic Wearing Course | 22d | 2026-01-17 | 2026-02-12 | A2570 SS+2d | 7.62d | 21.25d | PST 5% [1 ea]; Asphaltic wearing course [3302.5 CM] | 126,594,711.9 |
|  | 4 | **Ancillary Works** |  | 2025-12-22 | 2026-02-20 |  |  |  |  |  |
| A2590 |  | Kerb Stone Fixing | 31.75d | 2025-12-22 | 2026-01-27 | A2420 SS | 17d | 16.38d | PST 5% [1 ea]; Providing & fixing precast edge kerbstone 18" HIGH [23417 RM]; Providing & fixing precast edge kerbstone 14" HIGH [8020 RM] | 70,164,661.9 |
| A2600 |  | Laying Tuff Pavers | 35d | 2026-01-09 | 2026-02-19 | A2560 SS, A2420 SS+1d, A2590 SS | 0.62d |  | PST 5% [1 ea]; Providing & laying tuff pavers; 80 mm [5500 SM]; 50 mm thick [67263 SM] | 150,528,648.7 |
| A2610 |  | Traffic Lane Marking | 5d | 2026-02-11 | 2026-02-17 | A2440 FS+1d, A2580 SS | 0.38d | 0d | PST 5% [1 ea]; Painting traffic lane markings [34081 LM] | 9,619,961.9 |
| A2620 |  | Painting Zebra Crossings | 5d | 2026-02-12 | 2026-02-18 | A2610 SS+1d | 0.38d | 0d | PST 5% [1 ea]; painting arrows & zebra crossings [511 SM] | 1,866,211.9 |
| A2630 |  | Fixing Cat Eyes & Studs | 5d | 2026-02-12 | 2026-02-18 | A2620 SS | 0.38d | 0d | PST 5% [1 ea]; providing & fixing cat eyes [5590 Nos]; providing & fixing road studs of alluminium alloy [168 Nos] | 6,052,811.9 |
| A2640 |  | Fixing Pole Mounted Direction Boards | 7d | 2026-02-12 | 2026-02-20 | A2630 SS | 0.38d | 0d | PST 5% [1 ea]; 3-4ft size [9 SM]; Pole mounted direction board (circular/ triangular); Pole mounted direction board (rectangular); 54-120 sft [40 SM]; 12-48 sft [24 SM]; 3mm thick aluminuim sheet instead of G.I sheet; 3-4 ft [9 SM]; Vertical post of medium quality G.I pipe; 5 inch dia [36 M]; 4 inch dia [30 M]; Lettering & printing of signage [73 SM] | 3,890,145.4 |
|  | 1 | **Construction of Utilities** |  | 2025-06-06 | 2026-01-31 |  |  |  |  |  |
|  | 2 | **Drainage, Erosion Works & Box Culverts** |  | 2025-06-06 | 2026-01-24 |  |  |  |  |  |
| A1550 |  | Excavation | 123d | 2025-06-06 | 2025-10-27 | A1290 SS+5d | 4.38d | 0d | Earthwork excavation for storm water channel, drains; Upto 10ft by mechanical means [13032 CM]; PST 5% [1 ea] | 9,570,511.9 |
| A1560 |  | Sand Bedding | 125d | 2025-06-12 | 2025-11-04 | A1550 SS+5d | 4.38d | 0d | supplying and filling sand [2057 CM]; PST 5% [1 ea] | 6,139,361.9 |
| A1570 |  | Plain Cement (P.C.C) | 119d | 2025-06-18 | 2025-11-03 | A1560 SS+5d | 4.38d | 0d | plain cement concrete 1:4:8 [708 CM]; PST 5% [1 ea] | 14,197,711.9 |
| A1580 |  | Steel Reiforcement for Drain Footing | 128d | 2025-06-21 | 2025-11-17 | A1570 SS+3d | 4.38d | 0d | Fabrication of steel; deformed bars (grade 60) [148.26 tons]; PST 5% [1 ea] | 48,542,911.9 |
| A1590 |  | Concrete Pouring of Footing | 133d | 2025-06-26 | 2025-11-27 | A1580 SS+4d | 4.38d | 0d | Substructure; 4000 psi [1145 CM]; PST 5% [1 ea] | 41,747,211.9 |
| A1600 |  | Steel Reiforcement for Drain Walls | 136d | 2025-07-01 | 2025-12-05 | A1590 SS+4d | 4.38d | 0d | Fabrication of steel; deformed bars (grade 60) [148.26 tons]; PST 5% [1 ea] | 48,542,911.9 |
| A1610 |  | Concrete Pouring of Drain Walls | 132d | 2025-07-05 | 2025-12-05 | A1600 SS+4d | 4.38d | 0d | Retaining/ shear walls; 4000 psi [2387 CM]; PST 5% [1 ea] | 89,418,711.9 |
| A1620 |  | Steel Reiforcement for Drain Top Slab | 143d | 2025-07-10 | 2025-12-23 | A1610 SS+4d | 4.38d | 0d | Fabrication of steel; deformed bars (grade 60) [148.26 tons]; PST 5% [1 ea] | 48,542,911.9 |
| A1640 |  | Providing PVC Water Stopper | 150d | 2025-07-14 | 2026-01-03 | A1620 SS+3d | 5.38d | 1d | 10" PVC water stopper [8397 M]; PST 5% [1 ea] | 16,886,071.9 |
| A1630 |  | Concrete Pouring of Drain Top Slab | 147d | 2025-07-15 | 2026-01-01 | A1620 SS+4d, A1640 SS | 4.38d | 0d | RCC in roof slabs, beams, columns; 4000 psi [1145 CM]; PST 5% [1 ea] | 41,747,211.9 |
| A1650 |  | Bitumen Coating of Drain | 152d | 2025-07-19 | 2026-01-12 | A1630 SS+4d | 6.38d | 2d | bitumen coating [14558 SM]; PST 5% [1 ea] | 5,290,960.1 |
| A1660 |  | Filling Expnsion Joints with Bitumen | 156d | 2025-07-21 | 2026-01-17 | A1630 SS+5d | 4.38d | 0d | Filling expansion joints [5546 PM P 25mm width]; PST 5% [1 ea] | 1,820,137.3 |
| A1670 |  | Backfilling & Compaction | 157d | 2025-07-26 | 2026-01-24 | A1650 SS+4d, A1660 SS+5d | 4.38d | 0d | PST 5% [1 ea] | 1,099,711.9 |

| ID | WBS | Activity | Duration | Start | Finish | Predecessors | Total float | Free float | Resources | Cost |
| --- | --- | --- | --- | --- | --- | --- | --- | --- | --- | --- |
|  | 1 | **Sewerage Works** |  | 2025-06-12 | 2026-01-16 |  |  |  |  |  |
|  | 1 | **Sewerage Pipe laying** |  | 2025-06-12 | 2025-12-29 |  |  |  |  |  |
| A1370 |  | Excavation | 153d | 2025-06-12 | 2025-12-06 | A1040 SS, A1050 SS, A1290 SS+10d | 30d | 0d | Excavation for water supply lines; 0 ft to above 15ft [11842 CM]; PST 5% [1 ea] | 8,797,011.9 |
| A1380 |  | Providing Stone Ballast Bedding | 150.62d | 2025-06-14 | 2025-12-06 | A1370 SS+2d | 31d | 0d | dry rammed brick or stone ballast [6311 CM]; PST 5% [1 ea] | 26,974,811.9 |
| A1390 |  | Providing sand Ballast Bedding | 149d | 2025-06-17 | 2025-12-06 | A1380 SS+2d | 31d | 0d | PST 5% [1 ea] | 1,099,711.9 |
| A1400 |  | Laying, Jointing & Testing of RCC Pipes | 155d | 2025-06-23 | 2025-12-19 | A1390 SS+5d | 31d | 0d | providing & laying RCC Pipe sewer ASTM Class III; 530 mm [220 P Meter]; 460 mm [2191 P Meter]; 380 mm [212 P Meter]; 310 mm [91 P Meter]; providing & laying RCC Pipe sewer ASTM Class IV; 910 mm [1232 P Meter]; 760 mm [144 P Meter]; 610 mm [794 P Meter]; PST 5% [1 ea] | 59,536,857.05 |
| A1410 |  | Provinding Sand & Crushed Stone Aggregate Around Pipes | 152d | 2025-06-25 | 2025-12-18 | A1400 SS+2d | 31d | 0d | Crushed stone aggregate [2692 CM]; sand under & around sewer pipe [8643 CM]; PST 5% [1 ea] | 41,657,461.9 |
| A1420 |  | Plain Cement Concrete Pouring | 158d | 2025-06-27 | 2025-12-27 | A1410 SS+2d | 31d | 0d | PCC; 1:4:8 [40 CM]; 1:3:6 [149 CM]; 1:2:4 [57 CM]; PST 5% [1 ea] | 6,290,711.9 |
| A1430 |  | Backfilling & Compaction | 156.25d | 2025-06-30 | 2025-12-29 | A1420 SS+2d | 31d | 1d | Compaction with power road roller [3799.5 CM]; Ramming earthwork [8865 CM]; Mixing , moistening earth to OMC [8865 CM]; PST 5% [1 ea] | 2,790,976.83 |
|  | 2 | **Sewerage Manholes** |  | 2025-06-12 | 2026-01-16 |  |  |  |  |  |
| A1440 |  | Excavation | 123d | 2025-06-12 | 2025-11-01 | A1370 SS | 30d | 0d | Excavation for water supply lines; 0 ft to above 15ft [11842 CM]; PST 5% [1 ea] | 8,797,011.9 |
| A1450 |  | Rehandling of Earthwork | 125d | 2025-06-14 | 2025-11-06 | A1440 SS+2d | 31d | 1d | Rehandling of earthwork [25329 CM]; PST 5% [1 ea] | 4,464,669.55 |
| A1460 |  | Brickwork for Manholes | 141d | 2025-06-17 | 2025-11-27 | A1440 SS+4d, A1450 SS+1d | 30d | 0d | Pacca brick work other than building upto 10ft [93 CM]; Pacca brick work other than building from 20 to 30ft [41 CM]; pacca brickwork other than building from 10ft to 20ft [18 CM]; extra pacca brickwork for circular masonary [152 CM]; PST 5% [1 ea] | 3,768,201.7 |
| A1500 |  | Fixing Iron Steps Inside Manholes | 162d | 2025-06-21 | 2025-12-26 | A1460 SS+4d | 30d | 0d | Malleable iron steps [970 ea]; PST 5% [1 ea] | 3,824,441.9 |
| A1470 |  | Cement Plaster of Manholes | 145d | 2025-06-23 | 2025-12-08 | A1460 SS+5d | 31d | 0d | cement plaster 1:3 upto 20ft [372 SM]; cement plaster 1:3 20 to 30ft [159 SM]; PST 5% [1 ea] | 1,392,490.9 |
| A1490 |  | Epoxy Paint Coating | 156d | 2025-06-26 | 2025-12-24 | A1470 SS+3d | 31d | 1d | Painting with epoxy paint; Each & subsequent coat [1221 SM]; Priming coat [1221 SM]; PST 5% [1 ea] | 1,902,214.15 |
| A1480 |  | Bitumen Coating | 150d | 2025-06-27 | 2025-12-18 | A1470 SS+3d, A1500 SS+5d, A1430 SS-3d | 30d | 0d | bitumen coating 20lb per 100sft [531 SM]; PST 5% [1 ea] | 1,232,461.9 |
| A1510 |  | Reinforcement of Top Slab | 158d | 2025-07-03 | 2026-01-02 | A1470 SS+5d, A1480 SS+5d, A1490 SS+5d | 30d | 0d | steel deformed bars (grade 60) [9.16 tons]; PST 5% [1 ea] | 4,030,911.9 |
| A1520 |  | Concrete Pouring of Top Slab | 155d | 2025-07-09 | 2026-01-05 | A1510 SS+5d | 30d | 0d | RCC for roof slab, beam, column (1:2:4) [57 CM]; PST 5% [1 ea] | 2,879,812.21 |
| A1530 |  | Backfilling & Compaction | 157d | 2025-07-15 | 2026-01-13 | A1520 SS+5d | 30d | 0d | Compaction with power road roller [3800 CM]; Compaction of earthwork (soft, hard, ordinary); Ramming earthwork [8865 CM]; Mixing , moistening earth to OMC [8865 CM]; PST 5% [1 ea] | 2,791,006.9 |
| A1540 |  | Manholes Cover Fixing | 155d | 2025-07-21 | 2026-01-16 | A1530 SS+5d | 30d | 0d | 6' thick RCC manhole cover [214 PS]; PST 5% [1 ea] | 9,659,711.9 |
|  | 3 | **Water Supply & Distribution Network** |  | 2025-07-11 | 2026-01-22 |  |  |  |  |  |
|  | 1 | **Water Supply Trench Works** |  | 2025-07-11 | 2026-01-21 |  |  |  |  |  |
| A1730 |  | Excavation | 103d | 2025-07-11 | 2025-11-07 | A1290 SS+35d | 0d |  | Excavation of trenches for watersupply [3423 CM]; PST 5% [1 ea] | 3,324,661.9 |
| A1740 |  | Rehandling of Earthwork | 105d | 2025-07-15 | 2025-11-13 | A1730 SS+3d | 0d |  | Rehandling of earthwork [2567 CM]; PST 5% [1 ea] | 1,440,737.85 |
| A1750 |  | Sand Bedding | 104d | 2025-07-17 | 2025-11-14 | A1740 SS+2d | 0d |  | Sand under floor [359 CM]; PST 5% [1 ea] | 1,979,261.9 |
| A1760 |  | Compaction of Earthwork | 108d | 2025-07-21 | 2025-11-22 | A1750 SS+3d | 0d |  | Compaction of earthwork; Ramming earthwork [2567 CM]; Mixing , moistening earth to OMC [2567 CM]; PST 5% [1 ea] | 1,523,266.9 |
| A1770 |  | Plain Cement Concrete (P.C.C) | 113d | 2025-07-24 | 2025-12-02 | A1760 SS+3d | 0d |  | PCC; Ratio (1:4:8) [34 CM]; Ratio (1:2:4) [67 CM]; PST 5% [1 ea] | 3,370,211.9 |
| A1800 |  | HDPE Pipe Laying (200mm) | 118d | 2025-08-02 | 2025-12-17 | A1770 SS+8d | 0d |  | 200 mm [4901 P Meter]; PST 5% [1 ea] | 24,418,179.8 |
| A1810 |  | HDPE Pipe Laying (250mm) | 118d | 2025-08-02 | 2025-12-17 | A1770 SS+8d | 0d |  | 250 mm [238 P Meter]; PST 5% [1 ea] | 2,850,344.7 |
| A1790 |  | HDPE Pipe Laying (160mm) | 111d | 2025-08-11 | 2025-12-17 | A1770 SS+15d | 0d |  | 160 mm [772 P Meter]; PST 5% [1 ea] | 3,971,551.9 |
| A1780 |  | HDPE Pipe Laying (32mm) | 106d | 2025-08-16 | 2025-12-17 | A1770 SS+20d | 0d |  | PN-8 SDR-21; 32 mm [591 P Meter]; PST 5% [1 ea] | 1,198,586.2 |
| A1830 |  | Providing and Fixing Air Valves | 95d | 2025-10-03 | 2026-01-21 | A1780 FF+30d, A1790 FF+30d, A1800 FF+30d, A1810 FF+30d | 1d |  | Air valve 2 1/2 dia [2 ea]; PST 5% [1 ea] | 1,128,503.5 |
| A1820 |  | Providing and Fixing Globe Valves | 94d | 2025-10-04 | 2026-01-21 | A1780 FF+30d, A1790 FF+30d, A1800 FF+30d, A1810 FF+30d | 0d |  | Heavy duty Globe valve; Brass threaded valves 2" dia [41 ea]; PST 5% [1 ea] | 1,714,371.6 |

| ID | WBS | Activity | Duration | Start | Finish | Predecessors | Total float | Free float | Resources | Cost |
| --- | --- | --- | --- | --- | --- | --- | --- | --- | --- | --- |
|  | 2 | **Water Supply Chambers** |  | 2025-07-23 | 2026-01-22 |  |  |  |  |  |
| A1840 |  | Steel Reiforcement for Bed | 120d | 2025-07-23 | 2025-12-09 | A1730 SS+10d, A1290 SS | 25d | 0d | Steel deformed bars(grade 60) [1.02 tons]; PST 5% [1 ea] | 1,426,111.9 |
| A1850 |  | Concrete Pouring of Bed | 125d | 2025-07-28 | 2025-12-19 | A1840 SS+4d | 25d | 0d | RCC in foundation [3 CM]; PST 5% [1 ea] | 1,185,211.9 |
| A1860 |  | Steel Reiforcement for Walls | 122d | 2025-08-01 | 2025-12-20 | A1850 SS+4d | 25d | 0d | Steel deformed bars(grade 60) [1.02 tons]; PST 5% [1 ea] | 1,426,111.9 |
| A1870 |  | Concrete Pouring of Walls | 128d | 2025-08-04 | 2025-12-30 | A1860 SS+2d | 25d | 0d | RCC in roof slab , beam ,column [11.5 CM]; PST 5% [1 ea] | 1,427,461.9 |
| A1880 |  | Steel Reiforcement for Top Slab | 126d | 2025-08-09 | 2026-01-02 | A1870 SS+5d | 25d | 0d | Steel deformed bars(grade 60) [1.02 tons]; PST 5% [1 ea] | 1,426,111.9 |
| A1890 |  | Concrete Pouring of Top Slab | 124d | 2025-08-12 | 2026-01-02 | A1880 SS+2d | 25d | 0d | RCC in roof slab , beam ,column [11.5 CM]; PST 5% [1 ea] | 1,427,461.9 |
| A1900 |  | Fixing RCC Manhole Covers | 130d | 2025-08-21 | 2026-01-19 | A1890 SS+8d | 28d | 1d | 6" thick RCC Manhole cover [32 ea]; PST 5% [1 ea] | 2,379,711.9 |
| A1910 |  | Installation & Testing of Fire Hydrants | 131d | 2025-08-23 | 2026-01-22 | A1890 SS+10d | 25d | 0d | Garden / fire hydrant [2 ea]; PST 5% [1 ea] | 1,237,245.1 |
|  | 4 | **Tube Well** |  | 2025-09-26 | 2026-01-31 |  |  |  |  |  |
|  | 1 | **Drilling & Boring** |  | 2025-09-26 | 2025-11-22 |  |  |  |  |  |
| A1920 |  | Excavation for Water Storage Pit | 7d | 2025-09-26 | 2025-10-03 | A1040 SS, A1770 SS+55d | 0d |  | Excavation (35'x40'x5') [198 CM]; PST 5% [1 ea] | 1,228,411.9 |
| A1930 |  | Drilling of Bore | 25d | 2025-10-04 | 2025-11-01 | A1920, A1820 SS, A1830 SS | 0d |  | drilling of bore; Exceeding 250ft depth below GL (15' to18") [96 RM]; Exceeding 250ft depth below GL (20" TO 26') [15 RM]; From ground level to 250ft below GL (20" TO 26") [75 RM]; PST 5% [1 ea] | 1,741,894.3 |
| A1940 |  | Transporation of Earthwork | 27d | 2025-10-06 | 2025-11-05 | A1930 SS+1d, A1920 SS+4d | 0d |  | transportation of earth [100 CM]; PST 5% [1 ea] | 1,125,603.9 |
| A1950 |  | Furnishing Water Sample | 2d | 2025-11-06 | 2025-11-07 | A1930, A1940 SS+27d | 0d |  | Furnishing sample of water from borehole [50 P set 2 bottles]; PST 5% [1 ea] | 1,111,351.9 |
| A1960 |  | Installation of M.S Blind Pipe | 5d | 2025-11-08 | 2025-11-13 | A1930, A1950 | 0d |  | MS blind pipe [83 RM]; PST 5% [1 ea] | 3,310,354.65 |
| A1970 |  | Shrouding with Graded Pea Gravel | 5d | 2025-11-08 | 2025-11-13 | A1960 FS-5d | 0d |  | Shrouding [11 CM]; PST 5% [1 ea] | 1,179,940.95 |
| A1990 |  | Providing FRP Strainer | 5d | 2025-11-08 | 2025-11-13 | A1930, A1950, A1960 SS, A1970 SS, A1980 SF | 0d |  | FRP strainer [61 RM]; PST 5% [1 ea] | 1,629,088.2 |
| A1980 |  | Testing & Developing of Tubewell | 5d | 2025-11-14 | 2025-11-19 | A1960, A1970 | 0d |  | testing & developing of tubewell of 6" dia; above 1.5 cs discharge [45 P hours]; upto 1.5 cs discharge [30 P hours]; PST 5% [1 ea] | 1,326,912.4 |
| A2000 |  | Small Iron Works (M.S Cap, M.S Centralizers e.t.c) | 6d | 2025-11-14 | 2025-11-20 | A1990 | 0d |  | Small iron work, MS Cap, MS bars [350 kg]; PST 5% [1 ea] | 1,327,211.9 |
| A2010 |  | Geo Physical Log Survey | 2d | 2025-11-21 | 2025-11-22 | A2000 | 0d |  | Geo physical log survey [1 Job]; PST 5% [1 ea] | 1,183,794.9 |
|  | 2 | **Supply & Installation of Vertical Turbine Pump 75HP** |  | 2025-11-24 | 2025-12-01 |  |  |  |  |  |
| A2020 |  | Fixing Base Plate | 2d | 2025-11-24 | 2025-11-25 | A2010 | 0d |  | base plate 3'x3'x1.5" [1 ea]; PST 5% [1 ea] | 1,152,598.9 |
| A2030 |  | Installation of Deep Well Turbine Pump | 5d | 2025-11-26 | 2025-12-01 | A2020 | 0d |  | Vertical shaft deep well turbine pump [1 PS]; PST 5% [1 ea] | 14,099,711.9 |

| ID | WBS | Activity | Duration | Start | Finish | Predecessors | Total float | Free float | Resources | Cost |
| --- | --- | --- | --- | --- | --- | --- | --- | --- | --- | --- |
|  | 4 | **Providing & Fixing of C.I Specials** |  | 2025-12-02 | 2025-12-12 |  |  |  |  |  |
| A2110 |  | Fixing of Sluice Valve | 5d | 2025-12-02 | 2025-12-06 | A2030 | 0d |  | Sluice valve of BSS quality 8" i/d [8 ea]; Cast iron special of BSS ( 8 to 12" i/d) [380 kg]; PST 5% [1 ea] | 1,795,754.9 |
| A2120 |  | Providing Concrete Blocks/Brickwork/RCC Support for Delivery Pipe & Bend | 5d | 2025-12-08 | 2025-12-12 | A2110 | 0d |  | cement concrete/ brick blocks [2 CM]; pacca brick work other than building upto 10ft [2 CM]; RCC support wall for tubewell delivery pipe [1 CM]; PST 5% [1 ea] | 1,205,002 |
|  | 5 | **Construction of Tube Well Chamber** |  | 2025-12-13 | 2026-01-26 |  |  |  |  |  |
| A2130 |  | Excavation for Foundation | 2d | 2025-12-13 | 2025-12-15 | A2120 | 0d |  | Excavation in foundation [50 CM]; PST 5% [1 ea] | 1,132,211.9 |
| A2140 |  | Foundation Brickwork | 7d | 2025-12-16 | 2025-12-23 | A2130 | 0d |  | pacca brick work in foundation [33 CM]; PST 5% [1 ea] | 1,592,560.3 |
| A2150 |  | Laying Damp Proof Course | 2d | 2025-12-24 | 2025-12-25 | A2140 | 0d |  | damp proof course [10 SM]; PST 5% [1 ea] | 1,112,616.9 |
| A2160 |  | Walls Brickwork | 7d | 2025-12-26 | 2026-01-02 | A2150 | 0d |  | pacca brickwork in ground floor [33 CM]; PST 5% [1 ea] | 1,603,663.15 |
| A2170 |  | Steel Reinforcement of Roof Slab | 4d | 2026-01-03 | 2026-01-07 | A2160 | 0d |  | Steel deformed bars (grade 60) [1120 kg]; PST 5% [1 ea] | 1,458,111.9 |
| A2180 |  | Concrete Pouring of Roof Slab | 2d | 2026-01-08 | 2026-01-09 | A2170 | 0d |  | RCC in roof slab, beam, column [0.5 CM]; PST 5% [1 ea] | 1,115,326.81 |
| A2190 |  | Cement Plaster | 3d | 2026-01-10 | 2026-01-13 | A2180 SS+2d, A2200 FS-3d, A2600 SS | 0d |  | cement plaster 1:4 upto 20ft [179 SM]; cement pointing [277 SM]; PST 5% [1 ea] | 1,342,217 |
| A2200 |  | Khuras and Parnalas | 2d | 2026-01-10 | 2026-01-12 | A2180 | 1d |  | Khassi parnalas in CS 1:4 [7 P Meter]; khurrass on roof [2 ea]; bottom khurrass of brick masonry [2 ea]; PVC/ uPVC pipeline 3" i/d [24 RM]; PST 5% [1 ea] | 1,139,907.7 |
| A2210 |  | Flooring Concreting & Tiling Works | 5d | 2026-01-14 | 2026-01-19 | A2190 | 0d |  | dry rammed brick [5 CM]; Conglomerate flooring [42 SM]; sand under floor [5 CM]; single layer of tiles 9"x4 1/2"x1 1/2" [43 SM]; dry brick of edge paving [49 SM]; Filling watering & ramming earth under floors [61 CM]; Floor trap of cast iron [2 ea]; PST 5% [1 ea] | 1,348,448.95 |
| A2220 |  | Fixing Door and Windows | 1d | 2026-01-20 | 2026-01-20 | A2210 | 0d |  | steel grated doors [6 SM]; steel windows using MS Sheet [3 SM]; Fabrication of heavy steel work [135 kg]; Erection & fitting in position of iron trusses [135 kg]; Deodar wood shelves [1 SM]; PST 5% [1 ea] | 1,391,988.75 |
| A2230 |  | Paint Application | 4d | 2026-01-21 | 2026-01-24 | A2220 | 0d |  | preparing new surfaces & painting of windows & doors; Each subsequent coat [10 SM]; primer coat [10 SM]; Painting new surface; 2nd & each subsequent coat [34 SM]; Prime coat [34 SM]; Distempering new surfaces 3 coats; three coat [290 SM]; two coat [290 SM]; one coat [290 SM]; PST 5% [1 ea] | 1,228,648.4 |
| A2240 |  | Fixing Wooden Shelves | 1d | 2026-01-26 | 2026-01-26 | A2230 | 0d |  | Box of deodar wood [1 Job]; PST 5% [1 ea] | 1,149,111.6 |
|  | 3 | **Power Wiring & Earthing** |  | 2026-01-06 | 2026-01-15 |  |  |  |  |  |
| A2040 |  | Erection of G.I Flexible Pipe for Wiring | 4d | 2026-01-06 | 2026-01-10 | A2190 SF | 0d |  | G.I flexible pipe [5 P Meter]; PST 5% [1 ea] | 1,110,557.4 |
| A2050 |  | Erection of PVC insulated Copper Wire | 3d | 2026-01-10 | 2026-01-13 | A2040 | 0d |  | single core PVC insulated (95mm) [9 P Meter]; PVC pipe for surface wiring [5 P Meter]; PVC pipe for recessed wiring [5 P Meter]; PST 5% [1 ea] | 1,146,316.55 |
| A2100 |  | Earthing works | 2d | 2026-01-13 | 2026-01-14 | A2060 FS-2d | 0d |  | Rehandling of earth work [8 CM]; Pacca brick work [1 CM]; Steel deformed bars (grade 60) [14 kg]; RCC in roof slab 1:2:4 [1 CM]; PVC Pipe 12mm i/d [6 P Meter]; GI Pipeline in trenches [6 P Meter]; Drilling of bores for tubewells; from ground level to 250ft below GL [12 RM]; PST 5% [1 ea] | 1,199,645.6 |
| A2060 |  | Erection of 3 Pin Switch & Plug | 1d | 2026-01-14 | 2026-01-14 | A2050 | 0d |  | 3 pin switch & plug [2 ea]; PST 5% [1 ea] | 1,100,140.8 |
| A2070 |  | Erection of Lamp Holders | 1d | 2026-01-14 | 2026-01-14 | A2060 FF | 1d | 0d | plain pendent lamp holder [4 ea]; Mercury vapour lamp [8 ea]; PST 5% [1 ea] | 1,134,429.9 |
| A2080 |  | Erection of Tubelight | 1d | 2026-01-14 | 2026-01-14 | A2070 FF | 1d |  | tube light [3 PS]; PST 5% [1 ea] | 1,105,737.4 |
| A2090 |  | Fixing of Bracket & Exhaust Fan | 1d | 2026-01-15 | 2026-01-15 | A2080 FF, A2100 | 0d |  | Pakistan energy label (NEECA) EXAUST FAN [2 ea]; Pakistan energy label (NEECA) WALL BRACKET FAN [1 ea]; PST 5% [1 ea] | 1,123,208.2 |

| ID | WBS | Activity | Duration | Start | Finish | Predecessors | Total float | Free float | Resources | Cost |
| --- | --- | --- | --- | --- | --- | --- | --- | --- | --- | --- |
|  | 6 | **Makng Grid Connection** |  | 2026-01-10 | 2026-01-31 |  |  |  |  |  |
| A2250 |  | Excavtion | 3d | 2026-01-10 | 2026-01-13 | A2040 | 2d | 0d | Excavation of trenches [81 CM]; PST 5% [1 ea] | 1,152,361.9 |
| A2260 |  | Rehandling of Earthwork | 2d | 2026-01-14 | 2026-01-15 | A2250 | 2d |  | rehandling of earthwork [68 CM]; PST 5% [1 ea] | 1,108,745.7 |
| A2270 |  | Connections for New Water Supply Lines | 5d | 2026-01-16 | 2026-01-21 | A2250, A2260 SS, A2090 | 0d |  | connection for watersupply line with the running main( 8" i/d) [4 P Connection]; PST 5% [1 ea] | 1,121,716.3 |
| A2280 |  | Fixing Sluice Valves | 4d | 2026-01-22 | 2026-01-26 | A2270 | 0d |  | sluice valve for cast iron pipeline [2 ea]; cast iron ( bends, tee etc) [300 kg]; PST 5% [1 ea] | 1,368,217.4 |
| A2290 |  | Plain Cement Concrete | 3d | 2026-01-27 | 2026-01-29 | A2280, A2270, A2240 | 0d |  | cement concrete [1 CM]; PST 5% [1 ea] | 1,124,211.9 |
| A2300 |  | Backfilling & Compaction | 2d | 2026-01-30 | 2026-01-31 | A2290 | 0d |  | PST 5% [1 ea] | 1,099,711.9 |
|  | 3 | **Electrical Works** |  | 2025-06-12 | 2026-02-18 |  |  |  |  |  |
|  | 1 | **Conduits/Pipes** |  | 2025-06-12 | 2025-10-06 |  |  |  |  |  |
| A2700 |  | Laying PVC pipe/conduit (100mm) | 100d | 2025-06-12 | 2025-10-06 | A1290 SS+10d | 15d | 0d | PST 5% [1 ea]; PVC pipe class B 100mm in trenches [10250 RM]; PVC pipe class B 100mm [125 RM]; PVC PIPE CLASS D 100mm [2500 RM] | 17,463,466.9 |
|  | 2 | **Road Light Poles** |  | 2025-06-30 | 2025-12-01 |  |  |  |  |  |
| A2650 |  | Road Lighting Pole Foundations | 105d | 2025-06-30 | 2025-10-29 | A1290 SS+25d | 2d | 0d | PST 5% [1 ea]; road lighting pole foundation [211 ea] | 11,069,461.9 |
| A2660 |  | Erection of 10m High Single Arm Poles | 110d | 2025-07-26 | 2025-12-01 | A2650 SS+23d | 2d | 0d | PST 5% [1 ea]; 10 m high single arm octagonal shape electric street light pole [2 ea] | 1,423,711.9 |
| A2670 |  | Erection of 12m High Single Arm Poles | 110d | 2025-07-26 | 2025-12-01 | A2660 FF | 22d | 0d | PST 5% [1 ea]; 12 m high single arm octagonal shape electric street light pole [86 ea] | 16,773,211.9 |
| A2680 |  | Erection of 12m High Double Arm Poles | 110d | 2025-07-26 | 2025-12-01 | A2670 FF | 22d | 0d | PST 5% [1 ea]; 12 m high double arm octagonal shape electric street light pole [121 ea] | 24,295,411.9 |
| A2690 |  | Erection of 15m High Poles (Circular Angular Top) | 110d | 2025-07-26 | 2025-12-01 | A2680 FF | 22d | 20d | PST 5% [1 ea]; 15 m conical OCTAGONAL galvanized steel pole [2 ea] | 1,545,211.9 |
|  | 3 | **Road Lights & Flood Lights** |  | 2025-11-05 | 2025-12-09 |  |  |  |  |  |
| A2720 |  | LED Cobra-head Luminaries 120W | 30d | 2025-11-05 | 2025-12-09 | A2710 FF | 15d | 0d | PST 5% [1 ea]; Road lighting LED cobra head lumInaries of 120W [226 Nos] | 17,510,927.9 |
| A2730 |  | LED Cobra-head Luminaries 150W | 30d | 2025-11-05 | 2025-12-09 | A2720 FF | 15d | 0d | PST 5% [1 ea]; Road lighting LED cobra head lumInaries of 150W [102 Nos] | 10,828,471.9 |
| A2740 |  | LED Cobra-head Luminaries 180W | 25d | 2025-11-11 | 2025-12-09 | A2730 FF | 15d | 0d | PST 5% [1 ea]; Road lighting LED cobra head lumInaries of 180W [2 Nos] | 1,295,711.9 |
| A2750 |  | Flood Lighting LED Luminaries 120W | 25d | 2025-11-11 | 2025-12-09 | A2740 FF | 15d | 13d | PST 5% [1 ea]; Flood lighting LED luminaries 120W [2 Nos] | 1,241,217.9 |
| A2710 |  | LED Cobra-head Luminaries 90W | 20d | 2025-11-17 | 2025-12-09 | A2700 FS+35d | 15d | 0d | PST 5% [1 ea]; Road lighting LED cobra head lumInaries of 90W [2 Nos] | 1,234,711.9 |
|  | 4 | **LV Cable Works** |  | 2025-06-12 | 2025-12-18 |  |  |  |  |  |
|  | 1 | **Civil Works** |  | 2025-06-12 | 2025-10-18 |  |  |  |  |  |
| A2760 |  | Excavation | 65d | 2025-06-12 | 2025-08-26 | A1290 SS+10d | 24d | 0d | PST 5% [1 ea]; Excavation of trenches [22434 CM] | 15,681,811.9 |
| A2770 |  | Rehandling of Earthwork | 64d | 2025-06-14 | 2025-08-27 | A2760 SS+2d | 24d | 0d | PST 5% [1 ea]; Rehandling of earthwork [12193 CM] | 2,719,551.95 |
| A2780 |  | Sand Bedding | 64.62d | 2025-06-14 | 2025-08-28 | A2760 SS+2d, A2770 SS | 24d | 0d | PST 5% [1 ea]; Sand under floor [5225.4 CM] | 13,901,941.9 |
| A2790 |  | Compaction of Earthwork | 71d | 2025-06-16 | 2025-09-05 | A2780 SS+1d | 24d | 0d | PST 5% [1 ea]; Compaction of earth work; ramming earthwork [24386 CM]; mixing, moistening earth to OMC [12193 CM] | 4,064,439.85 |
| A2800 |  | Plain Cement Concrete | 66.75d | 2025-06-21 | 2025-09-06 | A2790 SS+5d | 24d | 0d | PST 5% [1 ea]; plain cement concrete (1:2:4) [2025 CM] | 50,712,211.9 |

| ID | WBS | Activity | Duration | Start | Finish | Predecessors | Total float | Free float | Resources | Cost |
| --- | --- | --- | --- | --- | --- | --- | --- | --- | --- | --- |
|  | 1 | **LV Chambers** |  | 2025-06-25 | 2025-10-18 |  |  |  |  |  |
| A2810 |  | Steel Reinforcement of Bed | 70d | 2025-06-25 | 2025-09-13 | A2760 SS+10d, A2800 SS+3d | 24d | 0d | PST 5% [1 ea]; Fabrication of steel(deformed bars) [0.55 Ton] | 1,275,711.9 |
| A2820 |  | Concrete Pouring of Bed | 68d | 2025-06-30 | 2025-09-16 | A2810 SS+4d | 24d | 0d | PST 5% [1 ea]; substructure(foundation) [9 CM] | 1,356,211.9 |
| A2830 |  | Steel Reinforcement of Walls | 68d | 2025-07-02 | 2025-09-18 | A2820 SS+2d | 24d | 0d | PST 5% [1 ea]; Fabrication of steel(deformed bars) [0.55 Ton] | 1,275,711.9 |
| A2840 |  | Concrete Pouring of Walls | 80d | 2025-07-07 | 2025-10-07 | A2830 SS+4d | 24d | 0d | PST 5% [1 ea]; retaining/shear wall [3 CM] | 1,185,211.9 |
| A3330 |  | Bitumen coating | 85d | 2025-07-07 | 2025-10-13 | A2840 SS | 44d | 9.25d | PST 5% [1 ea]; Bitumen coating [20700 SM] | 7,059,241.9 |
| A2850 |  | Erecting & Fixing Precast Concrete Slab | 85d | 2025-07-12 | 2025-10-18 | A2840 SS+5d | 24d | 0d | PST 5% [1 ea]; erecting, fixing precast cement concrete [3 CM] | 1,114,715.8 |
|  | 2 | **LV Cable Laying** |  | 2025-07-12 | 2025-12-18 |  |  |  |  |  |
| A2860 |  | Providing & Laying Pipe Line in Trenches | 89.25d | 2025-07-12 | 2025-10-24 | A2840 SS+5d, A3330 FF | 34.75d | 0d | PST 5% [1 ea]; Pipeline in trenches with PVC/uPVC [11625 M]; 10ft 5/8" dia copper coated MS rods [6 ea] | 26,708,461.9 |
| A2870 |  | 1/C 70mm2 PVC insulated | 55d | 2025-09-13 | 2025-11-17 | A2860 FS-35d | 34.75d | 0d | PST 5% [1 ea]; Single core 70mm2 PVC insulated copper conductor cable [50 RM] | 1,283,815.4 |
| A2910 |  | 1/C 16mm2 PVC insulated | 55d | 2025-09-26 | 2025-11-28 | A2900 FF | 24d | 0d | PST 5% [1 ea]; Single core 16mm2 PVC insulated copper conductor cable [11625 RM] | 11,124,414.4 |
| A2900 |  | 4/C 16mm2 PVC insulated | 50d | 2025-10-02 | 2025-11-28 | A2890 FF | 24d | 0d | PST 5% [1 ea]; PVC insulated, PVC sheathed 4 core 16mm2 cable [11625 RM] | 38,299,711.9 |
| A2890 |  | 1/C 35mm2 PVC insulated | 35d | 2025-10-20 | 2025-11-28 | A2880 FF, A2850 | 24d | 0d | PST 5% [1 ea]; Single core 35mm2 PVC insulated copper conductor cable [1825 RM] | 4,531,423.65 |
| A2880 |  | 4/C 70mm2 PVC insulated | 15d | 2025-10-30 | 2025-11-17 | A2870 FF | 34.75d | 10.75d | PST 5% [1 ea]; PVC insulated, PVC sheathed 4 core 70mm2 cable [1750 RM] | 24,724,711.9 |
| A2920 |  | 1/C 2.5mm2 PVC insulated for 12m & 15m Poles | 20d | 2025-11-06 | 2025-11-28 | A2910 FF | 24d | 0d | PST 5% [1 ea]; 3 Nos 1 core 2.5mm2 PVC grade cable; For 15m pole [2 Nos]; For 12m pole [207 Nos] | 2,878,211.9 |
| A2930 |  | Road Lighting Control Panel | 16.75d | 2025-11-29 | 2025-12-18 | A2870, A2880, A2890, A2900, A2910, A2920 | 55.25d | 0d | PST 5% [1 ea]; Road lighting control panel (LCP completion) [3 Job] | 3,049,711.9 |
|  | 7 | **Civil Work of IT System** |  | 2025-07-23 | 2026-01-02 |  |  |  |  |  |
|  | 1 | **Civil Works** |  | 2025-07-23 | 2026-01-02 |  |  |  |  |  |
| A3080 |  | Excavation | 80d | 2025-07-23 | 2025-10-23 | A1290 SS+45d | 42d | 0d | PST 5% [1 ea]; Excavation in open cutting for sewers [135 CM]; Excavation of trenches except rock cutting [12196 CM] | 9,114,861.9 |
| A3090 |  | Rehandling of Earthwork | 85d | 2025-08-04 | 2025-11-10 | A3080 SS+10d | 42d | 0d | PST 5% [12 ea]; Rehandling of earthwork [7399 CM] | 14,179,499.95 |
| A3100 |  | Sand Bedding | 88d | 2025-08-09 | 2025-11-19 | A3090 SS+5d | 42d | 0d | PST 5% [1 ea]; Sand under floor [4932 CM] | 13,183,111.9 |
| A3110 |  | Compaction of Earthwork | 96d | 2025-08-16 | 2025-12-05 | A3100 SS+6d | 42d | 0d | PST 5% [1 ea]; Compaction of earth work; ramming earthwork [8412 CM]; mixing, moistening earth to OMC [7399 CM] | 2,324,038.75 |
| A3120 |  | Plain Cement Concrete | 98d | 2025-08-19 | 2025-12-10 | A3110 SS+2d | 42d | 0d | PST 5% [1 ea]; plain cement concrete (1:2:4) [3 CM] | 1,155,211.9 |
|  | 1 | **IT Chambers/Handholes** |  | 2025-08-21 | 2026-01-02 |  |  |  |  |  |
| A3130 |  | Steel Reinforcement of Bed | 57d | 2025-08-21 | 2025-10-25 | A3080 SS+20d, A3120 SS+2d, A1900 SS-1d | 42d | 0d | PST 5% [1 ea]; Fabrication of steel(deformed bars) [0.85 Ton] | 1,371,711.9 |
| A3140 |  | Concrete Pouring of Bed | 62d | 2025-08-23 | 2025-11-03 | A3130 SS+2d | 42d | 0d | PST 5% [1 ea]; substructure(foundation) [10 CM] | 1,384,711.9 |
| A3150 |  | Steel Reinforcement of Walls | 65d | 2025-08-26 | 2025-11-08 | A3140 SS+2d | 42d | 0d | PST 5% [1 ea]; Fabrication of steel(deformed bars) [0.85 Ton] | 1,371,711.9 |
| A3160 |  | Concrete Pouring of Walls | 66d | 2025-08-28 | 2025-11-12 | A3150 SS+2d | 42d | 0d | PST 5% [1 ea]; retaining/shear wall [8 CM] | 1,327,711.9 |
| A3200 |  | Providing & Laying Pipeline in Trench | 75d | 2025-09-06 | 2025-12-02 | A3160 SS+8d | 42d | 0d | PST 5% [1 ea]; Pipeline in trenches with PVC/uPVC [19 M]; Small iron work(gusset plate etc) [900 kg]; HDPE working pressure pipe [25008 RM] | 9,773,050.49 |
| A3170 |  | Erecting & Fixing Precast Concrete Slab | 75d | 2025-09-18 | 2025-12-13 | A3160 SS, A3200 SS+10d | 42d | 0d | PST 5% [1 ea]; erecting, fixing precast cement concrete [4 CM] | 1,119,717.1 |
| A3180 |  | Bitumen Coating of IT Chambers | 70d | 2025-09-24 | 2025-12-13 | A3170 SS+5d | 42d | 0d | PST 5% [1 ea]; Bitumen coating [107 SM] | 1,130,517.2 |
| A3210 |  | Backfilling & Compaction | 85d | 2025-09-26 | 2026-01-02 | A3170 SS+7d, A3180 SS+2d | 42d | 0d | PST 5% [1 ea] | 1,099,711.9 |

| ID | WBS | Activity | Duration | Start | Finish | Predecessors | Total float | Free float | Resources | Cost |
| --- | --- | --- | --- | --- | --- | --- | --- | --- | --- | --- |
|  | 5 | **MV Cable Works** |  | 2025-06-30 | 2026-01-19 |  |  |  |  |  |
|  | 1 | **Civil Works** |  | 2025-06-30 | 2026-01-19 |  |  |  |  |  |
| A2940 |  | Excavation | 125d | 2025-06-30 | 2025-11-21 | A1290 SS+25d | 6d | 0d | PST 5% [1 ea]; Excavation of trenches [80688 CM] | 53,546,911.9 |
| A2950 |  | Rehandling of Earthwork | 135d | 2025-07-01 | 2025-12-04 | A2940 SS+1d | 12d | 2d | PST 5% [1 ea]; Rehandling of earthwork [24207 CM] | 4,315,611.85 |
| A2960 |  | Sand Bedding | 140d | 2025-07-03 | 2025-12-12 | A2940 SS+3d, A2950 SS | 10d | 0d | PST 5% [1 ea]; Sand under floor [26301 CM] | 65,537,161.9 |
| A2970 |  | Compaction of Earthwork | 147d | 2025-07-04 | 2025-12-22 | A2960 SS+1d | 10d | 0d | PST 5% [1 ea]; Compaction of earth work; ramming earthwork [24207 CM]; mixing, moistening earth to OMC [24207 CM] | 4,807,013.95 |
| A2980 |  | Plain Cement Concrete | 150d | 2025-07-09 | 2025-12-30 | A2970 SS+4d | 10d | 0d | PST 5% [1 ea]; plain cement concrete (1:2:4) [7290 CM] | 179,704,711.9 |
|  | 1 | **MV Chambers** |  | 2025-07-15 | 2026-01-19 |  |  |  |  |  |
| A3050 |  | Providing & Laying MV Pipe line | 152d | 2025-07-15 | 2026-01-07 | A2980 SS+5d | 10d | 0d | PST 5% [1 ea]; Pipeline in trenches with PVC/uPVC [195978 M] | 430,291,531.9 |
| A2990 |  | Steel Reinforcement of Bed | 101d | 2025-07-17 | 2025-11-11 | A2940 SS+15d | 6d | 0d | PST 5% [1 ea]; Fabrication of steel(deformed bars) [4.17 Ton] | 2,434,111.9 |
| A3000 |  | Concrete Pouring of Bed | 100d | 2025-07-22 | 2025-11-14 | A2990 SS+4d | 6d | 0d | PST 5% [1 ea]; substructure(foundation) [48 CM] | 2,467,711.9 |
| A3010 |  | Steel Reinforcement of Walls | 102d | 2025-07-26 | 2025-11-21 | A3000 SS+4d | 6d | 0d | PST 5% [1 ea]; Fabrication of steel(deformed bars) [4.17 Ton] | 2,434,111.9 |
| A3020 |  | Concrete Pouring of Walls | 105d | 2025-07-31 | 2025-11-29 | A3010 SS+4d | 6d | 0d | PST 5% [1 ea]; retaining/shear wall [39 CM] | 2,211,211.9 |
| A3030 |  | Erecting & Fixing Precast Concrete Slab | 107d | 2025-07-31 | 2025-12-02 | A3020 SS, A3050 SS+10d | 6d | 0d | PST 5% [1 ea]; erecting, fixing precast cement concrete [24 CM] | 1,219,743.1 |
| A3190 |  | Backfilling & Compaction | 130d | 2025-08-21 | 2026-01-19 | A3030 FF+15d, A3050 FF+10d | 28d | 0d | PST 5% [1 ea] | 1,099,711.9 |
| A3040 |  | Bitumen Coating of MV Chambers | 50d | 2025-10-23 | 2025-12-19 | A3030 FF+15d | 6d | 4d | PST 5% [1 ea]; Bitumen coating [100095 SM] | 29,917,062.4 |
|  | 6 | **Transformer** |  | 2025-12-25 | 2026-02-18 |  |  |  |  |  |
| A3060 |  | Installation of 100kVA Transformer with Foundation | 22d | 2025-12-25 | 2026-01-19 | A2750, A2690, A2660 FS+20d, A2670, A2680, A2870, A2880, A2890, A2900, A2910, A2920, A3040 | 2d |  | PST 5% [1 ea]; Transformer; Supply of 100kVA pad mounted transformer [2 Job]; MV cable 3 core [200 RM]; Indoor heat shrink termination kit [1 Job]; outdoor heat shrink termination kit [1 Job] | 9,969,711.9 |
| A3070 |  | Bore Type Earthing for Pad Mountedd Transformer | 24d | 2026-01-22 | 2026-02-18 | A3060, A2300 FS-9d | 0d |  | PST 5% [1 ea]; Bore type earthing upto permenant water level [2 Job] | 1,599,711.9 |
|  | 5 | **Finalization of Project** |  | 2026-02-19 | 2026-02-20 |  |  |  |  |  |
| A1270 |  | Final Documentation | 1d | 2026-02-19 | 2026-02-19 | A3070 | 0d |  |  |  |
| A1280 |  | Project Handing Over | 1d | 2026-02-20 | 2026-02-20 | A1270 | 0d |  |  |  |
