# Smart Safe Cities - CM Tehsils Project (Bahawalpur Division)

Schedule from Primavera P6, 2026-01-19 to 2026-06-03, data date 2026-01-19.

## Calendars

- 7x10: Mon-Sun 07:00-13:00, 14:00-18:00. Exceptions (off unless hours are given): 2026-05-14 07:00-13:00, 14:00-18:00.

## Schedule

| ID | WBS | Activity | Type | Duration | Start | Finish | Predecessors | Total float | Free float |
| --- | --- | --- | --- | --- | --- | --- | --- | --- | --- |
|  | 1 | **Project Milestone** |  |  | 2026-01-19 | 2026-06-03 |  |  |  |
| A1000 |  | Start Date | milestone | 0d | 2026-01-19 | 2026-01-19 |  | 0d |  |
| A1010 |  | Compeletion Date | milestone | 0d | 2026-06-03 | 2026-06-03 | A8280 FF | 0d |  |
|  | 2 | **Bahawalpur Division** |  |  | 2026-01-19 | 2026-05-18 |  |  |  |
|  | 1 | **Bahawalnagar** |  |  | 2026-01-19 | 2026-05-18 |  |  |  |
|  | 1 | **Chishtian** |  |  | 2026-01-19 | 2026-04-15 |  |  |  |
|  | 1 | **Camera & Field Surveillance System** |  |  | 2026-01-19 | 2026-03-03 |  |  |  |
|  | 1 | **Camera Poles & Foundations** |  |  | 2026-01-19 | 2026-02-16 |  |  |  |
| A1020 |  | Survey & Marking |  | 4d | 2026-01-19 | 2026-01-22 | A1000 SS | 40d | 0d |
| A1030 |  | Excavation |  | 6d | 2026-01-23 | 2026-01-28 | A1020 | 40d | 0d |
| A1040 |  | PCC |  | 3d | 2026-01-29 | 2026-01-31 | A1030 | 40d | 0d |
| A1050 |  | Foundation Concrete |  | 4d | 2026-02-01 | 2026-02-04 | A1040 | 40d | 0d |
| A1060 |  | Curing & Backfilling |  | 7d | 2026-02-05 | 2026-02-11 | A1050 | 40d | 0d |
| A1070 |  | Pole Erection |  | 5d | 2026-02-12 | 2026-02-16 | A1060 | 40d | 0d |
|  | 2 | **ANPR Poles & Foundations** |  |  | 2026-01-23 | 2026-01-31 |  |  |  |
| A1080 |  | Excavation & Foundation |  | 5d | 2026-01-23 | 2026-01-27 | A1020 | 58d | 0d |
| A1090 |  | Pole Installation |  | 4d | 2026-01-28 | 2026-01-31 | A1080 | 58d | 0d |
|  | 3 | **Power Cabinets for Camera & ANPR** |  |  | 2026-01-29 | 2026-02-09 |  |  |  |
| A1100 |  | Cabinet Foundation |  | 3d | 2026-01-29 | 2026-01-31 | A1030 | 58d | 0d |
| A1110 |  | Cabinet Installation |  | 4d | 2026-02-01 | 2026-02-04 | A1100 | 58d | 0d |
| A1120 |  | Internal Wiring |  | 5d | 2026-02-05 | 2026-02-09 | A1110 | 58d | 0d |
|  | 4 | **Camera Installation** |  |  | 2026-02-01 | 2026-02-22 |  |  |  |
| A1150 |  | ANPR Camera Installation |  | 4d | 2026-02-01 | 2026-02-04 | A1090 | 58d | 18d |
| A1130 |  | Fixed Camera Installation |  | 6d | 2026-02-17 | 2026-02-22 | A1070 | 40d | 0d |
| A1140 |  | PTZ Camera Installation |  | 5d | 2026-02-17 | 2026-02-21 | A1070 | 41d | 1d |
| A1160 |  | Strobe Light Installation |  | 3d | 2026-02-17 | 2026-02-19 | A1070 | 43d | 0d |

| ID | WBS | Activity | Duration | Start | Finish | Predecessors | Total float | Free float |
| --- | --- | --- | --- | --- | --- | --- | --- | --- |
|  | 5 | **Body Worn Camera System** |  | 2026-02-20 | 2026-02-25 |  |  |  |
| A1170 |  | Body Cameras Deployment | 3d | 2026-02-20 | 2026-02-22 | A1160 | 47d | 0d |
| A1180 |  | Dock & Storage Setup | 3d | 2026-02-23 | 2026-02-25 | A1170 | 47d | 1d |
|  | 6 | **Field Devices** |  | 2026-02-10 | 2026-02-12 |  |  |  |
| A1240 |  | Panic Button Installation | 3d | 2026-02-10 | 2026-02-12 | A1120 | 64d | 31d |
| A1250 |  | Attendance Device Installation | 3d | 2026-02-10 | 2026-02-12 | A1120 | 64d | 31d |
|  | 7 | **Field Equipment Configuration** |  | 2026-02-23 | 2026-03-03 |  |  |  |
| A1190 |  | Camera Addressing & Labeling | 5d | 2026-02-23 | 2026-02-27 | A1130, A1140, A1150, A1160 | 40d | 0d |
| A1200 |  | Initial Camera Testing | 4d | 2026-02-28 | 2026-03-03 | A1120, A1190 | 40d | 7d |
|  | 2 | **Power & Electrical Infrastructure** |  | 2026-02-05 | 2026-03-09 |  |  |  |
|  | 1 | **Power Supply Works** |  | 2026-02-05 | 2026-02-18 |  |  |  |
| A1260 |  | Power Cable Laying | 7d | 2026-02-05 | 2026-02-11 | A1110 | 70d | 0d |
| A1270 |  | Panel Installation | 4d | 2026-02-12 | 2026-02-15 | A1260 | 70d | 0d |
| A1280 |  | Earthing & Grounding | 3d | 2026-02-16 | 2026-02-18 | A1270 | 70d | 0d |
|  | 2 | **Backup Power Systems** |  | 2026-02-19 | 2026-03-01 |  |  |  |
| A1290 |  | UPS Installation | 3d | 2026-02-19 | 2026-02-21 | A1280 | 70d | 0d |
| A1300 |  | Battery Installation | 2d | 2026-02-22 | 2026-02-23 | A1290 | 70d | 0d |
| A1310 |  | Generator Installation | 4d | 2026-02-24 | 2026-02-27 | A1300 | 70d | 0d |
| A1320 |  | Generator Testing & Commissioning | 2d | 2026-02-28 | 2026-03-01 | A1310 | 70d | 0d |
|  | 3 | **Split AC Installation** |  | 2026-03-02 | 2026-03-09 |  |  |  |
| A1330 |  | AC Mounting | 3d | 2026-03-02 | 2026-03-04 | A1320 | 70d | 0d |
| A1340 |  | Electrical Connections | 3d | 2026-03-05 | 2026-03-07 | A1330 | 70d | 0d |
| A1350 |  | Testing | 2d | 2026-03-08 | 2026-03-09 | A1340 | 70d | 40d |
|  | 3 | **OFC, Network & Connectivity** |  | 2026-01-19 | 2026-03-22 |  |  |  |
|  | 1 | **OFC Route Survey & Design** |  | 2026-01-19 | 2026-01-27 |  |  |  |
| A1360 |  | Route Survey | 4d | 2026-01-19 | 2026-01-22 | A1000 SS | 33d | 0d |
| A1370 |  | Design Approval | 5d | 2026-01-23 | 2026-01-27 | A1360 | 33d | 0d |

| ID | WBS | Activity | Duration | Start | Finish | Predecessors | Total float | Free float |
| --- | --- | --- | --- | --- | --- | --- | --- | --- |
|  | 2 | **OFC Civil Works** |  | 2026-01-28 | 2026-02-25 |  |  |  |
| A1380 |  | Trenching | 10d | 2026-01-28 | 2026-02-06 | A1370 | 33d | 0d |
| A1390 |  | Duct / Pipe Laying | 8d | 2026-02-07 | 2026-02-14 | A1380 | 33d | 0d |
| A1400 |  | Manhole Construction | 6d | 2026-02-15 | 2026-02-20 | A1390 | 33d | 0d |
| A1410 |  | Backfilling & Restoration | 5d | 2026-02-21 | 2026-02-25 | A1400 | 33d | 0d |
|  | 3 | **OFC Installation** |  | 2026-02-26 | 2026-03-10 |  |  |  |
| A1420 |  | OFC Cable Pulling | 6d | 2026-02-26 | 2026-03-03 | A1410 | 33d | 0d |
| A1430 |  | Splicing | 4d | 2026-03-04 | 2026-03-07 | A1420 | 33d | 0d |
| A1440 |  | OFC Testing | 3d | 2026-03-08 | 2026-03-10 | A1430 | 33d | 0d |
|  | 4 | **Aerial GPON OFC** |  | 2026-02-17 | 2026-02-25 |  |  |  |
| A1450 |  | Pole Installation | 4d | 2026-02-17 | 2026-02-20 | A1070 | 46d | 0d |
| A1460 |  | Aerial OFC Laying | 3d | 2026-02-21 | 2026-02-23 | A1450 | 46d | 0d |
| A1470 |  | Termination & Testing | 2d | 2026-02-24 | 2026-02-25 | A1460 | 46d | 13d |
|  | 5 | **Network Connectivity** |  | 2026-03-11 | 2026-03-22 |  |  |  |
| A1480 |  | ISP Coordination | 5d | 2026-03-11 | 2026-03-15 | A1200, A1440, A1470 | 33d | 0d |
| A1490 |  | Site Connectivity Setup | 4d | 2026-03-16 | 2026-03-19 | A1240, A1250, A1480 | 33d | 0d |
| A1500 |  | Bandwidth Testing | 3d | 2026-03-20 | 2026-03-22 | A1490 | 33d | 0d |
|  | 4 | **Control Room Development** |  | 2026-01-19 | 2026-02-26 |  |  |  |
|  | 1 | **Control Room Civil Works** |  | 2026-01-19 | 2026-02-06 |  |  |  |
| A1510 |  | Renovation Works | 8d | 2026-01-19 | 2026-01-26 | A1000 SS | 46d | 0d |
| A1520 |  | Flooring & Ceiling | 6d | 2026-01-27 | 2026-02-01 | A1510 | 46d | 0d |
| A1530 |  | Painting & Finishing | 5d | 2026-02-02 | 2026-02-06 | A1520 | 46d | 0d |
|  | 2 | **Furniture & Fixtures** |  | 2026-02-07 | 2026-02-12 |  |  |  |
| A1540 |  | Workstations Installation | 4d | 2026-02-07 | 2026-02-10 | A1530 | 46d | 0d |
| A1550 |  | Chairs Installation | 2d | 2026-02-11 | 2026-02-12 | A1540 | 111d |  |

| ID | WBS | Activity | Duration | Start | Finish | Predecessors | Total float | Free float |
| --- | --- | --- | --- | --- | --- | --- | --- | --- |
|  | 3 | **Network Equipment** |  | 2026-02-11 | 2026-02-19 |  |  |  |
| A1560 |  | Core Switch Installation | 3d | 2026-02-11 | 2026-02-13 | A1540 | 46d | 0d |
| A1570 |  | Network Switch Installation | 3d | 2026-02-14 | 2026-02-16 | A1560 | 46d | 0d |
| A1580 |  | Firewall Installation | 3d | 2026-02-17 | 2026-02-19 | A1570 | 46d | 0d |
|  | 4 | **Display Systems** |  | 2026-02-20 | 2026-02-26 |  |  |  |
| A1590 |  | Video Wall Installation | 4d | 2026-02-20 | 2026-02-23 | A1580 | 46d | 0d |
| A1600 |  | Monitoring Screen Installation | 3d | 2026-02-24 | 2026-02-26 | A1590 | 46d | 0d |
|  | 5 | **IT Systems, Servers & Software** |  | 2026-02-27 | 2026-04-15 |  |  |  |
|  | 1 | **Server & Storage Systems** |  | 2026-02-27 | 2026-03-09 |  |  |  |
| A1610 |  | SAN Storage Installation | 4d | 2026-02-27 | 2026-03-02 | A1180, A1600 | 46d | 0d |
| A1620 |  | HDD Installation | 3d | 2026-03-03 | 2026-03-05 | A1610 | 46d | 0d |
| A1630 |  | GPU Server Installation | 4d | 2026-03-06 | 2026-03-09 | A1620 | 46d | 13d |
|  | 2 | **VMS & AI Systems** |  | 2026-03-23 | 2026-04-04 |  |  |  |
| A1640 |  | VMS Installation | 5d | 2026-03-23 | 2026-03-27 | A1500, A1630 | 33d | 0d |
| A1650 |  | AI NVR Configuration | 4d | 2026-03-28 | 2026-03-31 | A1640 | 33d | 0d |
| A1660 |  | Analytics Configuration | 4d | 2026-04-01 | 2026-04-04 | A1650 | 33d | 0d |
|  | 3 | **Software & Applications** |  | 2026-04-05 | 2026-04-09 |  |  |  |
| A1670 |  | PSCA HQ Integration | 5d | 2026-04-05 | 2026-04-09 | A1660 | 33d | 0d |
|  | 4 | **System Licensing** |  | 2026-04-10 | 2026-04-15 |  |  |  |
| A1700 |  | Camera Licenses | 3d | 2026-04-10 | 2026-04-12 | A1670 | 33d | 0d |
| A1710 |  | System Licenses | 3d | 2026-04-13 | 2026-04-15 | A1700 | 33d |  |
|  | 4 | **Fort Abbas** |  | 2026-01-19 | 2026-04-28 |  |  |  |
|  | 1 | **Camera & Field Surveillance System** |  | 2026-02-08 | 2026-03-23 |  |  |  |
|  | 1 | **Camera Poles & Foundations** |  | 2026-02-08 | 2026-03-08 |  |  |  |
| A1720 |  | Survey & Marking | 4d | 2026-02-08 | 2026-02-11 | A1000 SS+20d | 20d | 0d |
| A1730 |  | Excavation | 6d | 2026-02-12 | 2026-02-17 | A1720 | 20d | 0d |
| A1740 |  | PCC | 3d | 2026-02-18 | 2026-02-20 | A1730 | 20d | 0d |
| A1750 |  | Foundation Concrete | 4d | 2026-02-21 | 2026-02-24 | A1740 | 20d | 0d |
| A1760 |  | Curing & Backfilling | 7d | 2026-02-25 | 2026-03-03 | A1750 | 20d | 0d |
| A1770 |  | Pole Erection | 5d | 2026-03-04 | 2026-03-08 | A1760 | 20d | 0d |

| ID | WBS | Activity | Duration | Start | Finish | Predecessors | Total float | Free float |
| --- | --- | --- | --- | --- | --- | --- | --- | --- |
|  | 2 | **ANPR Poles & Foundations** |  | 2026-02-12 | 2026-02-20 |  |  |  |
| A1780 |  | Excavation & Foundation | 5d | 2026-02-12 | 2026-02-16 | A1720 | 38d | 0d |
| A1790 |  | Pole Installation | 4d | 2026-02-17 | 2026-02-20 | A1780 | 38d | 0d |
|  | 3 | **Power Cabinets for Camera & ANPR** |  | 2026-02-18 | 2026-03-01 |  |  |  |
| A1800 |  | Cabinet Foundation | 3d | 2026-02-18 | 2026-02-20 | A1730 | 38d | 0d |
| A1810 |  | Cabinet Installation | 4d | 2026-02-21 | 2026-02-24 | A1800 | 38d | 0d |
| A1820 |  | Internal Wiring | 5d | 2026-02-25 | 2026-03-01 | A1810 | 38d | 0d |
|  | 4 | **Camera Installation** |  | 2026-02-21 | 2026-03-14 |  |  |  |
| A1850 |  | ANPR Camera Installation | 4d | 2026-02-21 | 2026-02-24 | A1790 | 38d | 18d |
| A1830 |  | Fixed Camera Installation | 6d | 2026-03-09 | 2026-03-14 | A1770 | 20d | 0d |
| A1840 |  | PTZ Camera Installation | 5d | 2026-03-09 | 2026-03-13 | A1770 | 21d | 1d |
| A1860 |  | Strobe Light Installation | 3d | 2026-03-09 | 2026-03-11 | A1770 | 23d | 0d |
|  | 5 | **Body Worn Camera System** |  | 2026-03-12 | 2026-03-17 |  |  |  |
| A1870 |  | Body Cameras Deployment | 3d | 2026-03-12 | 2026-03-14 | A1860 | 27d | 0d |
| A1880 |  | Dock & Storage Setup | 3d | 2026-03-15 | 2026-03-17 | A1870 | 27d | 0d |
|  | 6 | **Field Devices** |  | 2026-03-02 | 2026-03-04 |  |  |  |
| A1910 |  | Panic Button Installation | 3d | 2026-03-02 | 2026-03-04 | A1820 | 44d | 24d |
| A1920 |  | Attendance Device Installation | 3d | 2026-03-02 | 2026-03-04 | A1820 | 44d | 24d |
|  | 7 | **Field Equipment Configuration** |  | 2026-03-15 | 2026-03-23 |  |  |  |
| A1890 |  | Camera Addressing & Labeling | 5d | 2026-03-15 | 2026-03-19 | A1830, A1840, A1850, A1860 | 20d | 0d |
| A1900 |  | Initial Camera Testing | 4d | 2026-03-20 | 2026-03-23 | A1820, A1890 | 20d | 0d |
|  | 2 | **Power & Electrical Infrastructure** |  | 2026-02-25 | 2026-03-29 |  |  |  |
|  | 1 | **Power Supply Works** |  | 2026-02-25 | 2026-03-10 |  |  |  |
| A1930 |  | Power Cable Laying | 7d | 2026-02-25 | 2026-03-03 | A1810 | 50d | 0d |
| A1940 |  | Panel Installation | 4d | 2026-03-04 | 2026-03-07 | A1930 | 50d | 0d |
| A1950 |  | Earthing & Grounding | 3d | 2026-03-08 | 2026-03-10 | A1940 | 50d | 0d |

| ID | WBS | Activity | Duration | Start | Finish | Predecessors | Total float | Free float |
| --- | --- | --- | --- | --- | --- | --- | --- | --- |
|  | 2 | **Backup Power Systems** |  | 2026-03-11 | 2026-03-21 |  |  |  |
| A1960 |  | UPS Installation | 3d | 2026-03-11 | 2026-03-13 | A1950 | 50d | 0d |
| A1970 |  | Battery Installation | 2d | 2026-03-14 | 2026-03-15 | A1960 | 50d | 0d |
| A1980 |  | Generator Installation | 4d | 2026-03-16 | 2026-03-19 | A1970 | 50d | 0d |
| A1990 |  | Generator Testing & Commissioning | 2d | 2026-03-20 | 2026-03-21 | A1980 | 50d | 0d |
|  | 3 | **Split AC Installation** |  | 2026-03-22 | 2026-03-29 |  |  |  |
| A2000 |  | AC Mounting | 3d | 2026-03-22 | 2026-03-24 | A1990 | 50d | 0d |
| A2010 |  | Electrical Connections | 3d | 2026-03-25 | 2026-03-27 | A2000 | 50d | 0d |
| A2020 |  | Testing | 2d | 2026-03-28 | 2026-03-29 | A2010 | 50d | 20d |
|  | 3 | **OFC, Network & Connectivity** |  | 2026-01-19 | 2026-04-04 |  |  |  |
|  | 1 | **OFC Route Survey & Design** |  | 2026-01-19 | 2026-01-27 |  |  |  |
| A2030 |  | Route Survey | 4d | 2026-01-19 | 2026-01-22 |  | 33d | 0d |
| A2040 |  | Design Approval | 5d | 2026-01-23 | 2026-01-27 | A2030 | 33d | 0d |
|  | 2 | **OFC Civil Works** |  | 2026-01-28 | 2026-02-25 |  |  |  |
| A2050 |  | Trenching | 10d | 2026-01-28 | 2026-02-06 | A2040 | 33d | 0d |
| A2060 |  | Duct / Pipe Laying | 8d | 2026-02-07 | 2026-02-14 | A2050 | 33d | 0d |
| A2070 |  | Manhole Construction | 6d | 2026-02-15 | 2026-02-20 | A2060 | 33d | 0d |
| A2080 |  | Backfilling & Restoration | 5d | 2026-02-21 | 2026-02-25 | A2070 | 33d | 0d |
|  | 3 | **OFC Installation** |  | 2026-02-26 | 2026-03-10 |  |  |  |
| A2090 |  | OFC Cable Pulling | 6d | 2026-02-26 | 2026-03-03 | A2080 | 33d | 0d |
| A2100 |  | Splicing | 4d | 2026-03-04 | 2026-03-07 | A2090 | 33d | 0d |
| A2110 |  | OFC Testing | 3d | 2026-03-08 | 2026-03-10 | A2100 | 33d | 13d |
|  | 4 | **Aerial GPON OFC** |  | 2026-03-09 | 2026-03-17 |  |  |  |
| A2120 |  | Pole Installation | 4d | 2026-03-09 | 2026-03-12 | A1770 | 26d | 0d |
| A2130 |  | Aerial OFC Laying | 3d | 2026-03-13 | 2026-03-15 | A2120 | 26d | 0d |
| A2140 |  | Termination & Testing | 2d | 2026-03-16 | 2026-03-17 | A2130 | 26d | 6d |

| ID | WBS | Activity | Duration | Start | Finish | Predecessors | Total float | Free float |
| --- | --- | --- | --- | --- | --- | --- | --- | --- |
|  | 5 | **Network Connectivity** |  | 2026-03-24 | 2026-04-04 |  |  |  |
| A2150 |  | ISP Coordination | 5d | 2026-03-24 | 2026-03-28 | A1900, A2110, A2140 | 20d | 0d |
| A2160 |  | Site Connectivity Setup | 4d | 2026-03-29 | 2026-04-01 | A1910, A1920, A2150 | 20d | 0d |
| A2170 |  | Bandwidth Testing | 3d | 2026-04-02 | 2026-04-04 | A2160 | 20d | 0d |
|  | 4 | **Control Room Development** |  | 2026-01-19 | 2026-02-26 |  |  |  |
|  | 1 | **Control Room Civil Works** |  | 2026-01-19 | 2026-02-06 |  |  |  |
| A2180 |  | Renovation Works | 8d | 2026-01-19 | 2026-01-26 |  | 46d | 0d |
| A2190 |  | Flooring & Ceiling | 6d | 2026-01-27 | 2026-02-01 | A2180 | 46d | 0d |
| A2200 |  | Painting & Finishing | 5d | 2026-02-02 | 2026-02-06 | A2190 | 46d | 0d |
|  | 2 | **Furniture & Fixtures** |  | 2026-02-07 | 2026-02-12 |  |  |  |
| A2210 |  | Workstations Installation | 4d | 2026-02-07 | 2026-02-10 | A2200 | 46d | 0d |
| A2220 |  | Chairs Installation | 2d | 2026-02-11 | 2026-02-12 | A2210 | 111d |  |
|  | 3 | **Network Equipment** |  | 2026-02-11 | 2026-02-19 |  |  |  |
| A2230 |  | Core Switch Installation | 3d | 2026-02-11 | 2026-02-13 | A2210 | 46d | 0d |
| A2240 |  | Network Switch Installation | 3d | 2026-02-14 | 2026-02-16 | A2230 | 46d | 0d |
| A2250 |  | Firewall Installation | 3d | 2026-02-17 | 2026-02-19 | A2240 | 46d | 0d |
|  | 4 | **Display Systems** |  | 2026-02-20 | 2026-02-26 |  |  |  |
| A2260 |  | Video Wall Installation | 4d | 2026-02-20 | 2026-02-23 | A2250 | 46d | 0d |
| A2270 |  | Monitoring Screen Installation | 3d | 2026-02-24 | 2026-02-26 | A2260 | 46d | 19d |
|  | 5 | **IT Systems, Servers & Software** |  | 2026-03-18 | 2026-04-28 |  |  |  |
|  | 1 | **Server & Storage Systems** |  | 2026-03-18 | 2026-03-28 |  |  |  |
| A2280 |  | SAN Storage Installation | 4d | 2026-03-18 | 2026-03-21 | A1880, A2270 | 27d | 0d |
| A2290 |  | HDD Installation | 3d | 2026-03-22 | 2026-03-24 | A2280 | 27d | 0d |
| A2300 |  | GPU Server Installation | 4d | 2026-03-25 | 2026-03-28 | A2290 | 27d | 7d |

| ID | WBS | Activity | Duration | Start | Finish | Predecessors | Total float | Free float |
| --- | --- | --- | --- | --- | --- | --- | --- | --- |
|  | 2 | **VMS & AI Systems** |  | 2026-04-05 | 2026-04-17 |  |  |  |
| A2310 |  | VMS Installation | 5d | 2026-04-05 | 2026-04-09 | A2170, A2300 | 20d | 0d |
| A2320 |  | AI NVR Configuration | 4d | 2026-04-10 | 2026-04-13 | A2310 | 20d | 0d |
| A2330 |  | Analytics Configuration | 4d | 2026-04-14 | 2026-04-17 | A2320 | 20d | 0d |
|  | 3 | **Software & Applications** |  | 2026-04-18 | 2026-04-22 |  |  |  |
| A2340 |  | PSCA HQ Integration | 5d | 2026-04-18 | 2026-04-22 | A2330 | 20d | 0d |
|  | 4 | **System Licensing** |  | 2026-04-23 | 2026-04-28 |  |  |  |
| A2350 |  | Camera Licenses | 3d | 2026-04-23 | 2026-04-25 | A2340 | 20d | 0d |
| A2360 |  | System Licenses | 3d | 2026-04-26 | 2026-04-28 | A2350 | 20d |  |
|  | 5 | **Haroob Abad** |  | 2026-01-19 | 2026-05-08 |  |  |  |
|  | 1 | **Camera & Field Surveillance System** |  | 2026-02-18 | 2026-04-02 |  |  |  |
|  | 1 | **Camera Poles & Foundations** |  | 2026-02-18 | 2026-03-18 |  |  |  |
| A2370 |  | Survey & Marking | 4d | 2026-02-18 | 2026-02-21 | A1000 SS+30d | 10d | 0d |
| A2380 |  | Excavation | 6d | 2026-02-22 | 2026-02-27 | A2370 | 10d | 0d |
| A2390 |  | PCC | 3d | 2026-02-28 | 2026-03-02 | A2380 | 10d | 0d |
| A2400 |  | Foundation Concrete | 4d | 2026-03-03 | 2026-03-06 | A2390 | 10d | 0d |
| A2410 |  | Curing & Backfilling | 7d | 2026-03-07 | 2026-03-13 | A2400 | 10d | 0d |
| A2420 |  | Pole Erection | 5d | 2026-03-14 | 2026-03-18 | A2410 | 10d | 0d |
|  | 2 | **ANPR Poles & Foundations** |  | 2026-02-22 | 2026-03-02 |  |  |  |
| A2430 |  | Excavation & Foundation | 5d | 2026-02-22 | 2026-02-26 | A2370 | 28d | 0d |
| A2440 |  | Pole Installation | 4d | 2026-02-27 | 2026-03-02 | A2430 | 28d | 0d |
|  | 3 | **Power Cabinets for Camera & ANPR** |  | 2026-02-28 | 2026-03-11 |  |  |  |
| A2450 |  | Cabinet Foundation | 3d | 2026-02-28 | 2026-03-02 | A2380 | 28d | 0d |
| A2460 |  | Cabinet Installation | 4d | 2026-03-03 | 2026-03-06 | A2450 | 28d | 0d |
| A2470 |  | Internal Wiring | 5d | 2026-03-07 | 2026-03-11 | A2460 | 28d | 0d |

| ID | WBS | Activity | Duration | Start | Finish | Predecessors | Total float | Free float |
| --- | --- | --- | --- | --- | --- | --- | --- | --- |
|  | 4 | **Camera Installation** |  | 2026-03-03 | 2026-03-24 |  |  |  |
| A2500 |  | ANPR Camera Installation | 4d | 2026-03-03 | 2026-03-06 | A2440 | 28d | 18d |
| A2480 |  | Fixed Camera Installation | 6d | 2026-03-19 | 2026-03-24 | A2420 | 10d | 0d |
| A2490 |  | PTZ Camera Installation | 5d | 2026-03-19 | 2026-03-23 | A2420 | 11d | 1d |
| A2510 |  | Strobe Light Installation | 3d | 2026-03-19 | 2026-03-21 | A2420 | 13d | 0d |
|  | 5 | **Body Worn Camera System** |  | 2026-03-22 | 2026-03-27 |  |  |  |
| A2520 |  | Body Cameras Deployment | 3d | 2026-03-22 | 2026-03-24 | A2510 | 17d | 0d |
| A2530 |  | Dock & Storage Setup | 3d | 2026-03-25 | 2026-03-27 | A2520 | 17d | 0d |
|  | 6 | **Field Devices** |  | 2026-03-12 | 2026-03-14 |  |  |  |
| A2560 |  | Panic Button Installation | 3d | 2026-03-12 | 2026-03-14 | A2470 | 34d | 24d |
| A2570 |  | Attendance Device Installation | 3d | 2026-03-12 | 2026-03-14 | A2470 | 34d | 24d |
|  | 7 | **Field Equipment Configuration** |  | 2026-03-25 | 2026-04-02 |  |  |  |
| A2540 |  | Camera Addressing & Labeling | 5d | 2026-03-25 | 2026-03-29 | A2480, A2490, A2500, A2510 | 10d | 0d |
| A2550 |  | Initial Camera Testing | 4d | 2026-03-30 | 2026-04-02 | A2470, A2540 | 10d | 0d |
|  | 2 | **Power & Electrical Infrastructure** |  | 2026-03-07 | 2026-04-08 |  |  |  |
|  | 1 | **Power Supply Works** |  | 2026-03-07 | 2026-03-20 |  |  |  |
| A2580 |  | Power Cable Laying | 7d | 2026-03-07 | 2026-03-13 | A2460 | 40d | 0d |
| A2590 |  | Panel Installation | 4d | 2026-03-14 | 2026-03-17 | A2580 | 40d | 0d |
| A2600 |  | Earthing & Grounding | 3d | 2026-03-18 | 2026-03-20 | A2590 | 40d | 0d |
|  | 2 | **Backup Power Systems** |  | 2026-03-21 | 2026-03-31 |  |  |  |
| A2610 |  | UPS Installation | 3d | 2026-03-21 | 2026-03-23 | A2600 | 40d | 0d |
| A2620 |  | Battery Installation | 2d | 2026-03-24 | 2026-03-25 | A2610 | 40d | 0d |
| A2630 |  | Generator Installation | 4d | 2026-03-26 | 2026-03-29 | A2620 | 40d | 0d |
| A2640 |  | Generator Testing & Commissioning | 2d | 2026-03-30 | 2026-03-31 | A2630 | 40d | 0d |

| ID | WBS | Activity | Duration | Start | Finish | Predecessors | Total float | Free float |
| --- | --- | --- | --- | --- | --- | --- | --- | --- |
|  | 3 | **Split AC Installation** |  | 2026-04-01 | 2026-04-08 |  |  |  |
| A2650 |  | AC Mounting | 3d | 2026-04-01 | 2026-04-03 | A2640 | 40d | 0d |
| A2660 |  | Electrical Connections | 3d | 2026-04-04 | 2026-04-06 | A2650 | 40d | 0d |
| A2670 |  | Testing | 2d | 2026-04-07 | 2026-04-08 | A2660 | 40d | 10d |
|  | 3 | **OFC, Network & Connectivity** |  | 2026-01-19 | 2026-04-14 |  |  |  |
|  | 1 | **OFC Route Survey & Design** |  | 2026-01-19 | 2026-01-27 |  |  |  |
| A2680 |  | Route Survey | 4d | 2026-01-19 | 2026-01-22 |  | 33d | 0d |
| A2690 |  | Design Approval | 5d | 2026-01-23 | 2026-01-27 | A2680 | 33d | 0d |
|  | 2 | **OFC Civil Works** |  | 2026-01-28 | 2026-02-25 |  |  |  |
| A2700 |  | Trenching | 10d | 2026-01-28 | 2026-02-06 | A2690 | 33d | 0d |
| A2710 |  | Duct / Pipe Laying | 8d | 2026-02-07 | 2026-02-14 | A2700 | 33d | 0d |
| A2720 |  | Manhole Construction | 6d | 2026-02-15 | 2026-02-20 | A2710 | 33d | 0d |
| A2730 |  | Backfilling & Restoration | 5d | 2026-02-21 | 2026-02-25 | A2720 | 33d | 0d |
|  | 3 | **OFC Installation** |  | 2026-02-26 | 2026-03-10 |  |  |  |
| A2740 |  | OFC Cable Pulling | 6d | 2026-02-26 | 2026-03-03 | A2730 | 33d | 0d |
| A2750 |  | Splicing | 4d | 2026-03-04 | 2026-03-07 | A2740 | 33d | 0d |
| A2760 |  | OFC Testing | 3d | 2026-03-08 | 2026-03-10 | A2750 | 33d | 23d |
|  | 4 | **Aerial GPON OFC** |  | 2026-03-19 | 2026-03-27 |  |  |  |
| A2770 |  | Pole Installation | 4d | 2026-03-19 | 2026-03-22 | A2420 | 16d | 0d |
| A2780 |  | Aerial OFC Laying | 3d | 2026-03-23 | 2026-03-25 | A2770 | 16d | 0d |
| A2790 |  | Termination & Testing | 2d | 2026-03-26 | 2026-03-27 | A2780 | 16d | 6d |
|  | 5 | **Network Connectivity** |  | 2026-04-03 | 2026-04-14 |  |  |  |
| A2800 |  | ISP Coordination | 5d | 2026-04-03 | 2026-04-07 | A2550, A2760, A2790 | 10d | 0d |
| A2810 |  | Site Connectivity Setup | 4d | 2026-04-08 | 2026-04-11 | A2560, A2570, A2800 | 10d | 0d |
| A2820 |  | Bandwidth Testing | 3d | 2026-04-12 | 2026-04-14 | A2810 | 10d | 0d |

| ID | WBS | Activity | Duration | Start | Finish | Predecessors | Total float | Free float |
| --- | --- | --- | --- | --- | --- | --- | --- | --- |
|  | 4 | **Control Room Development** |  | 2026-01-19 | 2026-02-26 |  |  |  |
|  | 1 | **Control Room Civil Works** |  | 2026-01-19 | 2026-02-06 |  |  |  |
| A2830 |  | Renovation Works | 8d | 2026-01-19 | 2026-01-26 |  | 46d | 0d |
| A2840 |  | Flooring & Ceiling | 6d | 2026-01-27 | 2026-02-01 | A2830 | 46d | 0d |
| A2850 |  | Painting & Finishing | 5d | 2026-02-02 | 2026-02-06 | A2840 | 46d | 0d |
|  | 2 | **Furniture & Fixtures** |  | 2026-02-07 | 2026-02-12 |  |  |  |
| A2860 |  | Workstations Installation | 4d | 2026-02-07 | 2026-02-10 | A2850 | 46d | 0d |
| A2870 |  | Chairs Installation | 2d | 2026-02-11 | 2026-02-12 | A2860 | 111d |  |
|  | 3 | **Network Equipment** |  | 2026-02-11 | 2026-02-19 |  |  |  |
| A2880 |  | Core Switch Installation | 3d | 2026-02-11 | 2026-02-13 | A2860 | 46d | 0d |
| A2890 |  | Network Switch Installation | 3d | 2026-02-14 | 2026-02-16 | A2880 | 46d | 0d |
| A2900 |  | Firewall Installation | 3d | 2026-02-17 | 2026-02-19 | A2890 | 46d | 0d |
|  | 4 | **Display Systems** |  | 2026-02-20 | 2026-02-26 |  |  |  |
| A2910 |  | Video Wall Installation | 4d | 2026-02-20 | 2026-02-23 | A2900 | 46d | 0d |
| A2920 |  | Monitoring Screen Installation | 3d | 2026-02-24 | 2026-02-26 | A2910 | 46d | 29d |
|  | 5 | **IT Systems, Servers & Software** |  | 2026-03-28 | 2026-05-08 |  |  |  |
|  | 1 | **Server & Storage Systems** |  | 2026-03-28 | 2026-04-07 |  |  |  |
| A2930 |  | SAN Storage Installation | 4d | 2026-03-28 | 2026-03-31 | A2530, A2920 | 17d | 0d |
| A2940 |  | HDD Installation | 3d | 2026-04-01 | 2026-04-03 | A2930 | 17d | 0d |
| A2950 |  | GPU Server Installation | 4d | 2026-04-04 | 2026-04-07 | A2940 | 17d | 7d |
|  | 2 | **VMS & AI Systems** |  | 2026-04-15 | 2026-04-27 |  |  |  |
| A2960 |  | VMS Installation | 5d | 2026-04-15 | 2026-04-19 | A2820, A2950 | 10d | 0d |
| A2970 |  | AI NVR Configuration | 4d | 2026-04-20 | 2026-04-23 | A2960 | 10d | 0d |
| A2980 |  | Analytics Configuration | 4d | 2026-04-24 | 2026-04-27 | A2970 | 10d | 0d |

| ID | WBS | Activity | Duration | Start | Finish | Predecessors | Total float | Free float |
| --- | --- | --- | --- | --- | --- | --- | --- | --- |
|  | 3 | **Software & Applications** |  | 2026-04-28 | 2026-05-02 |  |  |  |
| A2990 |  | PSCA HQ Integration | 5d | 2026-04-28 | 2026-05-02 | A2980 | 10d | 0d |
|  | 4 | **System Licensing** |  | 2026-05-03 | 2026-05-08 |  |  |  |
| A3000 |  | Camera Licenses | 3d | 2026-05-03 | 2026-05-05 | A2990 | 10d | 0d |
| A3010 |  | System Licenses | 3d | 2026-05-06 | 2026-05-08 | A3000 | 10d |  |
|  | 3 | **Minchinabad** |  | 2026-01-19 | 2026-05-18 |  |  |  |
|  | 1 | **Camera & Field Surveillance System** |  | 2026-02-28 | 2026-04-12 |  |  |  |
|  | 1 | **Camera Poles & Foundations** |  | 2026-02-28 | 2026-03-28 |  |  |  |
| A3020 |  | Survey & Marking | 4d | 2026-02-28 | 2026-03-03 | A1000 SS+40d | 0d |  |
| A3030 |  | Excavation | 6d | 2026-03-04 | 2026-03-09 | A3020 | 0d |  |
| A3040 |  | PCC | 3d | 2026-03-10 | 2026-03-12 | A3030 | 0d |  |
| A3050 |  | Foundation Concrete | 4d | 2026-03-13 | 2026-03-16 | A3040 | 0d |  |
| A3060 |  | Curing & Backfilling | 7d | 2026-03-17 | 2026-03-23 | A3050 | 0d |  |
| A3070 |  | Pole Erection | 5d | 2026-03-24 | 2026-03-28 | A3060 | 0d |  |
|  | 2 | **ANPR Poles & Foundations** |  | 2026-03-04 | 2026-03-12 |  |  |  |
| A3080 |  | Excavation & Foundation | 5d | 2026-03-04 | 2026-03-08 | A3020 | 18d | 0d |
| A3090 |  | Pole Installation | 4d | 2026-03-09 | 2026-03-12 | A3080 | 18d | 0d |
|  | 3 | **Power Cabinets for Camera & ANPR** |  | 2026-03-10 | 2026-03-21 |  |  |  |
| A3100 |  | Cabinet Foundation | 3d | 2026-03-10 | 2026-03-12 | A3030 | 18d | 0d |
| A3110 |  | Cabinet Installation | 4d | 2026-03-13 | 2026-03-16 | A3100 | 18d | 0d |
| A3120 |  | Internal Wiring | 5d | 2026-03-17 | 2026-03-21 | A3110 | 18d | 0d |
|  | 4 | **Camera Installation** |  | 2026-03-13 | 2026-04-03 |  |  |  |
| A3150 |  | ANPR Camera Installation | 4d | 2026-03-13 | 2026-03-16 | A3090 | 18d |  |
| A3130 |  | Fixed Camera Installation | 6d | 2026-03-29 | 2026-04-03 | A3070 | 0d |  |
| A3140 |  | PTZ Camera Installation | 5d | 2026-03-29 | 2026-04-02 | A3070 | 1d |  |
| A3160 |  | Strobe Light Installation | 3d | 2026-03-29 | 2026-03-31 | A3070 | 3d | 0d |

| ID | WBS | Activity | Duration | Start | Finish | Predecessors | Total float | Free float |
| --- | --- | --- | --- | --- | --- | --- | --- | --- |
|  | 5 | **Body Worn Camera System** |  | 2026-04-01 | 2026-04-06 |  |  |  |
| A3170 |  | Body Cameras Deployment | 3d | 2026-04-01 | 2026-04-03 | A3160 | 7d | 0d |
| A3180 |  | Dock & Storage Setup | 3d | 2026-04-04 | 2026-04-06 | A3170 | 7d | 0d |
|  | 6 | **Field Devices** |  | 2026-03-22 | 2026-03-24 |  |  |  |
| A3210 |  | Panic Button Installation | 3d | 2026-03-22 | 2026-03-24 | A3120 | 24d |  |
| A3220 |  | Attendance Device Installation | 3d | 2026-03-22 | 2026-03-24 | A3120 | 24d |  |
|  | 7 | **Field Equipment Configuration** |  | 2026-04-04 | 2026-04-12 |  |  |  |
| A3190 |  | Camera Addressing & Labeling | 5d | 2026-04-04 | 2026-04-08 | A3130, A3140, A3150, A3160 | 0d |  |
| A3200 |  | Initial Camera Testing | 4d | 2026-04-09 | 2026-04-12 | A3120, A3190 | 0d |  |
|  | 2 | **Power & Electrical Infrastructure** |  | 2026-03-17 | 2026-04-18 |  |  |  |
|  | 1 | **Power Supply Works** |  | 2026-03-17 | 2026-03-30 |  |  |  |
| A3230 |  | Power Cable Laying | 7d | 2026-03-17 | 2026-03-23 | A3110 | 30d | 0d |
| A3240 |  | Panel Installation | 4d | 2026-03-24 | 2026-03-27 | A3230 | 30d | 0d |
| A3250 |  | Earthing & Grounding | 3d | 2026-03-28 | 2026-03-30 | A3240 | 30d | 0d |
|  | 2 | **Backup Power Systems** |  | 2026-03-31 | 2026-04-10 |  |  |  |
| A3260 |  | UPS Installation | 3d | 2026-03-31 | 2026-04-02 | A3250 | 30d | 0d |
| A3270 |  | Battery Installation | 2d | 2026-04-03 | 2026-04-04 | A3260 | 30d | 0d |
| A3280 |  | Generator Installation | 4d | 2026-04-05 | 2026-04-08 | A3270 | 30d | 0d |
| A3290 |  | Generator Testing & Commissioning | 2d | 2026-04-09 | 2026-04-10 | A3280 | 30d | 0d |
|  | 3 | **Split AC Installation** |  | 2026-04-11 | 2026-04-18 |  |  |  |
| A3300 |  | AC Mounting | 3d | 2026-04-11 | 2026-04-13 | A3290 | 30d | 0d |
| A3310 |  | Electrical Connections | 3d | 2026-04-14 | 2026-04-16 | A3300 | 30d | 0d |
| A3320 |  | Testing | 2d | 2026-04-17 | 2026-04-18 | A3310 | 30d | 0d |
|  | 3 | **OFC, Network & Connectivity** |  | 2026-01-19 | 2026-04-24 |  |  |  |
|  | 1 | **OFC Route Survey & Design** |  | 2026-01-19 | 2026-01-27 |  |  |  |
| A3330 |  | Route Survey | 4d | 2026-01-19 | 2026-01-22 |  | 33d | 0d |
| A3340 |  | Design Approval | 5d | 2026-01-23 | 2026-01-27 | A3330 | 33d | 0d |

| ID | WBS | Activity | Duration | Start | Finish | Predecessors | Total float | Free float |
| --- | --- | --- | --- | --- | --- | --- | --- | --- |
|  | 2 | **OFC Civil Works** |  | 2026-01-28 | 2026-02-25 |  |  |  |
| A3350 |  | Trenching | 10d | 2026-01-28 | 2026-02-06 | A3340 | 33d | 0d |
| A3360 |  | Duct / Pipe Laying | 8d | 2026-02-07 | 2026-02-14 | A3350 | 33d | 0d |
| A3370 |  | Manhole Construction | 6d | 2026-02-15 | 2026-02-20 | A3360 | 33d | 0d |
| A3380 |  | Backfilling & Restoration | 5d | 2026-02-21 | 2026-02-25 | A3370 | 33d | 0d |
|  | 3 | **OFC Installation** |  | 2026-02-26 | 2026-03-10 |  |  |  |
| A3390 |  | OFC Cable Pulling | 6d | 2026-02-26 | 2026-03-03 | A3380 | 33d | 0d |
| A3400 |  | Splicing | 4d | 2026-03-04 | 2026-03-07 | A3390 | 33d | 0d |
| A3410 |  | OFC Testing | 3d | 2026-03-08 | 2026-03-10 | A3400 | 33d |  |
|  | 4 | **Aerial GPON OFC** |  | 2026-03-29 | 2026-04-06 |  |  |  |
| A3420 |  | Pole Installation | 4d | 2026-03-29 | 2026-04-01 | A3070 | 6d | 0d |
| A3430 |  | Aerial OFC Laying | 3d | 2026-04-02 | 2026-04-04 | A3420 | 6d | 0d |
| A3440 |  | Termination & Testing | 2d | 2026-04-05 | 2026-04-06 | A3430 | 6d |  |
|  | 5 | **Network Connectivity** |  | 2026-04-13 | 2026-04-24 |  |  |  |
| A3450 |  | ISP Coordination | 5d | 2026-04-13 | 2026-04-17 | A3200, A3410, A3440 | 0d |  |
| A3460 |  | Site Connectivity Setup | 4d | 2026-04-18 | 2026-04-21 | A3210, A3220, A3450 | 0d |  |
| A3470 |  | Bandwidth Testing | 3d | 2026-04-22 | 2026-04-24 | A3460 | 0d |  |
|  | 4 | **Control Room Development** |  | 2026-01-19 | 2026-02-26 |  |  |  |
|  | 1 | **Control Room Civil Works** |  | 2026-01-19 | 2026-02-06 |  |  |  |
| A3480 |  | Renovation Works | 8d | 2026-01-19 | 2026-01-26 |  | 46d | 0d |
| A3490 |  | Flooring & Ceiling | 6d | 2026-01-27 | 2026-02-01 | A3480 | 46d | 0d |
| A3500 |  | Painting & Finishing | 5d | 2026-02-02 | 2026-02-06 | A3490 | 46d | 0d |
|  | 2 | **Furniture & Fixtures** |  | 2026-02-07 | 2026-02-12 |  |  |  |
| A3510 |  | Workstations Installation | 4d | 2026-02-07 | 2026-02-10 | A3500 | 46d | 0d |
| A3520 |  | Chairs Installation | 2d | 2026-02-11 | 2026-02-12 | A3510 | 111d |  |

| ID | WBS | Activity | Duration | Start | Finish | Predecessors | Total float | Free float |
| --- | --- | --- | --- | --- | --- | --- | --- | --- |
|  | 3 | **Network Equipment** |  | 2026-02-11 | 2026-02-19 |  |  |  |
| A3530 |  | Core Switch Installation | 3d | 2026-02-11 | 2026-02-13 | A3510 | 46d | 0d |
| A3540 |  | Network Switch Installation | 3d | 2026-02-14 | 2026-02-16 | A3530 | 46d | 0d |
| A3550 |  | Firewall Installation | 3d | 2026-02-17 | 2026-02-19 | A3540 | 46d | 0d |
|  | 4 | **Display Systems** |  | 2026-02-20 | 2026-02-26 |  |  |  |
| A3560 |  | Video Wall Installation | 4d | 2026-02-20 | 2026-02-23 | A3550 | 46d | 0d |
| A3570 |  | Monitoring Screen Installation | 3d | 2026-02-24 | 2026-02-26 | A3560 | 46d | 39d |
|  | 5 | **IT Systems, Servers & Software** |  | 2026-04-07 | 2026-05-18 |  |  |  |
|  | 1 | **Server & Storage Systems** |  | 2026-04-07 | 2026-04-17 |  |  |  |
| A3580 |  | SAN Storage Installation | 4d | 2026-04-07 | 2026-04-10 | A3180, A3570 | 7d | 0d |
| A3590 |  | HDD Installation | 3d | 2026-04-11 | 2026-04-13 | A3580 | 7d | 0d |
| A3600 |  | GPU Server Installation | 4d | 2026-04-14 | 2026-04-17 | A3590 | 7d |  |
|  | 2 | **VMS & AI Systems** |  | 2026-04-25 | 2026-05-07 |  |  |  |
| A3610 |  | VMS Installation | 5d | 2026-04-25 | 2026-04-29 | A3470, A3600 | 0d |  |
| A3620 |  | AI NVR Configuration | 4d | 2026-04-30 | 2026-05-03 | A3610 | 0d |  |
| A3630 |  | Analytics Configuration | 4d | 2026-05-04 | 2026-05-07 | A3620 | 0d |  |
|  | 3 | **Software & Applications** |  | 2026-05-08 | 2026-05-12 |  |  |  |
| A3640 |  | PSCA HQ Integration | 5d | 2026-05-08 | 2026-05-12 | A3630 | 0d |  |
|  | 4 | **System Licensing** |  | 2026-05-13 | 2026-05-18 |  |  |  |
| A3650 |  | Camera Licenses | 3d | 2026-05-13 | 2026-05-15 | A3640 | 0d |  |
| A3660 |  | System Licenses | 3d | 2026-05-16 | 2026-05-18 | A3650 | 0d |  |
|  | 2 | **Bahawalpur** |  | 2026-01-19 | 2026-05-18 |  |  |  |
|  | 4 | **Ahmadpur East** |  | 2026-01-19 | 2026-04-15 |  |  |  |
|  | 1 | **Camera & Field Surveillance System** |  | 2026-01-19 | 2026-03-03 |  |  |  |
|  | 1 | **Camera Poles & Foundations** |  | 2026-01-19 | 2026-02-16 |  |  |  |
| A3670 |  | Survey & Marking | 4d | 2026-01-19 | 2026-01-22 | A1000 SS | 40d | 0d |
| A3680 |  | Excavation | 6d | 2026-01-23 | 2026-01-28 | A3670 | 40d | 0d |
| A3690 |  | PCC | 3d | 2026-01-29 | 2026-01-31 | A3680 | 40d | 0d |
| A3700 |  | Foundation Concrete | 4d | 2026-02-01 | 2026-02-04 | A3690 | 40d | 0d |
| A3710 |  | Curing & Backfilling | 7d | 2026-02-05 | 2026-02-11 | A3700 | 40d | 0d |
| A3720 |  | Pole Erection | 5d | 2026-02-12 | 2026-02-16 | A3710 | 40d | 0d |

| ID | WBS | Activity | Duration | Start | Finish | Predecessors | Total float | Free float |
| --- | --- | --- | --- | --- | --- | --- | --- | --- |
|  | 2 | **ANPR Poles & Foundations** |  | 2026-01-23 | 2026-01-31 |  |  |  |
| A3730 |  | Excavation & Foundation | 5d | 2026-01-23 | 2026-01-27 | A3670 | 58d | 0d |
| A3740 |  | Pole Installation | 4d | 2026-01-28 | 2026-01-31 | A3730 | 58d | 0d |
|  | 3 | **Power Cabinets for Camera & ANPR** |  | 2026-01-29 | 2026-02-09 |  |  |  |
| A3750 |  | Cabinet Foundation | 3d | 2026-01-29 | 2026-01-31 | A3680 | 58d | 0d |
| A3760 |  | Cabinet Installation | 4d | 2026-02-01 | 2026-02-04 | A3750 | 58d | 0d |
| A3770 |  | Internal Wiring | 5d | 2026-02-05 | 2026-02-09 | A3760 | 58d | 0d |
|  | 4 | **Camera Installation** |  | 2026-02-01 | 2026-02-22 |  |  |  |
| A3800 |  | ANPR Camera Installation | 4d | 2026-02-01 | 2026-02-04 | A3740 | 58d | 18d |
| A3780 |  | Fixed Camera Installation | 6d | 2026-02-17 | 2026-02-22 | A3720 | 40d | 0d |
| A3790 |  | PTZ Camera Installation | 5d | 2026-02-17 | 2026-02-21 | A3720 | 41d | 1d |
| A3810 |  | Strobe Light Installation | 3d | 2026-02-17 | 2026-02-19 | A3720 | 43d | 0d |
|  | 5 | **Body Worn Camera System** |  | 2026-02-20 | 2026-02-25 |  |  |  |
| A3820 |  | Body Cameras Deployment | 3d | 2026-02-20 | 2026-02-22 | A3810 | 47d | 0d |
| A3830 |  | Dock & Storage Setup | 3d | 2026-02-23 | 2026-02-25 | A3820 | 47d | 1d |
|  | 6 | **Field Devices** |  | 2026-02-10 | 2026-02-12 |  |  |  |
| A3860 |  | Panic Button Installation | 3d | 2026-02-10 | 2026-02-12 | A3770 | 64d | 31d |
| A3870 |  | Attendance Device Installation | 3d | 2026-02-10 | 2026-02-12 | A3770 | 64d | 31d |
|  | 7 | **Field Equipment Configuration** |  | 2026-02-23 | 2026-03-03 |  |  |  |
| A3840 |  | Camera Addressing & Labeling | 5d | 2026-02-23 | 2026-02-27 | A3780, A3790, A3800, A3810 | 40d | 0d |
| A3850 |  | Initial Camera Testing | 4d | 2026-02-28 | 2026-03-03 | A3770, A3840 | 40d | 7d |
|  | 2 | **Power & Electrical Infrastructure** |  | 2026-02-05 | 2026-03-09 |  |  |  |
|  | 1 | **Power Supply Works** |  | 2026-02-05 | 2026-02-18 |  |  |  |
| A3880 |  | Power Cable Laying | 7d | 2026-02-05 | 2026-02-11 | A3760 | 70d | 0d |
| A3890 |  | Panel Installation | 4d | 2026-02-12 | 2026-02-15 | A3880 | 70d | 0d |
| A3900 |  | Earthing & Grounding | 3d | 2026-02-16 | 2026-02-18 | A3890 | 70d | 0d |

| ID | WBS | Activity | Duration | Start | Finish | Predecessors | Total float | Free float |
| --- | --- | --- | --- | --- | --- | --- | --- | --- |
|  | 2 | **Backup Power Systems** |  | 2026-02-19 | 2026-03-01 |  |  |  |
| A3910 |  | UPS Installation | 3d | 2026-02-19 | 2026-02-21 | A3900 | 70d | 0d |
| A3920 |  | Battery Installation | 2d | 2026-02-22 | 2026-02-23 | A3910 | 70d | 0d |
| A3930 |  | Generator Installation | 4d | 2026-02-24 | 2026-02-27 | A3920 | 70d | 0d |
| A3940 |  | Generator Testing & Commissioning | 2d | 2026-02-28 | 2026-03-01 | A3930 | 70d | 0d |
|  | 3 | **Split AC Installation** |  | 2026-03-02 | 2026-03-09 |  |  |  |
| A3950 |  | AC Mounting | 3d | 2026-03-02 | 2026-03-04 | A3940 | 70d | 0d |
| A3960 |  | Electrical Connections | 3d | 2026-03-05 | 2026-03-07 | A3950 | 70d | 0d |
| A3970 |  | Testing | 2d | 2026-03-08 | 2026-03-09 | A3960 | 70d | 40d |
|  | 3 | **OFC, Network & Connectivity** |  | 2026-01-19 | 2026-03-22 |  |  |  |
|  | 1 | **OFC Route Survey & Design** |  | 2026-01-19 | 2026-01-27 |  |  |  |
| A3980 |  | Route Survey | 4d | 2026-01-19 | 2026-01-22 |  | 33d | 0d |
| A3990 |  | Design Approval | 5d | 2026-01-23 | 2026-01-27 | A3980 | 33d | 0d |
|  | 2 | **OFC Civil Works** |  | 2026-01-28 | 2026-02-25 |  |  |  |
| A4000 |  | Trenching | 10d | 2026-01-28 | 2026-02-06 | A3990 | 33d | 0d |
| A4010 |  | Duct / Pipe Laying | 8d | 2026-02-07 | 2026-02-14 | A4000 | 33d | 0d |
| A4020 |  | Manhole Construction | 6d | 2026-02-15 | 2026-02-20 | A4010 | 33d | 0d |
| A4030 |  | Backfilling & Restoration | 5d | 2026-02-21 | 2026-02-25 | A4020 | 33d | 0d |
|  | 3 | **OFC Installation** |  | 2026-02-26 | 2026-03-10 |  |  |  |
| A4040 |  | OFC Cable Pulling | 6d | 2026-02-26 | 2026-03-03 | A4030 | 33d | 0d |
| A4050 |  | Splicing | 4d | 2026-03-04 | 2026-03-07 | A4040 | 33d | 0d |
| A4060 |  | OFC Testing | 3d | 2026-03-08 | 2026-03-10 | A4050 | 33d | 0d |
|  | 4 | **Aerial GPON OFC** |  | 2026-02-17 | 2026-02-25 |  |  |  |
| A4070 |  | Pole Installation | 4d | 2026-02-17 | 2026-02-20 | A3720 | 46d | 0d |
| A4080 |  | Aerial OFC Laying | 3d | 2026-02-21 | 2026-02-23 | A4070 | 46d | 0d |
| A4090 |  | Termination & Testing | 2d | 2026-02-24 | 2026-02-25 | A4080 | 46d | 13d |

| ID | WBS | Activity | Duration | Start | Finish | Predecessors | Total float | Free float |
| --- | --- | --- | --- | --- | --- | --- | --- | --- |
|  | 5 | **Network Connectivity** |  | 2026-03-11 | 2026-03-22 |  |  |  |
| A4100 |  | ISP Coordination | 5d | 2026-03-11 | 2026-03-15 | A3850, A4060, A4090 | 33d | 0d |
| A4110 |  | Site Connectivity Setup | 4d | 2026-03-16 | 2026-03-19 | A3860, A3870, A4100 | 33d | 0d |
| A4120 |  | Bandwidth Testing | 3d | 2026-03-20 | 2026-03-22 | A4110 | 33d | 0d |
|  | 4 | **Control Room Development** |  | 2026-01-19 | 2026-02-26 |  |  |  |
|  | 1 | **Control Room Civil Works** |  | 2026-01-19 | 2026-02-06 |  |  |  |
| A4130 |  | Renovation Works | 8d | 2026-01-19 | 2026-01-26 |  | 46d | 0d |
| A4140 |  | Flooring & Ceiling | 6d | 2026-01-27 | 2026-02-01 | A4130 | 46d | 0d |
| A4150 |  | Painting & Finishing | 5d | 2026-02-02 | 2026-02-06 | A4140 | 46d | 0d |
|  | 2 | **Furniture & Fixtures** |  | 2026-02-07 | 2026-02-12 |  |  |  |
| A4160 |  | Workstations Installation | 4d | 2026-02-07 | 2026-02-10 | A4150 | 46d | 0d |
| A4170 |  | Chairs Installation | 2d | 2026-02-11 | 2026-02-12 | A4160 | 111d |  |
|  | 3 | **Network Equipment** |  | 2026-02-11 | 2026-02-19 |  |  |  |
| A4180 |  | Core Switch Installation | 3d | 2026-02-11 | 2026-02-13 | A4160 | 46d | 0d |
| A4190 |  | Network Switch Installation | 3d | 2026-02-14 | 2026-02-16 | A4180 | 46d | 0d |
| A4200 |  | Firewall Installation | 3d | 2026-02-17 | 2026-02-19 | A4190 | 46d | 0d |
|  | 4 | **Display Systems** |  | 2026-02-20 | 2026-02-26 |  |  |  |
| A4210 |  | Video Wall Installation | 4d | 2026-02-20 | 2026-02-23 | A4200 | 46d | 0d |
| A4220 |  | Monitoring Screen Installation | 3d | 2026-02-24 | 2026-02-26 | A4210 | 46d | 0d |
|  | 5 | **IT Systems, Servers & Software** |  | 2026-02-27 | 2026-04-15 |  |  |  |
|  | 1 | **Server & Storage Systems** |  | 2026-02-27 | 2026-03-09 |  |  |  |
| A4230 |  | SAN Storage Installation | 4d | 2026-02-27 | 2026-03-02 | A3830, A4220 | 46d | 0d |
| A4240 |  | HDD Installation | 3d | 2026-03-03 | 2026-03-05 | A4230 | 46d | 0d |
| A4250 |  | GPU Server Installation | 4d | 2026-03-06 | 2026-03-09 | A4240 | 46d | 13d |

| ID | WBS | Activity | Duration | Start | Finish | Predecessors | Total float | Free float |
| --- | --- | --- | --- | --- | --- | --- | --- | --- |
|  | 2 | **VMS & AI Systems** |  | 2026-03-23 | 2026-04-04 |  |  |  |
| A4260 |  | VMS Installation | 5d | 2026-03-23 | 2026-03-27 | A4120, A4250 | 33d | 0d |
| A4270 |  | AI NVR Configuration | 4d | 2026-03-28 | 2026-03-31 | A4260 | 33d | 0d |
| A4280 |  | Analytics Configuration | 4d | 2026-04-01 | 2026-04-04 | A4270 | 33d | 0d |
|  | 3 | **Software & Applications** |  | 2026-04-05 | 2026-04-09 |  |  |  |
| A4290 |  | PSCA HQ Integration | 5d | 2026-04-05 | 2026-04-09 | A4280 | 33d | 0d |
|  | 4 | **System Licensing** |  | 2026-04-10 | 2026-04-15 |  |  |  |
| A4300 |  | Camera Licenses | 3d | 2026-04-10 | 2026-04-12 | A4290 | 33d | 0d |
| A4310 |  | System Licenses | 3d | 2026-04-13 | 2026-04-15 | A4300 | 33d |  |
|  | 5 | **Hasilpur** |  | 2026-01-19 | 2026-04-28 |  |  |  |
|  | 1 | **Camera & Field Surveillance System** |  | 2026-02-08 | 2026-03-23 |  |  |  |
|  | 1 | **Camera Poles & Foundations** |  | 2026-02-08 | 2026-03-08 |  |  |  |
| A4320 |  | Survey & Marking | 4d | 2026-02-08 | 2026-02-11 | A1000 SS+20d | 20d | 0d |
| A4330 |  | Excavation | 6d | 2026-02-12 | 2026-02-17 | A4320 | 20d | 0d |
| A4340 |  | PCC | 3d | 2026-02-18 | 2026-02-20 | A4330 | 20d | 0d |
| A4350 |  | Foundation Concrete | 4d | 2026-02-21 | 2026-02-24 | A4340 | 20d | 0d |
| A4360 |  | Curing & Backfilling | 7d | 2026-02-25 | 2026-03-03 | A4350 | 20d | 0d |
| A4370 |  | Pole Erection | 5d | 2026-03-04 | 2026-03-08 | A4360 | 20d | 0d |
|  | 2 | **ANPR Poles & Foundations** |  | 2026-02-12 | 2026-02-20 |  |  |  |
| A4380 |  | Excavation & Foundation | 5d | 2026-02-12 | 2026-02-16 | A4320 | 38d | 0d |
| A4390 |  | Pole Installation | 4d | 2026-02-17 | 2026-02-20 | A4380 | 38d | 0d |
|  | 3 | **Power Cabinets for Camera & ANPR** |  | 2026-02-18 | 2026-03-01 |  |  |  |
| A4400 |  | Cabinet Foundation | 3d | 2026-02-18 | 2026-02-20 | A4330 | 38d | 0d |
| A4410 |  | Cabinet Installation | 4d | 2026-02-21 | 2026-02-24 | A4400 | 38d | 0d |
| A4420 |  | Internal Wiring | 5d | 2026-02-25 | 2026-03-01 | A4410 | 38d | 0d |

| ID | WBS | Activity | Duration | Start | Finish | Predecessors | Total float | Free float |
| --- | --- | --- | --- | --- | --- | --- | --- | --- |
|  | 4 | **Camera Installation** |  | 2026-02-21 | 2026-03-14 |  |  |  |
| A4450 |  | ANPR Camera Installation | 4d | 2026-02-21 | 2026-02-24 | A4390 | 38d | 18d |
| A4430 |  | Fixed Camera Installation | 6d | 2026-03-09 | 2026-03-14 | A4370 | 20d | 0d |
| A4440 |  | PTZ Camera Installation | 5d | 2026-03-09 | 2026-03-13 | A4370 | 21d | 1d |
| A4460 |  | Strobe Light Installation | 3d | 2026-03-09 | 2026-03-11 | A4370 | 23d | 0d |
|  | 5 | **Body Worn Camera System** |  | 2026-03-12 | 2026-03-17 |  |  |  |
| A4470 |  | Body Cameras Deployment | 3d | 2026-03-12 | 2026-03-14 | A4460 | 27d | 0d |
| A4480 |  | Dock & Storage Setup | 3d | 2026-03-15 | 2026-03-17 | A4470 | 27d | 0d |
|  | 6 | **Field Devices** |  | 2026-03-02 | 2026-03-04 |  |  |  |
| A4510 |  | Panic Button Installation | 3d | 2026-03-02 | 2026-03-04 | A4420 | 44d | 24d |
| A4520 |  | Attendance Device Installation | 3d | 2026-03-02 | 2026-03-04 | A4420 | 44d | 24d |
|  | 7 | **Field Equipment Configuration** |  | 2026-03-15 | 2026-03-23 |  |  |  |
| A4490 |  | Camera Addressing & Labeling | 5d | 2026-03-15 | 2026-03-19 | A4430, A4440, A4450, A4460 | 20d | 0d |
| A4500 |  | Initial Camera Testing | 4d | 2026-03-20 | 2026-03-23 | A4420, A4490 | 20d | 0d |
|  | 2 | **Power & Electrical Infrastructure** |  | 2026-02-25 | 2026-03-29 |  |  |  |
|  | 1 | **Power Supply Works** |  | 2026-02-25 | 2026-03-10 |  |  |  |
| A4530 |  | Power Cable Laying | 7d | 2026-02-25 | 2026-03-03 | A4410 | 50d | 0d |
| A4540 |  | Panel Installation | 4d | 2026-03-04 | 2026-03-07 | A4530 | 50d | 0d |
| A4550 |  | Earthing & Grounding | 3d | 2026-03-08 | 2026-03-10 | A4540 | 50d | 0d |
|  | 2 | **Backup Power Systems** |  | 2026-03-11 | 2026-03-21 |  |  |  |
| A4560 |  | UPS Installation | 3d | 2026-03-11 | 2026-03-13 | A4550 | 50d | 0d |
| A4570 |  | Battery Installation | 2d | 2026-03-14 | 2026-03-15 | A4560 | 50d | 0d |
| A4580 |  | Generator Installation | 4d | 2026-03-16 | 2026-03-19 | A4570 | 50d | 0d |
| A4590 |  | Generator Testing & Commissioning | 2d | 2026-03-20 | 2026-03-21 | A4580 | 50d | 0d |

| ID | WBS | Activity | Duration | Start | Finish | Predecessors | Total float | Free float |
| --- | --- | --- | --- | --- | --- | --- | --- | --- |
|  | 3 | **Split AC Installation** |  | 2026-03-22 | 2026-03-29 |  |  |  |
| A4600 |  | AC Mounting | 3d | 2026-03-22 | 2026-03-24 | A4590 | 50d | 0d |
| A4610 |  | Electrical Connections | 3d | 2026-03-25 | 2026-03-27 | A4600 | 50d | 0d |
| A4620 |  | Testing | 2d | 2026-03-28 | 2026-03-29 | A4610 | 50d | 20d |
|  | 3 | **OFC, Network & Connectivity** |  | 2026-01-19 | 2026-04-04 |  |  |  |
|  | 1 | **OFC Route Survey & Design** |  | 2026-01-19 | 2026-01-27 |  |  |  |
| A4630 |  | Route Survey | 4d | 2026-01-19 | 2026-01-22 |  | 33d | 0d |
| A4640 |  | Design Approval | 5d | 2026-01-23 | 2026-01-27 | A4630 | 33d | 0d |
|  | 2 | **OFC Civil Works** |  | 2026-01-28 | 2026-02-25 |  |  |  |
| A4650 |  | Trenching | 10d | 2026-01-28 | 2026-02-06 | A4640 | 33d | 0d |
| A4660 |  | Duct / Pipe Laying | 8d | 2026-02-07 | 2026-02-14 | A4650 | 33d | 0d |
| A4670 |  | Manhole Construction | 6d | 2026-02-15 | 2026-02-20 | A4660 | 33d | 0d |
| A4680 |  | Backfilling & Restoration | 5d | 2026-02-21 | 2026-02-25 | A4670 | 33d | 0d |
|  | 3 | **OFC Installation** |  | 2026-02-26 | 2026-03-10 |  |  |  |
| A4690 |  | OFC Cable Pulling | 6d | 2026-02-26 | 2026-03-03 | A4680 | 33d | 0d |
| A4700 |  | Splicing | 4d | 2026-03-04 | 2026-03-07 | A4690 | 33d | 0d |
| A4710 |  | OFC Testing | 3d | 2026-03-08 | 2026-03-10 | A4700 | 33d | 13d |
|  | 4 | **Aerial GPON OFC** |  | 2026-03-09 | 2026-03-17 |  |  |  |
| A4720 |  | Pole Installation | 4d | 2026-03-09 | 2026-03-12 | A4370 | 26d | 0d |
| A4730 |  | Aerial OFC Laying | 3d | 2026-03-13 | 2026-03-15 | A4720 | 26d | 0d |
| A4740 |  | Termination & Testing | 2d | 2026-03-16 | 2026-03-17 | A4730 | 26d | 6d |
|  | 5 | **Network Connectivity** |  | 2026-03-24 | 2026-04-04 |  |  |  |
| A4750 |  | ISP Coordination | 5d | 2026-03-24 | 2026-03-28 | A4500, A4710, A4740 | 20d | 0d |
| A4760 |  | Site Connectivity Setup | 4d | 2026-03-29 | 2026-04-01 | A4510, A4520, A4750 | 20d | 0d |
| A4770 |  | Bandwidth Testing | 3d | 2026-04-02 | 2026-04-04 | A4760 | 20d | 0d |

| ID | WBS | Activity | Duration | Start | Finish | Predecessors | Total float | Free float |
| --- | --- | --- | --- | --- | --- | --- | --- | --- |
|  | 4 | **Control Room Development** |  | 2026-01-19 | 2026-02-26 |  |  |  |
|  | 1 | **Control Room Civil Works** |  | 2026-01-19 | 2026-02-06 |  |  |  |
| A4780 |  | Renovation Works | 8d | 2026-01-19 | 2026-01-26 |  | 46d | 0d |
| A4790 |  | Flooring & Ceiling | 6d | 2026-01-27 | 2026-02-01 | A4780 | 46d | 0d |
| A4800 |  | Painting & Finishing | 5d | 2026-02-02 | 2026-02-06 | A4790 | 46d | 0d |
|  | 2 | **Furniture & Fixtures** |  | 2026-02-07 | 2026-02-12 |  |  |  |
| A4810 |  | Workstations Installation | 4d | 2026-02-07 | 2026-02-10 | A4800 | 46d | 0d |
| A4820 |  | Chairs Installation | 2d | 2026-02-11 | 2026-02-12 | A4810 | 111d |  |
|  | 3 | **Network Equipment** |  | 2026-02-11 | 2026-02-19 |  |  |  |
| A4830 |  | Core Switch Installation | 3d | 2026-02-11 | 2026-02-13 | A4810 | 46d | 0d |
| A4840 |  | Network Switch Installation | 3d | 2026-02-14 | 2026-02-16 | A4830 | 46d | 0d |
| A4850 |  | Firewall Installation | 3d | 2026-02-17 | 2026-02-19 | A4840 | 46d | 0d |
|  | 4 | **Display Systems** |  | 2026-02-20 | 2026-02-26 |  |  |  |
| A4860 |  | Video Wall Installation | 4d | 2026-02-20 | 2026-02-23 | A4850 | 46d | 0d |
| A4870 |  | Monitoring Screen Installation | 3d | 2026-02-24 | 2026-02-26 | A4860 | 46d | 19d |
|  | 5 | **IT Systems, Servers & Software** |  | 2026-03-18 | 2026-04-28 |  |  |  |
|  | 1 | **Server & Storage Systems** |  | 2026-03-18 | 2026-03-28 |  |  |  |
| A4880 |  | SAN Storage Installation | 4d | 2026-03-18 | 2026-03-21 | A4480, A4870 | 27d | 0d |
| A4890 |  | HDD Installation | 3d | 2026-03-22 | 2026-03-24 | A4880 | 27d | 0d |
| A4900 |  | GPU Server Installation | 4d | 2026-03-25 | 2026-03-28 | A4890 | 27d | 7d |
|  | 2 | **VMS & AI Systems** |  | 2026-04-05 | 2026-04-17 |  |  |  |
| A4910 |  | VMS Installation | 5d | 2026-04-05 | 2026-04-09 | A4770, A4900 | 20d | 0d |
| A4920 |  | AI NVR Configuration | 4d | 2026-04-10 | 2026-04-13 | A4910 | 20d | 0d |
| A4930 |  | Analytics Configuration | 4d | 2026-04-14 | 2026-04-17 | A4920 | 20d | 0d |

| ID | WBS | Activity | Duration | Start | Finish | Predecessors | Total float | Free float |
| --- | --- | --- | --- | --- | --- | --- | --- | --- |
|  | 3 | **Software & Applications** |  | 2026-04-18 | 2026-04-22 |  |  |  |
| A4940 |  | PSCA HQ Integration | 5d | 2026-04-18 | 2026-04-22 | A4930 | 20d | 0d |
|  | 4 | **System Licensing** |  | 2026-04-23 | 2026-04-28 |  |  |  |
| A4950 |  | Camera Licenses | 3d | 2026-04-23 | 2026-04-25 | A4940 | 20d | 0d |
| A4960 |  | System Licenses | 3d | 2026-04-26 | 2026-04-28 | A4950 | 20d |  |
|  | 1 | **Khairpur Tamewali** |  | 2026-01-19 | 2026-05-08 |  |  |  |
|  | 1 | **Camera & Field Surveillance System** |  | 2026-02-18 | 2026-04-02 |  |  |  |
|  | 1 | **Camera Poles & Foundations** |  | 2026-02-18 | 2026-03-18 |  |  |  |
| A4970 |  | Survey & Marking | 4d | 2026-02-18 | 2026-02-21 | A1000 SS+30d | 10d | 0d |
| A4980 |  | Excavation | 6d | 2026-02-22 | 2026-02-27 | A4970 | 10d | 0d |
| A4990 |  | PCC | 3d | 2026-02-28 | 2026-03-02 | A4980 | 10d | 0d |
| A5000 |  | Foundation Concrete | 4d | 2026-03-03 | 2026-03-06 | A4990 | 10d | 0d |
| A5010 |  | Curing & Backfilling | 7d | 2026-03-07 | 2026-03-13 | A5000 | 10d | 0d |
| A5020 |  | Pole Erection | 5d | 2026-03-14 | 2026-03-18 | A5010 | 10d | 0d |
|  | 2 | **ANPR Poles & Foundations** |  | 2026-02-22 | 2026-03-02 |  |  |  |
| A5030 |  | Excavation & Foundation | 5d | 2026-02-22 | 2026-02-26 | A4970 | 28d | 0d |
| A5040 |  | Pole Installation | 4d | 2026-02-27 | 2026-03-02 | A5030 | 28d | 0d |
|  | 3 | **Power Cabinets for Camera & ANPR** |  | 2026-02-28 | 2026-03-11 |  |  |  |
| A5050 |  | Cabinet Foundation | 3d | 2026-02-28 | 2026-03-02 | A4980 | 28d | 0d |
| A5060 |  | Cabinet Installation | 4d | 2026-03-03 | 2026-03-06 | A5050 | 28d | 0d |
| A5070 |  | Internal Wiring | 5d | 2026-03-07 | 2026-03-11 | A5060 | 28d | 0d |
|  | 4 | **Camera Installation** |  | 2026-03-03 | 2026-03-24 |  |  |  |
| A5100 |  | ANPR Camera Installation | 4d | 2026-03-03 | 2026-03-06 | A5040 | 28d | 18d |
| A5080 |  | Fixed Camera Installation | 6d | 2026-03-19 | 2026-03-24 | A5020 | 10d | 0d |
| A5090 |  | PTZ Camera Installation | 5d | 2026-03-19 | 2026-03-23 | A5020 | 11d | 1d |
| A5110 |  | Strobe Light Installation | 3d | 2026-03-19 | 2026-03-21 | A5020 | 13d | 0d |

| ID | WBS | Activity | Duration | Start | Finish | Predecessors | Total float | Free float |
| --- | --- | --- | --- | --- | --- | --- | --- | --- |
|  | 5 | **Body Worn Camera System** |  | 2026-03-22 | 2026-03-27 |  |  |  |
| A5120 |  | Body Cameras Deployment | 3d | 2026-03-22 | 2026-03-24 | A5110 | 17d | 0d |
| A5130 |  | Dock & Storage Setup | 3d | 2026-03-25 | 2026-03-27 | A5120 | 17d | 0d |
|  | 6 | **Field Devices** |  | 2026-03-12 | 2026-03-14 |  |  |  |
| A5160 |  | Panic Button Installation | 3d | 2026-03-12 | 2026-03-14 | A5070 | 34d | 24d |
| A5170 |  | Attendance Device Installation | 3d | 2026-03-12 | 2026-03-14 | A5070 | 34d | 24d |
|  | 7 | **Field Equipment Configuration** |  | 2026-03-25 | 2026-04-02 |  |  |  |
| A5140 |  | Camera Addressing & Labeling | 5d | 2026-03-25 | 2026-03-29 | A5080, A5090, A5100, A5110 | 10d | 0d |
| A5150 |  | Initial Camera Testing | 4d | 2026-03-30 | 2026-04-02 | A5070, A5140 | 10d | 0d |
|  | 2 | **Power & Electrical Infrastructure** |  | 2026-03-07 | 2026-04-08 |  |  |  |
|  | 1 | **Power Supply Works** |  | 2026-03-07 | 2026-03-20 |  |  |  |
| A5180 |  | Power Cable Laying | 7d | 2026-03-07 | 2026-03-13 | A5060 | 40d | 0d |
| A5190 |  | Panel Installation | 4d | 2026-03-14 | 2026-03-17 | A5180 | 40d | 0d |
| A5200 |  | Earthing & Grounding | 3d | 2026-03-18 | 2026-03-20 | A5190 | 40d | 0d |
|  | 2 | **Backup Power Systems** |  | 2026-03-21 | 2026-03-31 |  |  |  |
| A5210 |  | UPS Installation | 3d | 2026-03-21 | 2026-03-23 | A5200 | 40d | 0d |
| A5220 |  | Battery Installation | 2d | 2026-03-24 | 2026-03-25 | A5210 | 40d | 0d |
| A5230 |  | Generator Installation | 4d | 2026-03-26 | 2026-03-29 | A5220 | 40d | 0d |
| A5240 |  | Generator Testing & Commissioning | 2d | 2026-03-30 | 2026-03-31 | A5230 | 40d | 0d |
|  | 3 | **Split AC Installation** |  | 2026-04-01 | 2026-04-08 |  |  |  |
| A5250 |  | AC Mounting | 3d | 2026-04-01 | 2026-04-03 | A5240 | 40d | 0d |
| A5260 |  | Electrical Connections | 3d | 2026-04-04 | 2026-04-06 | A5250 | 40d | 0d |
| A5270 |  | Testing | 2d | 2026-04-07 | 2026-04-08 | A5260 | 40d | 10d |
|  | 3 | **OFC, Network & Connectivity** |  | 2026-01-19 | 2026-04-14 |  |  |  |
|  | 1 | **OFC Route Survey & Design** |  | 2026-01-19 | 2026-01-27 |  |  |  |
| A5280 |  | Route Survey | 4d | 2026-01-19 | 2026-01-22 |  | 33d | 0d |
| A5290 |  | Design Approval | 5d | 2026-01-23 | 2026-01-27 | A5280 | 33d | 0d |

| ID | WBS | Activity | Duration | Start | Finish | Predecessors | Total float | Free float |
| --- | --- | --- | --- | --- | --- | --- | --- | --- |
|  | 2 | **OFC Civil Works** |  | 2026-01-28 | 2026-02-25 |  |  |  |
| A5300 |  | Trenching | 10d | 2026-01-28 | 2026-02-06 | A5290 | 33d | 0d |
| A5310 |  | Duct / Pipe Laying | 8d | 2026-02-07 | 2026-02-14 | A5300 | 33d | 0d |
| A5320 |  | Manhole Construction | 6d | 2026-02-15 | 2026-02-20 | A5310 | 33d | 0d |
| A5330 |  | Backfilling & Restoration | 5d | 2026-02-21 | 2026-02-25 | A5320 | 33d | 0d |
|  | 3 | **OFC Installation** |  | 2026-02-26 | 2026-03-10 |  |  |  |
| A5340 |  | OFC Cable Pulling | 6d | 2026-02-26 | 2026-03-03 | A5330 | 33d | 0d |
| A5350 |  | Splicing | 4d | 2026-03-04 | 2026-03-07 | A5340 | 33d | 0d |
| A5360 |  | OFC Testing | 3d | 2026-03-08 | 2026-03-10 | A5350 | 33d | 23d |
|  | 4 | **Aerial GPON OFC** |  | 2026-03-19 | 2026-03-27 |  |  |  |
| A5370 |  | Pole Installation | 4d | 2026-03-19 | 2026-03-22 | A5020 | 16d | 0d |
| A5380 |  | Aerial OFC Laying | 3d | 2026-03-23 | 2026-03-25 | A5370 | 16d | 0d |
| A5390 |  | Termination & Testing | 2d | 2026-03-26 | 2026-03-27 | A5380 | 16d | 6d |
|  | 5 | **Network Connectivity** |  | 2026-04-03 | 2026-04-14 |  |  |  |
| A5400 |  | ISP Coordination | 5d | 2026-04-03 | 2026-04-07 | A5150, A5360, A5390 | 10d | 0d |
| A5410 |  | Site Connectivity Setup | 4d | 2026-04-08 | 2026-04-11 | A5160, A5170, A5400 | 10d | 0d |
| A5420 |  | Bandwidth Testing | 3d | 2026-04-12 | 2026-04-14 | A5410 | 10d | 0d |
|  | 4 | **Control Room Development** |  | 2026-01-19 | 2026-02-26 |  |  |  |
|  | 1 | **Control Room Civil Works** |  | 2026-01-19 | 2026-02-06 |  |  |  |
| A5430 |  | Renovation Works | 8d | 2026-01-19 | 2026-01-26 |  | 46d | 0d |
| A5440 |  | Flooring & Ceiling | 6d | 2026-01-27 | 2026-02-01 | A5430 | 46d | 0d |
| A5450 |  | Painting & Finishing | 5d | 2026-02-02 | 2026-02-06 | A5440 | 46d | 0d |
|  | 2 | **Furniture & Fixtures** |  | 2026-02-07 | 2026-02-12 |  |  |  |
| A5460 |  | Workstations Installation | 4d | 2026-02-07 | 2026-02-10 | A5450 | 46d | 0d |
| A5470 |  | Chairs Installation | 2d | 2026-02-11 | 2026-02-12 | A5460 | 111d |  |

| ID | WBS | Activity | Duration | Start | Finish | Predecessors | Total float | Free float |
| --- | --- | --- | --- | --- | --- | --- | --- | --- |
|  | 3 | **Network Equipment** |  | 2026-02-11 | 2026-02-19 |  |  |  |
| A5480 |  | Core Switch Installation | 3d | 2026-02-11 | 2026-02-13 | A5460 | 46d | 0d |
| A5490 |  | Network Switch Installation | 3d | 2026-02-14 | 2026-02-16 | A5480 | 46d | 0d |
| A5500 |  | Firewall Installation | 3d | 2026-02-17 | 2026-02-19 | A5490 | 46d | 0d |
|  | 4 | **Display Systems** |  | 2026-02-20 | 2026-02-26 |  |  |  |
| A5510 |  | Video Wall Installation | 4d | 2026-02-20 | 2026-02-23 | A5500 | 46d | 0d |
| A5520 |  | Monitoring Screen Installation | 3d | 2026-02-24 | 2026-02-26 | A5510 | 46d | 29d |
|  | 5 | **IT Systems, Servers & Software** |  | 2026-03-28 | 2026-05-08 |  |  |  |
|  | 1 | **Server & Storage Systems** |  | 2026-03-28 | 2026-04-07 |  |  |  |
| A5530 |  | SAN Storage Installation | 4d | 2026-03-28 | 2026-03-31 | A5130, A5520 | 17d | 0d |
| A5540 |  | HDD Installation | 3d | 2026-04-01 | 2026-04-03 | A5530 | 17d | 0d |
| A5550 |  | GPU Server Installation | 4d | 2026-04-04 | 2026-04-07 | A5540 | 17d | 7d |
|  | 2 | **VMS & AI Systems** |  | 2026-04-15 | 2026-04-27 |  |  |  |
| A5560 |  | VMS Installation | 5d | 2026-04-15 | 2026-04-19 | A5420, A5550 | 10d | 0d |
| A5570 |  | AI NVR Configuration | 4d | 2026-04-20 | 2026-04-23 | A5560 | 10d | 0d |
| A5580 |  | Analytics Configuration | 4d | 2026-04-24 | 2026-04-27 | A5570 | 10d | 0d |
|  | 3 | **Software & Applications** |  | 2026-04-28 | 2026-05-02 |  |  |  |
| A5590 |  | PSCA HQ Integration | 5d | 2026-04-28 | 2026-05-02 | A5580 | 10d | 0d |
|  | 4 | **System Licensing** |  | 2026-05-03 | 2026-05-08 |  |  |  |
| A5600 |  | Camera Licenses | 3d | 2026-05-03 | 2026-05-05 | A5590 | 10d | 0d |
| A5610 |  | System Licenses | 3d | 2026-05-06 | 2026-05-08 | A5600 | 10d |  |
|  | 2 | **Yazman** |  | 2026-01-19 | 2026-05-18 |  |  |  |
|  | 1 | **Camera & Field Surveillance System** |  | 2026-02-28 | 2026-04-12 |  |  |  |
|  | 1 | **Camera Poles & Foundations** |  | 2026-02-28 | 2026-03-28 |  |  |  |
| A5620 |  | Survey & Marking | 4d | 2026-02-28 | 2026-03-03 | A1000 SS+40d | 0d |  |
| A5630 |  | Excavation | 6d | 2026-03-04 | 2026-03-09 | A5620 | 0d |  |
| A5640 |  | PCC | 3d | 2026-03-10 | 2026-03-12 | A5630 | 0d |  |
| A5650 |  | Foundation Concrete | 4d | 2026-03-13 | 2026-03-16 | A5640 | 0d |  |
| A5660 |  | Curing & Backfilling | 7d | 2026-03-17 | 2026-03-23 | A5650 | 0d |  |
| A5670 |  | Pole Erection | 5d | 2026-03-24 | 2026-03-28 | A5660 | 0d |  |

| ID | WBS | Activity | Duration | Start | Finish | Predecessors | Total float | Free float |
| --- | --- | --- | --- | --- | --- | --- | --- | --- |
|  | 2 | **ANPR Poles & Foundations** |  | 2026-03-04 | 2026-03-12 |  |  |  |
| A5680 |  | Excavation & Foundation | 5d | 2026-03-04 | 2026-03-08 | A5620 | 18d | 0d |
| A5690 |  | Pole Installation | 4d | 2026-03-09 | 2026-03-12 | A5680 | 18d | 0d |
|  | 3 | **Power Cabinets for Camera & ANPR** |  | 2026-03-10 | 2026-03-21 |  |  |  |
| A5700 |  | Cabinet Foundation | 3d | 2026-03-10 | 2026-03-12 | A5630 | 18d | 0d |
| A5710 |  | Cabinet Installation | 4d | 2026-03-13 | 2026-03-16 | A5700 | 18d | 0d |
| A5720 |  | Internal Wiring | 5d | 2026-03-17 | 2026-03-21 | A5710 | 18d | 0d |
|  | 4 | **Camera Installation** |  | 2026-03-13 | 2026-04-03 |  |  |  |
| A5750 |  | ANPR Camera Installation | 4d | 2026-03-13 | 2026-03-16 | A5690 | 18d |  |
| A5730 |  | Fixed Camera Installation | 6d | 2026-03-29 | 2026-04-03 | A5670 | 0d |  |
| A5740 |  | PTZ Camera Installation | 5d | 2026-03-29 | 2026-04-02 | A5670 | 1d |  |
| A5760 |  | Strobe Light Installation | 3d | 2026-03-29 | 2026-03-31 | A5670 | 3d | 0d |
|  | 5 | **Body Worn Camera System** |  | 2026-04-01 | 2026-04-06 |  |  |  |
| A5770 |  | Body Cameras Deployment | 3d | 2026-04-01 | 2026-04-03 | A5760 | 7d | 0d |
| A5780 |  | Dock & Storage Setup | 3d | 2026-04-04 | 2026-04-06 | A5770 | 7d | 0d |
|  | 6 | **Field Devices** |  | 2026-03-22 | 2026-03-24 |  |  |  |
| A5810 |  | Panic Button Installation | 3d | 2026-03-22 | 2026-03-24 | A5720 | 24d |  |
| A5820 |  | Attendance Device Installation | 3d | 2026-03-22 | 2026-03-24 | A5720 | 24d |  |
|  | 7 | **Field Equipment Configuration** |  | 2026-04-04 | 2026-04-12 |  |  |  |
| A5790 |  | Camera Addressing & Labeling | 5d | 2026-04-04 | 2026-04-08 | A5730, A5740, A5750, A5760 | 0d |  |
| A5800 |  | Initial Camera Testing | 4d | 2026-04-09 | 2026-04-12 | A5720, A5790 | 0d |  |
|  | 2 | **Power & Electrical Infrastructure** |  | 2026-03-17 | 2026-04-18 |  |  |  |
|  | 1 | **Power Supply Works** |  | 2026-03-17 | 2026-03-30 |  |  |  |
| A5830 |  | Power Cable Laying | 7d | 2026-03-17 | 2026-03-23 | A5710 | 30d | 0d |
| A5840 |  | Panel Installation | 4d | 2026-03-24 | 2026-03-27 | A5830 | 30d | 0d |
| A5850 |  | Earthing & Grounding | 3d | 2026-03-28 | 2026-03-30 | A5840 | 30d | 0d |

| ID | WBS | Activity | Duration | Start | Finish | Predecessors | Total float | Free float |
| --- | --- | --- | --- | --- | --- | --- | --- | --- |
|  | 2 | **Backup Power Systems** |  | 2026-03-31 | 2026-04-10 |  |  |  |
| A5860 |  | UPS Installation | 3d | 2026-03-31 | 2026-04-02 | A5850 | 30d | 0d |
| A5870 |  | Battery Installation | 2d | 2026-04-03 | 2026-04-04 | A5860 | 30d | 0d |
| A5880 |  | Generator Installation | 4d | 2026-04-05 | 2026-04-08 | A5870 | 30d | 0d |
| A5890 |  | Generator Testing & Commissioning | 2d | 2026-04-09 | 2026-04-10 | A5880 | 30d | 0d |
|  | 3 | **Split AC Installation** |  | 2026-04-11 | 2026-04-18 |  |  |  |
| A5900 |  | AC Mounting | 3d | 2026-04-11 | 2026-04-13 | A5890 | 30d | 0d |
| A5910 |  | Electrical Connections | 3d | 2026-04-14 | 2026-04-16 | A5900 | 30d | 0d |
| A5920 |  | Testing | 2d | 2026-04-17 | 2026-04-18 | A5910 | 30d | 0d |
|  | 3 | **OFC, Network & Connectivity** |  | 2026-01-19 | 2026-04-24 |  |  |  |
|  | 1 | **OFC Route Survey & Design** |  | 2026-01-19 | 2026-01-27 |  |  |  |
| A5930 |  | Route Survey | 4d | 2026-01-19 | 2026-01-22 |  | 33d | 0d |
| A5940 |  | Design Approval | 5d | 2026-01-23 | 2026-01-27 | A5930 | 33d | 0d |
|  | 2 | **OFC Civil Works** |  | 2026-01-28 | 2026-02-25 |  |  |  |
| A5950 |  | Trenching | 10d | 2026-01-28 | 2026-02-06 | A5940 | 33d | 0d |
| A5960 |  | Duct / Pipe Laying | 8d | 2026-02-07 | 2026-02-14 | A5950 | 33d | 0d |
| A5970 |  | Manhole Construction | 6d | 2026-02-15 | 2026-02-20 | A5960 | 33d | 0d |
| A5980 |  | Backfilling & Restoration | 5d | 2026-02-21 | 2026-02-25 | A5970 | 33d | 0d |
|  | 3 | **OFC Installation** |  | 2026-02-26 | 2026-03-10 |  |  |  |
| A5990 |  | OFC Cable Pulling | 6d | 2026-02-26 | 2026-03-03 | A5980 | 33d | 0d |
| A6000 |  | Splicing | 4d | 2026-03-04 | 2026-03-07 | A5990 | 33d | 0d |
| A6010 |  | OFC Testing | 3d | 2026-03-08 | 2026-03-10 | A6000 | 33d |  |
|  | 4 | **Aerial GPON OFC** |  | 2026-03-29 | 2026-04-06 |  |  |  |
| A6020 |  | Pole Installation | 4d | 2026-03-29 | 2026-04-01 | A5670 | 6d | 0d |
| A6030 |  | Aerial OFC Laying | 3d | 2026-04-02 | 2026-04-04 | A6020 | 6d | 0d |
| A6040 |  | Termination & Testing | 2d | 2026-04-05 | 2026-04-06 | A6030 | 6d |  |

| ID | WBS | Activity | Duration | Start | Finish | Predecessors | Total float | Free float |
| --- | --- | --- | --- | --- | --- | --- | --- | --- |
|  | 5 | **Network Connectivity** |  | 2026-04-13 | 2026-04-24 |  |  |  |
| A6050 |  | ISP Coordination | 5d | 2026-04-13 | 2026-04-17 | A5800, A6010, A6040 | 0d |  |
| A6060 |  | Site Connectivity Setup | 4d | 2026-04-18 | 2026-04-21 | A5810, A5820, A6050 | 0d |  |
| A6070 |  | Bandwidth Testing | 3d | 2026-04-22 | 2026-04-24 | A6060 | 0d |  |
|  | 4 | **Control Room Development** |  | 2026-01-19 | 2026-02-26 |  |  |  |
|  | 1 | **Control Room Civil Works** |  | 2026-01-19 | 2026-02-06 |  |  |  |
| A6080 |  | Renovation Works | 8d | 2026-01-19 | 2026-01-26 |  | 46d | 0d |
| A6090 |  | Flooring & Ceiling | 6d | 2026-01-27 | 2026-02-01 | A6080 | 46d | 0d |
| A6100 |  | Painting & Finishing | 5d | 2026-02-02 | 2026-02-06 | A6090 | 46d | 0d |
|  | 2 | **Furniture & Fixtures** |  | 2026-02-07 | 2026-02-12 |  |  |  |
| A6110 |  | Workstations Installation | 4d | 2026-02-07 | 2026-02-10 | A6100 | 46d | 0d |
| A6120 |  | Chairs Installation | 2d | 2026-02-11 | 2026-02-12 | A6110 | 111d |  |
|  | 3 | **Network Equipment** |  | 2026-02-11 | 2026-02-19 |  |  |  |
| A6130 |  | Core Switch Installation | 3d | 2026-02-11 | 2026-02-13 | A6110 | 46d | 0d |
| A6140 |  | Network Switch Installation | 3d | 2026-02-14 | 2026-02-16 | A6130 | 46d | 0d |
| A6150 |  | Firewall Installation | 3d | 2026-02-17 | 2026-02-19 | A6140 | 46d | 0d |
|  | 4 | **Display Systems** |  | 2026-02-20 | 2026-02-26 |  |  |  |
| A6160 |  | Video Wall Installation | 4d | 2026-02-20 | 2026-02-23 | A6150 | 46d | 0d |
| A6170 |  | Monitoring Screen Installation | 3d | 2026-02-24 | 2026-02-26 | A6160 | 46d | 39d |
|  | 5 | **IT Systems, Servers & Software** |  | 2026-04-07 | 2026-05-18 |  |  |  |
|  | 1 | **Server & Storage Systems** |  | 2026-04-07 | 2026-04-17 |  |  |  |
| A6180 |  | SAN Storage Installation | 4d | 2026-04-07 | 2026-04-10 | A5780, A6170 | 7d | 0d |
| A6190 |  | HDD Installation | 3d | 2026-04-11 | 2026-04-13 | A6180 | 7d | 0d |
| A6200 |  | GPU Server Installation | 4d | 2026-04-14 | 2026-04-17 | A6190 | 7d |  |

| ID | WBS | Activity | Duration | Start | Finish | Predecessors | Total float | Free float |
| --- | --- | --- | --- | --- | --- | --- | --- | --- |
|  | 2 | **VMS & AI Systems** |  | 2026-04-25 | 2026-05-07 |  |  |  |
| A6210 |  | VMS Installation | 5d | 2026-04-25 | 2026-04-29 | A6070, A6200 | 0d |  |
| A6220 |  | AI NVR Configuration | 4d | 2026-04-30 | 2026-05-03 | A6210 | 0d |  |
| A6230 |  | Analytics Configuration | 4d | 2026-05-04 | 2026-05-07 | A6220 | 0d |  |
|  | 3 | **Software & Applications** |  | 2026-05-08 | 2026-05-12 |  |  |  |
| A6240 |  | PSCA HQ Integration | 5d | 2026-05-08 | 2026-05-12 | A6230 | 0d |  |
|  | 4 | **System Licensing** |  | 2026-05-13 | 2026-05-18 |  |  |  |
| A6250 |  | Camera Licenses | 3d | 2026-05-13 | 2026-05-15 | A6240 | 0d |  |
| A6260 |  | System Licenses | 3d | 2026-05-16 | 2026-05-18 | A6250 | 0d |  |
|  | 3 | **Rahim Yar Khan** |  | 2026-01-19 | 2026-05-18 |  |  |  |
|  | 3 | **Khanpur** |  | 2026-01-19 | 2026-04-15 |  |  |  |
|  | 1 | **Camera & Field Surveillance System** |  | 2026-01-19 | 2026-03-03 |  |  |  |
|  | 1 | **Camera Poles & Foundations** |  | 2026-01-19 | 2026-02-16 |  |  |  |
| A6270 |  | Survey & Marking | 4d | 2026-01-19 | 2026-01-22 | A1000 SS | 40d | 0d |
| A6280 |  | Excavation | 6d | 2026-01-23 | 2026-01-28 | A6270 | 40d | 0d |
| A6290 |  | PCC | 3d | 2026-01-29 | 2026-01-31 | A6280 | 40d | 0d |
| A6300 |  | Foundation Concrete | 4d | 2026-02-01 | 2026-02-04 | A6290 | 40d | 0d |
| A6310 |  | Curing & Backfilling | 7d | 2026-02-05 | 2026-02-11 | A6300 | 40d | 0d |
| A6320 |  | Pole Erection | 5d | 2026-02-12 | 2026-02-16 | A6310 | 40d | 0d |
|  | 2 | **ANPR Poles & Foundations** |  | 2026-01-23 | 2026-01-31 |  |  |  |
| A6330 |  | Excavation & Foundation | 5d | 2026-01-23 | 2026-01-27 | A6270 | 58d | 0d |
| A6340 |  | Pole Installation | 4d | 2026-01-28 | 2026-01-31 | A6330 | 58d | 0d |
|  | 3 | **Power Cabinets for Camera & ANPR** |  | 2026-01-29 | 2026-02-09 |  |  |  |
| A6350 |  | Cabinet Foundation | 3d | 2026-01-29 | 2026-01-31 | A6280 | 58d | 0d |
| A6360 |  | Cabinet Installation | 4d | 2026-02-01 | 2026-02-04 | A6350 | 58d | 0d |
| A6370 |  | Internal Wiring | 5d | 2026-02-05 | 2026-02-09 | A6360 | 58d | 0d |

| ID | WBS | Activity | Duration | Start | Finish | Predecessors | Total float | Free float |
| --- | --- | --- | --- | --- | --- | --- | --- | --- |
|  | 4 | **Camera Installation** |  | 2026-02-01 | 2026-02-22 |  |  |  |
| A6400 |  | ANPR Camera Installation | 4d | 2026-02-01 | 2026-02-04 | A6340 | 58d | 18d |
| A6380 |  | Fixed Camera Installation | 6d | 2026-02-17 | 2026-02-22 | A6320 | 40d | 0d |
| A6390 |  | PTZ Camera Installation | 5d | 2026-02-17 | 2026-02-21 | A6320 | 41d | 1d |
| A6410 |  | Strobe Light Installation | 3d | 2026-02-17 | 2026-02-19 | A6320 | 43d | 0d |
|  | 5 | **Body Worn Camera System** |  | 2026-02-20 | 2026-02-25 |  |  |  |
| A6420 |  | Body Cameras Deployment | 3d | 2026-02-20 | 2026-02-22 | A6410 | 47d | 0d |
| A6430 |  | Dock & Storage Setup | 3d | 2026-02-23 | 2026-02-25 | A6420 | 47d | 1d |
|  | 6 | **Field Devices** |  | 2026-02-10 | 2026-02-12 |  |  |  |
| A6460 |  | Panic Button Installation | 3d | 2026-02-10 | 2026-02-12 | A6370 | 64d | 31d |
| A6470 |  | Attendance Device Installation | 3d | 2026-02-10 | 2026-02-12 | A6370 | 64d | 31d |
|  | 7 | **Field Equipment Configuration** |  | 2026-02-23 | 2026-03-03 |  |  |  |
| A6440 |  | Camera Addressing & Labeling | 5d | 2026-02-23 | 2026-02-27 | A6380, A6390, A6400, A6410 | 40d | 0d |
| A6450 |  | Initial Camera Testing | 4d | 2026-02-28 | 2026-03-03 | A6370, A6440 | 40d | 7d |
|  | 2 | **Power & Electrical Infrastructure** |  | 2026-02-05 | 2026-03-09 |  |  |  |
|  | 1 | **Power Supply Works** |  | 2026-02-05 | 2026-02-18 |  |  |  |
| A6480 |  | Power Cable Laying | 7d | 2026-02-05 | 2026-02-11 | A6360 | 70d | 0d |
| A6490 |  | Panel Installation | 4d | 2026-02-12 | 2026-02-15 | A6480 | 70d | 0d |
| A6500 |  | Earthing & Grounding | 3d | 2026-02-16 | 2026-02-18 | A6490 | 70d | 0d |
|  | 2 | **Backup Power Systems** |  | 2026-02-19 | 2026-03-01 |  |  |  |
| A6510 |  | UPS Installation | 3d | 2026-02-19 | 2026-02-21 | A6500 | 70d | 0d |
| A6520 |  | Battery Installation | 2d | 2026-02-22 | 2026-02-23 | A6510 | 70d | 0d |
| A6530 |  | Generator Installation | 4d | 2026-02-24 | 2026-02-27 | A6520 | 70d | 0d |
| A6540 |  | Generator Testing & Commissioning | 2d | 2026-02-28 | 2026-03-01 | A6530 | 70d | 0d |

| ID | WBS | Activity | Duration | Start | Finish | Predecessors | Total float | Free float |
| --- | --- | --- | --- | --- | --- | --- | --- | --- |
|  | 3 | **Split AC Installation** |  | 2026-03-02 | 2026-03-09 |  |  |  |
| A6550 |  | AC Mounting | 3d | 2026-03-02 | 2026-03-04 | A6540 | 70d | 0d |
| A6560 |  | Electrical Connections | 3d | 2026-03-05 | 2026-03-07 | A6550 | 70d | 0d |
| A6570 |  | Testing | 2d | 2026-03-08 | 2026-03-09 | A6560 | 70d | 40d |
|  | 3 | **OFC, Network & Connectivity** |  | 2026-01-19 | 2026-03-22 |  |  |  |
|  | 1 | **OFC Route Survey & Design** |  | 2026-01-19 | 2026-01-27 |  |  |  |
| A6580 |  | Route Survey | 4d | 2026-01-19 | 2026-01-22 |  | 33d | 0d |
| A6590 |  | Design Approval | 5d | 2026-01-23 | 2026-01-27 | A6580 | 33d | 0d |
|  | 2 | **OFC Civil Works** |  | 2026-01-28 | 2026-02-25 |  |  |  |
| A6600 |  | Trenching | 10d | 2026-01-28 | 2026-02-06 | A6590 | 33d | 0d |
| A6610 |  | Duct / Pipe Laying | 8d | 2026-02-07 | 2026-02-14 | A6600 | 33d | 0d |
| A6620 |  | Manhole Construction | 6d | 2026-02-15 | 2026-02-20 | A6610 | 33d | 0d |
| A6630 |  | Backfilling & Restoration | 5d | 2026-02-21 | 2026-02-25 | A6620 | 33d | 0d |
|  | 3 | **OFC Installation** |  | 2026-02-26 | 2026-03-10 |  |  |  |
| A6640 |  | OFC Cable Pulling | 6d | 2026-02-26 | 2026-03-03 | A6630 | 33d | 0d |
| A6650 |  | Splicing | 4d | 2026-03-04 | 2026-03-07 | A6640 | 33d | 0d |
| A6660 |  | OFC Testing | 3d | 2026-03-08 | 2026-03-10 | A6650 | 33d | 0d |
|  | 4 | **Aerial GPON OFC** |  | 2026-02-17 | 2026-02-25 |  |  |  |
| A6670 |  | Pole Installation | 4d | 2026-02-17 | 2026-02-20 | A6320 | 46d | 0d |
| A6680 |  | Aerial OFC Laying | 3d | 2026-02-21 | 2026-02-23 | A6670 | 46d | 0d |
| A6690 |  | Termination & Testing | 2d | 2026-02-24 | 2026-02-25 | A6680 | 46d | 13d |
|  | 5 | **Network Connectivity** |  | 2026-03-11 | 2026-03-22 |  |  |  |
| A6700 |  | ISP Coordination | 5d | 2026-03-11 | 2026-03-15 | A6450, A6660, A6690 | 33d | 0d |
| A6710 |  | Site Connectivity Setup | 4d | 2026-03-16 | 2026-03-19 | A6460, A6470, A6700 | 33d | 0d |
| A6720 |  | Bandwidth Testing | 3d | 2026-03-20 | 2026-03-22 | A6710 | 33d | 0d |

| ID | WBS | Activity | Duration | Start | Finish | Predecessors | Total float | Free float |
| --- | --- | --- | --- | --- | --- | --- | --- | --- |
|  | 4 | **Control Room Development** |  | 2026-01-19 | 2026-02-26 |  |  |  |
|  | 1 | **Control Room Civil Works** |  | 2026-01-19 | 2026-02-06 |  |  |  |
| A6730 |  | Renovation Works | 8d | 2026-01-19 | 2026-01-26 |  | 46d | 0d |
| A6740 |  | Flooring & Ceiling | 6d | 2026-01-27 | 2026-02-01 | A6730 | 46d | 0d |
| A6750 |  | Painting & Finishing | 5d | 2026-02-02 | 2026-02-06 | A6740 | 46d | 0d |
|  | 2 | **Furniture & Fixtures** |  | 2026-02-07 | 2026-02-12 |  |  |  |
| A6760 |  | Workstations Installation | 4d | 2026-02-07 | 2026-02-10 | A6750 | 46d | 0d |
| A6770 |  | Chairs Installation | 2d | 2026-02-11 | 2026-02-12 | A6760 | 111d |  |
|  | 3 | **Network Equipment** |  | 2026-02-11 | 2026-02-19 |  |  |  |
| A6780 |  | Core Switch Installation | 3d | 2026-02-11 | 2026-02-13 | A6760 | 46d | 0d |
| A6790 |  | Network Switch Installation | 3d | 2026-02-14 | 2026-02-16 | A6780 | 46d | 0d |
| A6800 |  | Firewall Installation | 3d | 2026-02-17 | 2026-02-19 | A6790 | 46d | 0d |
|  | 4 | **Display Systems** |  | 2026-02-20 | 2026-02-26 |  |  |  |
| A6810 |  | Video Wall Installation | 4d | 2026-02-20 | 2026-02-23 | A6800 | 46d | 0d |
| A6820 |  | Monitoring Screen Installation | 3d | 2026-02-24 | 2026-02-26 | A6810 | 46d | 0d |
|  | 5 | **IT Systems, Servers & Software** |  | 2026-02-27 | 2026-04-15 |  |  |  |
|  | 1 | **Server & Storage Systems** |  | 2026-02-27 | 2026-03-09 |  |  |  |
| A6830 |  | SAN Storage Installation | 4d | 2026-02-27 | 2026-03-02 | A6430, A6820 | 46d | 0d |
| A6840 |  | HDD Installation | 3d | 2026-03-03 | 2026-03-05 | A6830 | 46d | 0d |
| A6850 |  | GPU Server Installation | 4d | 2026-03-06 | 2026-03-09 | A6840 | 46d | 13d |
|  | 2 | **VMS & AI Systems** |  | 2026-03-23 | 2026-04-04 |  |  |  |
| A6860 |  | VMS Installation | 5d | 2026-03-23 | 2026-03-27 | A6720, A6850 | 33d | 0d |
| A6870 |  | AI NVR Configuration | 4d | 2026-03-28 | 2026-03-31 | A6860 | 33d | 0d |
| A6880 |  | Analytics Configuration | 4d | 2026-04-01 | 2026-04-04 | A6870 | 33d | 0d |

| ID | WBS | Activity | Duration | Start | Finish | Predecessors | Total float | Free float |
| --- | --- | --- | --- | --- | --- | --- | --- | --- |
|  | 3 | **Software & Applications** |  | 2026-04-05 | 2026-04-09 |  |  |  |
| A6890 |  | PSCA HQ Integration | 5d | 2026-04-05 | 2026-04-09 | A6880 | 33d | 0d |
|  | 4 | **System Licensing** |  | 2026-04-10 | 2026-04-15 |  |  |  |
| A6900 |  | Camera Licenses | 3d | 2026-04-10 | 2026-04-12 | A6890 | 33d | 0d |
| A6910 |  | System Licenses | 3d | 2026-04-13 | 2026-04-15 | A6900 | 33d |  |
|  | 4 | **Liaquatpur** |  | 2026-01-19 | 2026-04-28 |  |  |  |
|  | 1 | **Camera & Field Surveillance System** |  | 2026-02-08 | 2026-03-23 |  |  |  |
|  | 1 | **Camera Poles & Foundations** |  | 2026-02-08 | 2026-03-08 |  |  |  |
| A6920 |  | Survey & Marking | 4d | 2026-02-08 | 2026-02-11 | A1000 SS+20d | 20d | 0d |
| A6930 |  | Excavation | 6d | 2026-02-12 | 2026-02-17 | A6920 | 20d | 0d |
| A6940 |  | PCC | 3d | 2026-02-18 | 2026-02-20 | A6930 | 20d | 0d |
| A6950 |  | Foundation Concrete | 4d | 2026-02-21 | 2026-02-24 | A6940 | 20d | 0d |
| A6960 |  | Curing & Backfilling | 7d | 2026-02-25 | 2026-03-03 | A6950 | 20d | 0d |
| A6970 |  | Pole Erection | 5d | 2026-03-04 | 2026-03-08 | A6960 | 20d | 0d |
|  | 2 | **ANPR Poles & Foundations** |  | 2026-02-12 | 2026-02-20 |  |  |  |
| A6980 |  | Excavation & Foundation | 5d | 2026-02-12 | 2026-02-16 | A6920 | 38d | 0d |
| A6990 |  | Pole Installation | 4d | 2026-02-17 | 2026-02-20 | A6980 | 38d | 0d |
|  | 3 | **Power Cabinets for Camera & ANPR** |  | 2026-02-18 | 2026-03-01 |  |  |  |
| A7000 |  | Cabinet Foundation | 3d | 2026-02-18 | 2026-02-20 | A6930 | 38d | 0d |
| A7010 |  | Cabinet Installation | 4d | 2026-02-21 | 2026-02-24 | A7000 | 38d | 0d |
| A7020 |  | Internal Wiring | 5d | 2026-02-25 | 2026-03-01 | A7010 | 38d | 0d |
|  | 4 | **Camera Installation** |  | 2026-02-21 | 2026-03-14 |  |  |  |
| A7050 |  | ANPR Camera Installation | 4d | 2026-02-21 | 2026-02-24 | A6990 | 38d | 18d |
| A7030 |  | Fixed Camera Installation | 6d | 2026-03-09 | 2026-03-14 | A6970 | 20d | 0d |
| A7040 |  | PTZ Camera Installation | 5d | 2026-03-09 | 2026-03-13 | A6970 | 21d | 1d |
| A7060 |  | Strobe Light Installation | 3d | 2026-03-09 | 2026-03-11 | A6970 | 23d | 0d |

| ID | WBS | Activity | Duration | Start | Finish | Predecessors | Total float | Free float |
| --- | --- | --- | --- | --- | --- | --- | --- | --- |
|  | 5 | **Body Worn Camera System** |  | 2026-03-12 | 2026-03-17 |  |  |  |
| A7070 |  | Body Cameras Deployment | 3d | 2026-03-12 | 2026-03-14 | A7060 | 27d | 0d |
| A7080 |  | Dock & Storage Setup | 3d | 2026-03-15 | 2026-03-17 | A7070 | 27d | 0d |
|  | 6 | **Field Devices** |  | 2026-03-02 | 2026-03-04 |  |  |  |
| A7110 |  | Panic Button Installation | 3d | 2026-03-02 | 2026-03-04 | A7020 | 44d | 24d |
| A7120 |  | Attendance Device Installation | 3d | 2026-03-02 | 2026-03-04 | A7020 | 44d | 24d |
|  | 7 | **Field Equipment Configuration** |  | 2026-03-15 | 2026-03-23 |  |  |  |
| A7090 |  | Camera Addressing & Labeling | 5d | 2026-03-15 | 2026-03-19 | A7030, A7040, A7050, A7060 | 20d | 0d |
| A7100 |  | Initial Camera Testing | 4d | 2026-03-20 | 2026-03-23 | A7020, A7090 | 20d | 0d |
|  | 2 | **Power & Electrical Infrastructure** |  | 2026-02-25 | 2026-03-29 |  |  |  |
|  | 1 | **Power Supply Works** |  | 2026-02-25 | 2026-03-10 |  |  |  |
| A7130 |  | Power Cable Laying | 7d | 2026-02-25 | 2026-03-03 | A7010 | 50d | 0d |
| A7140 |  | Panel Installation | 4d | 2026-03-04 | 2026-03-07 | A7130 | 50d | 0d |
| A7150 |  | Earthing & Grounding | 3d | 2026-03-08 | 2026-03-10 | A7140 | 50d | 0d |
|  | 2 | **Backup Power Systems** |  | 2026-03-11 | 2026-03-21 |  |  |  |
| A7160 |  | UPS Installation | 3d | 2026-03-11 | 2026-03-13 | A7150 | 50d | 0d |
| A7170 |  | Battery Installation | 2d | 2026-03-14 | 2026-03-15 | A7160 | 50d | 0d |
| A7180 |  | Generator Installation | 4d | 2026-03-16 | 2026-03-19 | A7170 | 50d | 0d |
| A7190 |  | Generator Testing & Commissioning | 2d | 2026-03-20 | 2026-03-21 | A7180 | 50d | 0d |
|  | 3 | **Split AC Installation** |  | 2026-03-22 | 2026-03-29 |  |  |  |
| A7200 |  | AC Mounting | 3d | 2026-03-22 | 2026-03-24 | A7190 | 50d | 0d |
| A7210 |  | Electrical Connections | 3d | 2026-03-25 | 2026-03-27 | A7200 | 50d | 0d |
| A7220 |  | Testing | 2d | 2026-03-28 | 2026-03-29 | A7210 | 50d | 20d |
|  | 3 | **OFC, Network & Connectivity** |  | 2026-01-19 | 2026-04-04 |  |  |  |
|  | 1 | **OFC Route Survey & Design** |  | 2026-01-19 | 2026-01-27 |  |  |  |
| A7230 |  | Route Survey | 4d | 2026-01-19 | 2026-01-22 |  | 33d | 0d |
| A7240 |  | Design Approval | 5d | 2026-01-23 | 2026-01-27 | A7230 | 33d | 0d |

| ID | WBS | Activity | Duration | Start | Finish | Predecessors | Total float | Free float |
| --- | --- | --- | --- | --- | --- | --- | --- | --- |
|  | 2 | **OFC Civil Works** |  | 2026-01-28 | 2026-02-25 |  |  |  |
| A7250 |  | Trenching | 10d | 2026-01-28 | 2026-02-06 | A7240 | 33d | 0d |
| A7260 |  | Duct / Pipe Laying | 8d | 2026-02-07 | 2026-02-14 | A7250 | 33d | 0d |
| A7270 |  | Manhole Construction | 6d | 2026-02-15 | 2026-02-20 | A7260 | 33d | 0d |
| A7280 |  | Backfilling & Restoration | 5d | 2026-02-21 | 2026-02-25 | A7270 | 33d | 0d |
|  | 3 | **OFC Installation** |  | 2026-02-26 | 2026-03-10 |  |  |  |
| A7290 |  | OFC Cable Pulling | 6d | 2026-02-26 | 2026-03-03 | A7280 | 33d | 0d |
| A7300 |  | Splicing | 4d | 2026-03-04 | 2026-03-07 | A7290 | 33d | 0d |
| A7310 |  | OFC Testing | 3d | 2026-03-08 | 2026-03-10 | A7300 | 33d | 13d |
|  | 4 | **Aerial GPON OFC** |  | 2026-03-09 | 2026-03-17 |  |  |  |
| A7320 |  | Pole Installation | 4d | 2026-03-09 | 2026-03-12 | A6970 | 26d | 0d |
| A7330 |  | Aerial OFC Laying | 3d | 2026-03-13 | 2026-03-15 | A7320 | 26d | 0d |
| A7340 |  | Termination & Testing | 2d | 2026-03-16 | 2026-03-17 | A7330 | 26d | 6d |
|  | 5 | **Network Connectivity** |  | 2026-03-24 | 2026-04-04 |  |  |  |
| A7350 |  | ISP Coordination | 5d | 2026-03-24 | 2026-03-28 | A7100, A7310, A7340 | 20d | 0d |
| A7360 |  | Site Connectivity Setup | 4d | 2026-03-29 | 2026-04-01 | A7110, A7120, A7350 | 20d | 0d |
| A7370 |  | Bandwidth Testing | 3d | 2026-04-02 | 2026-04-04 | A7360 | 20d | 0d |
|  | 4 | **Control Room Development** |  | 2026-01-19 | 2026-02-26 |  |  |  |
|  | 1 | **Control Room Civil Works** |  | 2026-01-19 | 2026-02-06 |  |  |  |
| A7380 |  | Renovation Works | 8d | 2026-01-19 | 2026-01-26 |  | 46d | 0d |
| A7390 |  | Flooring & Ceiling | 6d | 2026-01-27 | 2026-02-01 | A7380 | 46d | 0d |
| A7400 |  | Painting & Finishing | 5d | 2026-02-02 | 2026-02-06 | A7390 | 46d | 0d |
|  | 2 | **Furniture & Fixtures** |  | 2026-02-07 | 2026-02-12 |  |  |  |
| A7410 |  | Workstations Installation | 4d | 2026-02-07 | 2026-02-10 | A7400 | 46d | 0d |
| A7420 |  | Chairs Installation | 2d | 2026-02-11 | 2026-02-12 | A7410 | 111d |  |

| ID | WBS | Activity | Duration | Start | Finish | Predecessors | Total float | Free float |
| --- | --- | --- | --- | --- | --- | --- | --- | --- |
|  | 3 | **Network Equipment** |  | 2026-02-11 | 2026-02-19 |  |  |  |
| A7430 |  | Core Switch Installation | 3d | 2026-02-11 | 2026-02-13 | A7410 | 46d | 0d |
| A7440 |  | Network Switch Installation | 3d | 2026-02-14 | 2026-02-16 | A7430 | 46d | 0d |
| A7450 |  | Firewall Installation | 3d | 2026-02-17 | 2026-02-19 | A7440 | 46d | 0d |
|  | 4 | **Display Systems** |  | 2026-02-20 | 2026-02-26 |  |  |  |
| A7460 |  | Video Wall Installation | 4d | 2026-02-20 | 2026-02-23 | A7450 | 46d | 0d |
| A7470 |  | Monitoring Screen Installation | 3d | 2026-02-24 | 2026-02-26 | A7460 | 46d | 19d |
|  | 5 | **IT Systems, Servers & Software** |  | 2026-03-18 | 2026-04-28 |  |  |  |
|  | 1 | **Server & Storage Systems** |  | 2026-03-18 | 2026-03-28 |  |  |  |
| A7480 |  | SAN Storage Installation | 4d | 2026-03-18 | 2026-03-21 | A7080, A7470 | 27d | 0d |
| A7490 |  | HDD Installation | 3d | 2026-03-22 | 2026-03-24 | A7480 | 27d | 0d |
| A7500 |  | GPU Server Installation | 4d | 2026-03-25 | 2026-03-28 | A7490 | 27d | 7d |
|  | 2 | **VMS & AI Systems** |  | 2026-04-05 | 2026-04-17 |  |  |  |
| A7510 |  | VMS Installation | 5d | 2026-04-05 | 2026-04-09 | A7370, A7500 | 20d | 0d |
| A7520 |  | AI NVR Configuration | 4d | 2026-04-10 | 2026-04-13 | A7510 | 20d | 0d |
| A7530 |  | Analytics Configuration | 4d | 2026-04-14 | 2026-04-17 | A7520 | 20d | 0d |
|  | 3 | **Software & Applications** |  | 2026-04-18 | 2026-04-22 |  |  |  |
| A7540 |  | PSCA HQ Integration | 5d | 2026-04-18 | 2026-04-22 | A7530 | 20d | 0d |
|  | 4 | **System Licensing** |  | 2026-04-23 | 2026-04-28 |  |  |  |
| A7550 |  | Camera Licenses | 3d | 2026-04-23 | 2026-04-25 | A7540 | 20d | 0d |
| A7560 |  | System Licenses | 3d | 2026-04-26 | 2026-04-28 | A7550 | 20d |  |
|  | 1 | **Sadiqabad** |  | 2026-01-19 | 2026-05-18 |  |  |  |
|  | 1 | **Camera & Field Surveillance System** |  | 2026-02-28 | 2026-04-12 |  |  |  |
|  | 1 | **Camera Poles & Foundations** |  | 2026-02-28 | 2026-03-28 |  |  |  |
| A7570 |  | Survey & Marking | 4d | 2026-02-28 | 2026-03-03 | A1000 SS+40d | 0d |  |
| A7580 |  | Excavation | 6d | 2026-03-04 | 2026-03-09 | A7570 | 0d |  |
| A7590 |  | PCC | 3d | 2026-03-10 | 2026-03-12 | A7580 | 0d |  |
| A7600 |  | Foundation Concrete | 4d | 2026-03-13 | 2026-03-16 | A7590 | 0d |  |
| A7610 |  | Curing & Backfilling | 7d | 2026-03-17 | 2026-03-23 | A7600 | 0d |  |
| A7620 |  | Pole Erection | 5d | 2026-03-24 | 2026-03-28 | A7610 | 0d |  |

| ID | WBS | Activity | Duration | Start | Finish | Predecessors | Total float | Free float |
| --- | --- | --- | --- | --- | --- | --- | --- | --- |
|  | 2 | **ANPR Poles & Foundations** |  | 2026-03-04 | 2026-03-12 |  |  |  |
| A7630 |  | Excavation & Foundation | 5d | 2026-03-04 | 2026-03-08 | A7570 | 18d | 0d |
| A7640 |  | Pole Installation | 4d | 2026-03-09 | 2026-03-12 | A7630 | 18d | 0d |
|  | 3 | **Power Cabinets for Camera & ANPR** |  | 2026-03-10 | 2026-03-21 |  |  |  |
| A7650 |  | Cabinet Foundation | 3d | 2026-03-10 | 2026-03-12 | A7580 | 18d | 0d |
| A7660 |  | Cabinet Installation | 4d | 2026-03-13 | 2026-03-16 | A7650 | 18d | 0d |
| A7670 |  | Internal Wiring | 5d | 2026-03-17 | 2026-03-21 | A7660 | 18d | 0d |
|  | 4 | **Camera Installation** |  | 2026-03-13 | 2026-04-03 |  |  |  |
| A7700 |  | ANPR Camera Installation | 4d | 2026-03-13 | 2026-03-16 | A7640 | 18d |  |
| A7680 |  | Fixed Camera Installation | 6d | 2026-03-29 | 2026-04-03 | A7620 | 0d |  |
| A7690 |  | PTZ Camera Installation | 5d | 2026-03-29 | 2026-04-02 | A7620 | 1d |  |
| A7710 |  | Strobe Light Installation | 3d | 2026-03-29 | 2026-03-31 | A7620 | 3d | 0d |
|  | 5 | **Body Worn Camera System** |  | 2026-04-01 | 2026-04-06 |  |  |  |
| A7720 |  | Body Cameras Deployment | 3d | 2026-04-01 | 2026-04-03 | A7710 | 7d | 0d |
| A7730 |  | Dock & Storage Setup | 3d | 2026-04-04 | 2026-04-06 | A7720 | 7d | 0d |
|  | 6 | **Field Devices** |  | 2026-03-22 | 2026-03-24 |  |  |  |
| A7760 |  | Panic Button Installation | 3d | 2026-03-22 | 2026-03-24 | A7670 | 24d |  |
| A7770 |  | Attendance Device Installation | 3d | 2026-03-22 | 2026-03-24 | A7670 | 24d |  |
|  | 7 | **Field Equipment Configuration** |  | 2026-04-04 | 2026-04-12 |  |  |  |
| A7740 |  | Camera Addressing & Labeling | 5d | 2026-04-04 | 2026-04-08 | A7680, A7690, A7700, A7710 | 0d |  |
| A7750 |  | Initial Camera Testing | 4d | 2026-04-09 | 2026-04-12 | A7670, A7740 | 0d |  |
|  | 2 | **Power & Electrical Infrastructure** |  | 2026-03-17 | 2026-04-18 |  |  |  |
|  | 1 | **Power Supply Works** |  | 2026-03-17 | 2026-03-30 |  |  |  |
| A7780 |  | Power Cable Laying | 7d | 2026-03-17 | 2026-03-23 | A7660 | 30d | 0d |
| A7790 |  | Panel Installation | 4d | 2026-03-24 | 2026-03-27 | A7780 | 30d | 0d |
| A7800 |  | Earthing & Grounding | 3d | 2026-03-28 | 2026-03-30 | A7790 | 30d | 0d |

| ID | WBS | Activity | Duration | Start | Finish | Predecessors | Total float | Free float |
| --- | --- | --- | --- | --- | --- | --- | --- | --- |
|  | 2 | **Backup Power Systems** |  | 2026-03-31 | 2026-04-10 |  |  |  |
| A7810 |  | UPS Installation | 3d | 2026-03-31 | 2026-04-02 | A7800 | 30d | 0d |
| A7820 |  | Battery Installation | 2d | 2026-04-03 | 2026-04-04 | A7810 | 30d | 0d |
| A7830 |  | Generator Installation | 4d | 2026-04-05 | 2026-04-08 | A7820 | 30d | 0d |
| A7840 |  | Generator Testing & Commissioning | 2d | 2026-04-09 | 2026-04-10 | A7830 | 30d | 0d |
|  | 3 | **Split AC Installation** |  | 2026-04-11 | 2026-04-18 |  |  |  |
| A7850 |  | AC Mounting | 3d | 2026-04-11 | 2026-04-13 | A7840 | 30d | 0d |
| A7860 |  | Electrical Connections | 3d | 2026-04-14 | 2026-04-16 | A7850 | 30d | 0d |
| A7870 |  | Testing | 2d | 2026-04-17 | 2026-04-18 | A7860 | 30d | 0d |
|  | 3 | **OFC, Network & Connectivity** |  | 2026-01-19 | 2026-04-24 |  |  |  |
|  | 1 | **OFC Route Survey & Design** |  | 2026-01-19 | 2026-01-27 |  |  |  |
| A7880 |  | Route Survey | 4d | 2026-01-19 | 2026-01-22 |  | 33d | 0d |
| A7890 |  | Design Approval | 5d | 2026-01-23 | 2026-01-27 | A7880 | 33d | 0d |
|  | 2 | **OFC Civil Works** |  | 2026-01-28 | 2026-02-25 |  |  |  |
| A7900 |  | Trenching | 10d | 2026-01-28 | 2026-02-06 | A7890 | 33d | 0d |
| A7910 |  | Duct / Pipe Laying | 8d | 2026-02-07 | 2026-02-14 | A7900 | 33d | 0d |
| A7920 |  | Manhole Construction | 6d | 2026-02-15 | 2026-02-20 | A7910 | 33d | 0d |
| A7930 |  | Backfilling & Restoration | 5d | 2026-02-21 | 2026-02-25 | A7920 | 33d | 0d |
|  | 3 | **OFC Installation** |  | 2026-02-26 | 2026-03-10 |  |  |  |
| A7940 |  | OFC Cable Pulling | 6d | 2026-02-26 | 2026-03-03 | A7930 | 33d | 0d |
| A7950 |  | Splicing | 4d | 2026-03-04 | 2026-03-07 | A7940 | 33d | 0d |
| A7960 |  | OFC Testing | 3d | 2026-03-08 | 2026-03-10 | A7950 | 33d |  |
|  | 4 | **Aerial GPON OFC** |  | 2026-03-29 | 2026-04-06 |  |  |  |
| A7970 |  | Pole Installation | 4d | 2026-03-29 | 2026-04-01 | A7620 | 6d | 0d |
| A7980 |  | Aerial OFC Laying | 3d | 2026-04-02 | 2026-04-04 | A7970 | 6d | 0d |
| A7990 |  | Termination & Testing | 2d | 2026-04-05 | 2026-04-06 | A7980 | 6d |  |

| ID | WBS | Activity | Duration | Start | Finish | Predecessors | Total float | Free float |
| --- | --- | --- | --- | --- | --- | --- | --- | --- |
|  | 5 | **Network Connectivity** |  | 2026-04-13 | 2026-04-24 |  |  |  |
| A8000 |  | ISP Coordination | 5d | 2026-04-13 | 2026-04-17 | A7750, A7960, A7990 | 0d |  |
| A8010 |  | Site Connectivity Setup | 4d | 2026-04-18 | 2026-04-21 | A7760, A7770, A8000 | 0d |  |
| A8020 |  | Bandwidth Testing | 3d | 2026-04-22 | 2026-04-24 | A8010 | 0d |  |
|  | 4 | **Control Room Development** |  | 2026-01-19 | 2026-02-26 |  |  |  |
|  | 1 | **Control Room Civil Works** |  | 2026-01-19 | 2026-02-06 |  |  |  |
| A8030 |  | Renovation Works | 8d | 2026-01-19 | 2026-01-26 |  | 46d | 0d |
| A8040 |  | Flooring & Ceiling | 6d | 2026-01-27 | 2026-02-01 | A8030 | 46d | 0d |
| A8050 |  | Painting & Finishing | 5d | 2026-02-02 | 2026-02-06 | A8040 | 46d | 0d |
|  | 2 | **Furniture & Fixtures** |  | 2026-02-07 | 2026-02-12 |  |  |  |
| A8060 |  | Workstations Installation | 4d | 2026-02-07 | 2026-02-10 | A8050 | 46d | 0d |
| A8070 |  | Chairs Installation | 2d | 2026-02-11 | 2026-02-12 | A8060 | 111d |  |
|  | 3 | **Network Equipment** |  | 2026-02-11 | 2026-02-19 |  |  |  |
| A8080 |  | Core Switch Installation | 3d | 2026-02-11 | 2026-02-13 | A8060 | 46d | 0d |
| A8090 |  | Network Switch Installation | 3d | 2026-02-14 | 2026-02-16 | A8080 | 46d | 0d |
| A8100 |  | Firewall Installation | 3d | 2026-02-17 | 2026-02-19 | A8090 | 46d | 0d |
|  | 4 | **Display Systems** |  | 2026-02-20 | 2026-02-26 |  |  |  |
| A8110 |  | Video Wall Installation | 4d | 2026-02-20 | 2026-02-23 | A8100 | 46d | 0d |
| A8120 |  | Monitoring Screen Installation | 3d | 2026-02-24 | 2026-02-26 | A8110 | 46d | 39d |
|  | 5 | **IT Systems, Servers & Software** |  | 2026-04-07 | 2026-05-18 |  |  |  |
|  | 1 | **Server & Storage Systems** |  | 2026-04-07 | 2026-04-17 |  |  |  |
| A8130 |  | SAN Storage Installation | 4d | 2026-04-07 | 2026-04-10 | A7730, A8120 | 7d | 0d |
| A8140 |  | HDD Installation | 3d | 2026-04-11 | 2026-04-13 | A8130 | 7d | 0d |
| A8150 |  | GPU Server Installation | 4d | 2026-04-14 | 2026-04-17 | A8140 | 7d |  |

| ID | WBS | Activity | Duration | Start | Finish | Predecessors | Total float |
| --- | --- | --- | --- | --- | --- | --- | --- |
|  | 2 | **VMS & AI Systems** |  | 2026-04-25 | 2026-05-07 |  |  |
| A8160 |  | VMS Installation | 5d | 2026-04-25 | 2026-04-29 | A8020, A8150 | 0d |
| A8170 |  | AI NVR Configuration | 4d | 2026-04-30 | 2026-05-03 | A8160 | 0d |
| A8180 |  | Analytics Configuration | 4d | 2026-05-04 | 2026-05-07 | A8170 | 0d |
|  | 3 | **Software & Applications** |  | 2026-05-08 | 2026-05-12 |  |  |
| A8190 |  | PSCA HQ Integration | 5d | 2026-05-08 | 2026-05-12 | A8180 | 0d |
|  | 4 | **System Licensing** |  | 2026-05-13 | 2026-05-18 |  |  |
| A8200 |  | Camera Licenses | 3d | 2026-05-13 | 2026-05-15 | A8190 | 0d |
| A8210 |  | System Licenses | 3d | 2026-05-16 | 2026-05-18 | A8200 | 0d |
|  | 3 | **Testing & Commissioning** |  | 2026-04-19 | 2026-06-03 |  |  |
| A8220 |  | Field Testing | 4d | 2026-04-19 | 2026-04-22 | A1350, A1600, A2020, A2270, A2670, A2920, A3320, A3570, A3970, A4220, A4620, A4870, A5270, A5520, A5920, A6170, A6570, A6820, A7220, A7470, A7870, A8120 | 30d |
| A8230 |  | OFC Testing | 4d | 2026-04-25 | 2026-04-28 | A1500, A2170, A2820, A3470, A4120, A5420, A6070, A6720, A7370, A8020 | 24d |
| A8250 |  | Integration Testing | 4d | 2026-05-19 | 2026-05-22 | A1200, A1710, A1900, A2360, A2550, A3010, A3200, A3660, A3850, A4310, A4500, A4960, A5150, A5610, A5800, A6260, A6450, A6910, A7100, A7560, A7750, A8210 | 0d |
| A8260 |  | Final Joint Inspection | 4d | 2026-05-23 | 2026-05-26 | A8220, A8230, A8250 | 0d |
| A8270 |  | Final Commissioning | 4d | 2026-05-27 | 2026-05-30 | A8260 | 0d |
| A8280 |  | Project Handover | 4d | 2026-05-31 | 2026-06-03 | A8270 | 0d |
