# SMART SAFE CITIES - CM TEHSILS PROJECT (DEPALPUR)

Schedule from Primavera P6, 2026-02-14 to 2026-12-30, data date 2026-02-14.

## Calendars

- 6x10: Mon-Sat 07:00-17:00; Sun off. Exceptions (off unless hours are given): 2026-03-21, 2026-03-23, 2026-05-26 to 2026-05-29.

## Schedule

| ID | WBS | Activity | Type | Duration | Start | Finish | Predecessors | Total float | Free float |
| --- | --- | --- | --- | --- | --- | --- | --- | --- | --- |
|  | 1 | **Project Milestone** |  |  | 2026-02-14 | 2026-12-30 |  |  |  |
| A1000 |  | Start Date | milestone | 0d | 2026-02-14 | 2026-02-14 |  | 0d |  |
| A1010 |  | Compeletion Date | milestone | 0d | 2026-12-30 | 2026-12-30 | A8980 FF | 0d |  |
|  | 3 | **Mobilization** |  |  | 2026-02-14 | 2026-02-27 |  |  |  |
| A8990 |  | Selection & Establishment of Site Camp Office & Facilities |  | 10d | 2026-02-14 | 2026-02-27 | A1000 SS | 0d |  |
| A9000 |  | Mobilization of Construction Equiment/Machinary |  | 5d | 2026-02-14 | 2026-02-20 | A8990 SS | 0d |  |
| A9010 |  | Mobilization of Skilled & Unskilled Manpower |  | 5d | 2026-02-14 | 2026-02-20 | A9000 SS | 0d |  |
|  | 7 | **Civil Works** |  |  | 2026-02-14 | 2026-11-06 |  |  |  |
| A8905 |  | Survey & Marking |  | 40d | 2026-02-14 | 2026-04-13 | A1000 SS, A9010 SS | 0d |  |
| A8910 |  | Camera Poles with Foundation (13) |  | 150d | 2026-04-07 | 2026-11-06 | A8905 FS-5d | 0d |  |
| A8920 |  | ANPR Poles with Foundation (7) |  | 150d | 2026-04-07 | 2026-11-06 | A8910 SS | 0d |  |
| A8930 |  | Control Room Renovation (1) |  | 135d | 2026-04-07 | 2026-10-16 | A8920 SS | 0d |  |
| A8940 |  | Power connection |  | 90d | 2026-04-07 | 2026-08-14 | A8930 SS | 0d |  |
|  | 8 | **Infrastructure & Power** |  |  | 2026-04-07 | 2026-11-27 |  |  |  |
| A8500 |  | Power Cabinets (19) |  | 165d | 2026-04-07 | 2026-11-27 | A8910 SS | 0d |  |
| A8510 |  | 42U Racks (2) |  | 165d | 2026-04-07 | 2026-11-27 | A8930 SS | 0d |  |
| A8520 |  | UPS 10 KVA (3) |  | 165d | 2026-04-07 | 2026-11-27 | A8930 SS | 23.33d | 0d |
| A8530 |  | Generator 20 KVA (1) |  | 165d | 2026-04-07 | 2026-11-27 | A8930 SS, A8520 SS | 23.33d | 0d |
| A8540 |  | Core + Network Switch (3) |  | 165d | 2026-04-07 | 2026-11-27 | A8510 SS, A8530 SS | 23.33d | 0d |
| A8550 |  | Firewall (2) |  | 165d | 2026-04-07 | 2026-11-27 | A8540 SS | 23.33d |  |
| A8580 |  | LTE Solution & Allied Works |  | 165d | 2026-04-07 | 2026-11-27 | A8910 SS | 0d |  |
| A8590 |  | LTE Core |  | 165d | 2026-04-07 | 2026-11-27 | A8580 SS | 0d |  |
|  | 9 | **Camera Installation** |  |  | 2026-04-07 | 2026-11-27 |  |  |  |
| A8600 |  | Fixed Cameras (61) |  | 165d | 2026-04-07 | 2026-11-27 | A8910 SS | 0d |  |
| A8610 |  | PTZ Cameras (19) |  | 165d | 2026-04-07 | 2026-11-27 | A8910 SS | 0d |  |
| A8620 |  | ANPR Cameras (7) |  | 165d | 2026-04-07 | 2026-11-27 | A8920 SS | 0d |  |
| A8630 |  | Strobe Lights (14) |  | 165d | 2026-04-07 | 2026-11-27 | A8920 SS | 0d |  |
| A8640 |  | Panic Buttons (5) |  | 165d | 2026-04-07 | 2026-11-27 | A8500 SS | 0d |  |
| A8650 |  | Body Cameras (5) |  | 165d | 2026-04-07 | 2026-11-27 | A8910 SS | 0d |  |
| A8660 |  | Docking Stations (1) |  | 165d | 2026-04-07 | 2026-11-27 | A8650 SS | 0d |  |
| A8950 |  | OFC Laying (25KM) (1) |  | 165d | 2026-04-07 | 2026-11-27 | A8940 SS | 0d |  |
| A8960 |  | GPON OFC Solution (19) |  | 165d | 2026-04-07 | 2026-11-27 | A8950 SS | 0d |  |

| ID | WBS | Activity | Duration | Start | Finish | Predecessors | Total float |
| --- | --- | --- | --- | --- | --- | --- | --- |
|  | 10 | **Data Center & Services** |  | 2026-04-07 | 2026-11-27 |  |  |
| A8670 |  | SAN Storage (1) | 165d | 2026-04-07 | 2026-11-27 | A8510 SS | 0d |
| A8680 |  | Hard Disks (12) | 165d | 2026-04-07 | 2026-11-27 | A8670 SS | 0d |
| A8690 |  | AI NVR (1) | 165d | 2026-04-07 | 2026-11-27 | A8680 SS | 0d |
| A8700 |  | GPU Server (1) | 165d | 2026-04-07 | 2026-11-27 | A8690 SS | 0d |
| A8710 |  | Streaming Server | 165d | 2026-04-07 | 2026-11-27 | A8700 SS | 0d |
| A8720 |  | OEM VMS + ANPR (1) | 165d | 2026-04-07 | 2026-11-27 | A8710 SS | 0d |
| A8730 |  | Big Data Solution | 165d | 2026-04-07 | 2026-11-27 | A8670 SS, A8700 SS | 0d |
|  | 11 | **Control Room & IT Equipment** |  | 2026-04-07 | 2026-07-24 |  |  |
| A8740 |  | Core i7 Computers (3) | 60d | 2026-04-07 | 2026-07-03 | A8930 SS | 0d |
| A8750 |  | Workstations (3) | 60d | 2026-04-07 | 2026-07-03 | A8930 SS | 0d |
| A8760 |  | Laptops (1) | 60d | 2026-04-07 | 2026-07-03 | A8930 SS | 0d |
| A8770 |  | WiFi Access Points (5) | 60d | 2026-04-07 | 2026-07-03 | A8930 SS | 0d |
| A8780 |  | WiFi Controller (1) | 45d | 2026-04-07 | 2026-06-12 | A8770 SS | 0d |
| A8790 |  | Attendance Devices (3) | 45d | 2026-04-07 | 2026-06-12 | A8930 SS | 0d |
| A8800 |  | 86” Monitors (1) | 45d | 2026-04-07 | 2026-06-12 | A8930 SS | 0d |
| A8810 |  | Split ACs (5) | 60d | 2026-04-07 | 2026-07-03 | A8930 SS | 0d |
| A8820 |  | Drone (1) | 75d | 2026-04-07 | 2026-07-24 | A8930 SS | 0d |
|  | 12 | **Connectivity** |  | 2026-04-07 | 2026-06-19 |  |  |
| A8830 |  | ISP Control Room (1) | 50d | 2026-04-07 | 2026-06-19 | A8930 SS | 0d |
| A8840 |  | Tehsil-District Connectivity (1) | 50d | 2026-04-07 | 2026-06-19 | A8830 SS | 0d |
| A8850 |  | LTE Site ISP | 50d | 2026-04-07 | 2026-06-19 | A8840 SS | 0d |
| A8860 |  | ANPR Site Connectivity | 50d | 2026-04-07 | 2026-06-19 | A8840 SS | 0d |
|  | 13 | **Software & Integration** |  | 2026-04-07 | 2026-11-27 |  |  |
| A8870 |  | Total Licenses (500) | 45d | 2026-04-07 | 2026-06-12 | A8690 SS | 0d |
| A8880 |  | PSCA HQ Integration (1) | 50d | 2026-04-07 | 2026-06-19 | A8710 SS, A8600 SS, A8610 SS, A8620 SS, A8630 SS, A8640 SS, A8650 SS, A8660 SS, A8960 SS, A8720 SS, A8730 SS, A8740 SS, A8750 SS, A8760 SS, A8780 SS, A8790 SS, A8800 SS, A8810 SS, A8820 SS, A8850 SS, A8860 SS, A8870 SS, A8590 SS | 0d |
| A8890 |  | Mobile Application | 165d | 2026-04-07 | 2026-11-27 | A8880 SS | 0d |
| A8900 |  | Digital Twin | 50d | 2026-04-07 | 2026-06-19 | A8880 SS | 115d |

| ID | WBS | Activity | Duration | Start | Finish | Predecessors | Total float |
| --- | --- | --- | --- | --- | --- | --- | --- |
|  | 5 | **Handing Over** |  | 2026-11-28 | 2026-12-30 |  |  |
| A8970 |  | Snagging & De-Snagging | 11.67d | 2026-11-28 | 2026-12-14 | A8890, A8900 | 0d |
| A8980 |  | Project Handing over documents | 11.67d | 2026-12-15 | 2026-12-30 | A8970 | 0d |
